# Brown Field Border Patrol Station - June 2021 Update

How a schedule from Primavera P6 changed from version to version. A marks actual dates.

## Version 1 (data date 2021-07-01, saved 2021-07-19, file BFBPS13.xer)

| ID | WBS | Task | Duration | Start | Finish | Predecessors | Complete | Total float | Constraint |
| --- | --- | --- | --- | --- | --- | --- | --- | --- | --- |
|  | MS | **Milestones** |  | 2020-05-28 | 2022-08-05 |  |  |  |  |
|  | 1 | **Project Milestones** |  | 2020-05-28 | 2022-08-05 |  |  |  |  |
| PM1050 |  | Notice to Proceed (NTP) | 0d | 2020-05-28 A | 2020-05-28 A |  | 100% |  |  |
| PM1070 |  | Award Option 3 - B4 VWF | 65d | 2020-05-28 A | 2020-07-31 A | PM1050 SS | 100% |  |  |
| PM1080 |  | Award Option 4 - Helipad | 65d | 2020-05-28 A | 2020-07-31 A | PM1050 SS | 100% |  |  |
| PM1090 |  | Award Option 6 - 2nd Well | 65d | 2020-05-28 A | 2020-07-31 A | PM1050 SS | 100% |  |  |
| PM1100 |  | Project Period of Performance | 730d | 2020-05-28 A | 2022-08-05 | PM1050 SS |  | 0d |  |
| PM1110 |  | Award Option 7 - B5 CKF | 65d | 2020-05-28 A | 2020-07-31 A | PM1050 SS | 100% |  |  |
| PM1130 |  | Award Option 10 - B4A VFF | 65d | 2020-05-28 A | 2020-07-31 A | PM1050 SS | 100% |  |  |
| PM1140 |  | BPS Bldg Foundations Complete | 0d | 2021-03-29 A | 2021-03-29 A | 1FNA190, 1FNC190, 1FNE200 | 100% |  |  |
| PM1160 |  | Start BPS Structure | 0d | 2021-04-27 A | 2021-04-27 A | 1STE110 SS, PM1140 | 100% |  |  |
| PM1120 |  | Approved SDG&E Design | 0d | 2021-06-25 A | 2021-06-25 A | SDGE100 | 100% |  |  |
| PM1180 |  | BPS Metal Bldg/Dry In Complete | 0d | 2021-10-08 | 2021-10-08 | 1STA110, 1STE180, 1STC140, PM1160 |  | 3d |  |
| PM1210 |  | BPS Rough In MEPs Complete | 0d | 2021-12-30 | 2021-12-30 | 1RIC320, 1RIA310, 1RIE300, 1RIC260, 1RIC190, 1RIC290, 1RIA290, 1RIA270, 1RIA220, 1RIA100, 1RIC100, 1RIE100, 1RIE280, 1RIE220, 1RIE210, 1RIC110, 1RIC220, 1RIC230, 1RIC240, 1RIA240, 1RIA250, 1RIA260, 1RIA110, 1RIE110, 1RIE230, 1RIE240, 1RIE250, 1RIE260 |  | 46d |  |
| PM1200 |  | Permanent Power | 0d | 2022-02-11 | 2022-02-11 | RZ1200, PM1210 |  | 3d |  |
| PM1220 |  | Startup / TAB / Cx Start | 0d | 2022-03-15 | 2022-03-15 | RZ1240 |  | 1d |  |
| PM1230 |  | Owner Training Agenda Complete | 0d | 2022-05-30 | 2022-05-30 | RZ1510 |  | 59d |  |
| PM9910 |  | MR&O / Warranty Conf Complete | 0d | 2022-06-28 | 2022-06-28 | RZ2340 |  | 37d |  |
| PM1400 |  | Commissioning Complete | 0d | 2022-07-25 | 2022-07-25 | RZ1610 |  | 11d |  |
| PM9900 |  | End Project | 0d | 2022-08-05 | 2022-08-05 | PM1100 FF, ALLW008, RZ2400, PM1400, ENV-1100, ENV-1090, ENV-1110, M1-1, M2-1 |  | 0d | finish on or before 2022-08-15 |
|  | 2 | **Environmentally Sensitive Windows** |  | 2021-02-01 | 2022-05-20 |  |  |  |  |
| ENV-1080 |  | Arroyo Toad Breeding 2021 | 181d | 2021-02-01 A | 2021-07-31 | PM1050 FS+249d |  | 77d |  |
| ENV-1040 |  | QC Butterfly Season 2021 | 198d | 2021-02-15 A | 2021-08-31 | PM1050 FS+263d |  | 77d |  |
| ENV-1060 |  | Peak Nesting Season 2021 | 198d | 2021-02-15 A | 2021-08-31 | PM1050 FS+263d |  | 77d |  |
| ENV-1110 |  | Arroyo Toad Breeding 2022 | 109d | 2022-02-01 | 2022-05-20 | ENV-1080 FS+184d |  | 77d |  |
| ENV-1090 |  | QC Butterfly Season 2022 | 95d | 2022-02-15 | 2022-05-20 | ENV-1040 FS+167d |  | 77d |  |
| ENV-1100 |  | Peak Nesting Season 2022 | 95d | 2022-02-15 | 2022-05-20 | ENV-1060 FS+167d |  | 77d |  |
|  | PRECON | **Preconstruction** |  | 2020-05-28 | 2021-12-07 |  |  |  |  |
| PRE-1010 |  | Obtain Dig Permits | 28d | 2020-05-28 A | 2020-07-14 A | PM1050 | 100% |  |  |
| PRE-1070 |  | Pre-Construction Conference | 1d | 2020-05-28 A | 2020-05-28 A | PM1050 | 100% |  |  |
| PRE-1100 |  | Insurance | 20d | 2020-05-28 A | 2020-05-29 A | PM1050 | 100% |  |  |
| PRE-1090 |  | Surety Bonds | 1d | 2020-06-10 A | 2020-06-10 A | PM1050 | 100% |  |  |
| PRE-1040 |  | Obtain Caltrans Traffic Permit | 20d | 2020-06-16 A | 2020-08-06 A | PM1050 | 100% |  |  |
| PRE-1000 |  | Precon Survey -Gov Bio Monitor | 28d | 2020-06-24 A | 2020-08-11 A | PM1050 | 100% |  |  |
| PRE-1050 |  | Obtain Pot Water Well Permit | 365d | 2020-09-25 A | 2021-07-30 | PM1050, MOB1210 FF |  | 174d |  |
| PRE-1060 |  | Obtain Treatment/Septic Permit | 365d | 2020-09-25 A | 2021-12-07 | PM1050 |  | 29d |  |
| PRE-1200 |  | APCD Permitting for Generators | 180d | 2021-06-08 A | 2021-11-27 | PM1050 |  | 30d |  |
|  | SUBM | **Submittals / Procurement** |  | 2020-05-28 | 2022-01-21 |  |  |  |  |
|  | 1 | **Outside Agencies** |  | 2020-08-04 | 2021-11-27 |  |  |  |  |
| SDGE100 |  | SDG&E Design Coord - Base Bid | 218d | 2020-08-04 A | 2021-06-25 A | PM1050 | 100% |  |  |
| ATT100 |  | AT&T Design Coord - Base Bid | 218d | 2020-10-23 A | 2020-11-04 A | PM1050 | 100% |  |  |
| SDGE200 |  | PROC SDG&E Transformer | 180d | 2021-06-28 A | 2021-11-27 | SDGE100, SDGE100 FF, SDGE100 SS, PM1120 |  | 31d |  |
|  | 01 | **Division 01 - General Requirements** |  | 2020-05-28 | 2022-01-05 |  |  |  |  |
| 013201-01 |  | SUBM - Prelim Schedule | 15d | 2020-05-28 A | 2020-06-12 A | PM1050 | 100% |  |  |
| 013526-01 |  | SUBM - APP | 10d | 2020-05-28 A | 2020-07-17 A | PM1050 | 100% |  |  |
| 013526-11 |  | SUBM - EPP | 10d | 2020-05-28 A | 2020-08-11 A | PM1050 | 100% |  |  |
| 013526-22 |  | SUBM - WMP | 10d | 2020-05-28 A | 2020-07-29 A | PM1050 | 100% |  |  |
| 014504-01 |  | SUBM - CQC Plan | 10d | 2020-05-28 A | 2020-07-14 A | PM1050 | 100% |  |  |
| 015000-01 |  | SUBM - Site Plan | 21d | 2020-05-28 A | 2020-07-17 A | PM1050 | 100% |  |  |
| 015719-21 |  | SUBM - SWPPP | 15d | 2020-05-28 A | 2020-07-01 A | PM1050 | 100% |  |  |
| 013526-02 |  | GOV APPR - APP | 30d | 2020-06-03 A | 2020-07-17 A | 013526-01 | 100% |  |  |
| 015719-31 |  | GOV APPR - SWPPP | 30d | 2020-06-03 A | 2020-07-14 A | 015719-21 | 100% |  |  |
| 014504-11 |  | GOV APPR - CQC Plan | 30d | 2020-06-12 A | 2020-08-11 A | 014504-01 | 100% |  |  |
| 013201-11 |  | GOV APPR - Prelim Schedule | 30d | 2020-06-15 A | 2020-06-22 A | 013201-01 | 100% |  |  |
| 013201-21 |  | SUBM - Initial Proj Sched | 27d | 2020-06-15 A | 2020-09-24 A | 013201-01 | 100% |  |  |
| 013526-12 |  | GOV APPR - EPP | 30d | 2020-06-30 A | 2020-08-26 A | 013526-11 | 100% |  |  |
| 015000-02 |  | GOV APPR - Site Plan | 30d | 2020-06-30 A | 2020-07-20 A | 015000-01 | 100% |  |  |
| 019100-01 |  | SUBM - Cx Firm/Specialists | 30d | 2020-07-27 A | 2020-08-12 A | PM1050 | 100% |  |  |
| 013526-32 |  | GOV APPR - WMP | 30d | 2020-07-29 A | 2020-08-06 A | 013526-22 | 100% |  |  |
| 019100-02 |  | GOV APPR - Cx Firm/Specialists | 30d | 2020-08-12 A | 2020-10-16 A | 019100-01 | 100% |  |  |
| 013201-31 |  | GOV APPR - Initial Proj Sched | 30d | 2020-08-18 A | 2020-10-07 A | 013201-21 | 100% |  |  |
| 019100-52 |  | Prep Interim Phase Cx Plan | 96d | 2020-10-19 A | 2020-10-31 A | 019100-02 | 100% |  |  |
| 019100-55 |  | GOV REV - Interim Cx Plan | 14d | 2020-11-02 A | 2020-12-16 A | 019100-52 | 100% |  |  |
| 019100-62 |  | Prep Pre-Funct & FPT Checklist | 80d | 2021-07-01 | 2021-10-22 | 019100-52 |  | 19d |  |
| 019100-65 |  | Interim Cx Plan Review Meeting | 1d | 2021-07-01 | 2021-07-01 | 019100-55 |  | 98d |  |
| 019100-72 |  | Prepare Final Cx Plan | 30d | 2021-10-23 | 2021-11-21 | 019100-62, 019100-65 |  | 30d |  |
| 019100-82 |  | GOV APPR - Final Cx Plan | 30d | 2021-11-22 | 2021-12-21 | 019100-72 |  | 30d |  |
| 019100-85 |  | Final Cx Plan Review Meeting | 1d | 2021-12-06 | 2021-12-06 | 019100-82 SS+14d |  | 31d |  |
| 019100-50 |  | Schedule Cx Coord Mtg | 14d | 2021-12-22 | 2022-01-04 | 019100-02, 019100-72, 019100-82, 019100-85 |  | 30d |  |
| 019100-51 |  | Cx Coordination Mtg | 1d | 2022-01-05 | 2022-01-05 | 019100-50 |  | 22d |  |

| ID | WBS | Task | Duration | Start | Finish | Predecessors | Complete | Total float |
| --- | --- | --- | --- | --- | --- | --- | --- | --- |
|  | 03 | **Division 03 - Concrete** |  | 2020-06-29 | 2021-02-25 |  |  |  |
|  | 1113 | **03 11 13 Structural Cast-In-Place Concrete Forming** |  | 2020-09-01 | 2020-11-10 |  |  |  |
| 031113-01 |  | SUBM - Str CIP Conc Form | 20d | 2020-09-01 A | 2020-10-08 A | PM1050 | 100% |  |
| 031113-02 |  | GOV APPR - Str CIP Conc Form | 30d | 2020-10-09 A | 2020-11-10 A | 031113-01 | 100% |  |
|  | 2000 | **03 20 00 Concrete Reinforcing** |  | 2020-09-01 | 2021-02-25 |  |  |  |
| 032000-01 |  | SUBM - Conc Reinforcing | 35d | 2020-09-01 A | 2021-02-01 A | PM1050, 133419-04 SS, 133419-04 FF, RFP07-250 FF | 100% |  |
| 032000-21 |  | SUBM - RW Rebar | 35d | 2020-09-01 A | 2020-09-21 A | PM1050 | 100% |  |
| 032000-22 |  | GOV APPR - RW Rebar | 30d | 2020-09-29 A | 2021-01-25 A | 032000-21 | 100% |  |
| 032000-29 |  | PROC - RW Rebar | 5d | 2020-12-16 A | 2021-01-11 A | 032000-22 | 100% |  |
| 032000-02 |  | GOV APPR - Conc Reinforcing | 30d | 2021-02-02 A | 2021-02-09 A | 032000-01 | 100% |  |
| 032000-09 |  | PROC - Conc Reinforcing | 10d | 2021-02-10 A | 2021-02-25 A | 032000-02 | 100% |  |
|  | 3000 | **03 30 00 Cast-In-Place Concrete** |  | 2020-06-29 | 2020-09-22 |  |  |  |
| 033000-01 |  | SUBM - CIP Concrete | 20d | 2020-06-29 A | 2020-08-18 A | PM1050 | 100% |  |
| 033000-02 |  | GOV APPR - CIP Concrete | 30d | 2020-08-18 A | 2020-09-22 A | 033000-01 | 100% |  |
|  | 04 | **Division 04 - Masonry** |  | 2020-07-01 | 2021-07-29 |  |  |  |
|  | 2000 | **04 20 00 Unit Masonry** |  | 2020-07-01 | 2021-07-29 |  |  |  |
| 042000-01 |  | SUBM - CMU | 40d | 2020-07-01 A | 2020-12-21 A | PM1050 | 100% |  |
| 042000-02 |  | GOV APPR - CMU | 30d | 2020-12-02 A | 2021-03-16 A | 042000-01 | 100% |  |
| 042000-12 |  | SUBM SAMP - CMU | 10d | 2020-12-08 A | 2020-12-08 A | 042000-02 | 100% |  |
| 042000-22 |  | GOV APPR SAMP - CMU | 14d | 2020-12-08 A | 2020-12-21 A | 042000-12 | 100% |  |
| 042000-32 |  | PROC - CMU | 50d | 2021-02-08 A | 2021-07-15 | 042000-22 |  | 2d |
| 042000-42 |  | Mock-Up - CMU Walls | 5d | 2021-07-16 | 2021-07-22 | 042000-32 |  | 2d |
| 042000-52 |  | GOV REV Mock-Up - CMU | 7d | 2021-07-23 | 2021-07-29 | 042000-42 |  | 4d |
|  | 05 | **Division 05 - Metals** |  | 2021-03-01 | 2021-08-12 |  |  |  |
|  | 4000 | **05 40 00 Cold-Formed Metal Framing** |  | 2021-04-01 | 2021-06-15 |  |  |  |
| 054000-01 |  | SUBM - CF Metal Framing | 20d | 2021-04-01 A | 2021-05-19 A | PM1050 | 100% |  |
| 054000-02 |  | GOV APPR - CF Metal Framing | 30d | 2021-05-04 A | 2021-06-15 A | 054000-01 | 100% |  |
|  | 5013 | **05 50 13 Miscellaneous Metal Fabrications** |  |  |  |  |  |  |
|  | 5100 | **05 51 00 Metal Stairs** |  | 2021-03-01 | 2021-08-12 |  |  |  |
| 055100-01 |  | SUBM - Metal Stairs | 60d | 2021-03-01 A | 2021-03-16 A | PM1050 | 100% |  |
| 055100-02 |  | GOV APPR - Metal Stairs | 30d | 2021-03-16 A | 2021-04-12 A | 055100-01 | 100% |  |
| 055100-09 |  | FABR - Metal Stairs | 30d | 2021-04-13 A | 2021-08-12 | 055100-02 |  | 215d |
|  | 5200 | **05 52 00 Metal Railings** |  | 2021-03-01 | 2021-08-12 |  |  |  |
| 055200-01 |  | SUBM - Metal Railings | 60d | 2021-03-01 A | 2021-03-16 A | PM1050 | 100% |  |
| 055200-02 |  | GOV APPR - Metal Railings | 30d | 2021-03-16 A | 2021-04-12 A | 055200-01 | 100% |  |
| 055200-09 |  | FABR - Metal Railings | 30d | 2021-04-13 A | 2021-08-12 | 055200-02 |  | 215d |
|  | 06 | **Division 06 - Wood, Plastics, and Composites** |  | 2020-05-28 | 2021-12-15 |  |  |  |
|  | 1000 | **06 10 00 Rough Carpentry** |  | 2021-07-01 | 2021-10-02 |  |  |  |
| 061000-01 |  | SUBM - Rough Carpentry | 45d | 2021-07-01 | 2021-09-02 | PM1050 |  | 49d |
| 061000-02 |  | GOV APPR - Rough Carpentry | 30d | 2021-09-03 | 2021-10-02 | 061000-01 |  | 73d |
|  | 2000 | **06 20 00 Finish Carpentry** |  | 2020-05-28 | 2021-12-07 |  |  |  |
| 062000-01 |  | SUBM - Finish Carpentry | 45d | 2020-05-28 A | 2021-09-02 | PM1050 |  | 54d |
| 062000-02 |  | GOV APPR - Finish Carpentry | 30d | 2021-09-03 | 2021-10-02 | 062000-01 |  | 78d |
| 062000-12 |  | SUBM SAMP - Finish Carpentry | 10d | 2021-10-04 | 2021-10-15 | 062000-02 |  | 52d |
| 062000-22 |  | GOV APPR SAMP - Fin Carpentry | 14d | 2021-10-18 | 2021-11-04 | 062000-12 |  | 52d |
| 062000-32 |  | PROC - Finish Carpentry | 20d | 2021-11-05 | 2021-12-07 | 062000-22, 064116-30 |  | 52d |
|  | 4116 | **06 41 16 Plastic-Laminate-Clad Architectural Cabinets (FIO)** |  | 2020-05-28 | 2021-11-22 |  |  |  |
| 064116-01 |  | SUBM - P-Lam Cabinets | 45d | 2020-05-28 A | 2021-08-12 | PM1050 |  | 62d |
| 064116-02 |  | QC APPR - P-Lam Cabinets | 20d | 2021-08-13 | 2021-09-10 | 064116-01 |  | 62d |
| 064116-30 |  | Field Measure Cabinets | 1d | 2021-08-20 | 2021-08-20 | 1RIC140, 1RIA140 |  | 95d |
| 064116-12 |  | SUBM SAMP - P-Lam Cabinets | 10d | 2021-09-13 | 2021-09-24 | 064116-02 |  | 62d |
| 064116-22 |  | GOV APPR SAMP - P-Lam Cabinets | 14d | 2021-09-25 | 2021-10-08 | 064116-12 |  | 94d |
| 064116-32 |  | PROC - P-Lam Cabinets | 30d | 2021-10-11 | 2021-11-22 | 064116-22, 064116-30 |  | 61d |
|  | 6116 | **06 61 16 Solid Surfacing Fabrications** |  | 2020-05-28 | 2021-12-15 |  |  |  |
| 066116-01 |  | SUBM - Solid Surface Fabs | 45d | 2020-05-28 A | 2021-09-02 | PM1050 |  | 47d |
| 066116-02 |  | QC APPR - Solid Surface Fabs | 10d | 2021-09-03 | 2021-09-17 | 066116-01 |  | 47d |
| 066116-12 |  | SUBM SAMP - Solid Surface Fabs | 10d | 2021-09-20 | 2021-10-01 | 066116-02 |  | 47d |
| 066116-22 |  | GOV APPR SAMP- Solid Surf Fabs | 30d | 2021-10-02 | 2021-10-31 | 066116-12 |  | 71d |
| 066116-32 |  | PROC - Solid Surfacing Fabs | 30d | 2021-11-01 | 2021-12-15 | 066116-22, 064116-30 |  | 46d |
|  | 07 | **Division 07 - Thermal and Moisture Protection** |  | 2020-05-28 | 2021-09-22 |  |  |  |
|  | 0523 | **07 05 23 Pressure Testing an Air Barrier System** |  | 2021-07-01 | 2021-08-28 |  |  |  |
| 070523-01 |  | SUBM - Test Air Barrier Sys | 20d | 2021-07-01 | 2021-07-29 | PM1050 |  | 170d |
| 070523-02 |  | GOV APPR- Test Air Barrier Sys | 30d | 2021-07-30 | 2021-08-28 | 070523-01 |  | 249d |
|  | 1353 | **07 13 53 Elastomeric Sheet Waterproofing (FIO)** |  |  |  |  |  |  |
|  | 2116 | **07 21 16 Mineral Fiber Blanket Insulation (FIO)** |  |  |  |  |  |  |
|  | 2710 | **07 27 10 Building Air Barrier System** |  | 2021-04-01 | 2021-09-22 |  |  |  |
| 072710-01 |  | SUBM - Air Barrier Insp | 30d | 2021-04-01 A | 2021-07-10 | PM1050 |  | 7d |
| 072710-02 |  | GOV APPR - Air Barrier Insp | 30d | 2021-07-11 | 2021-08-09 | 072710-01 |  | 7d |
| 072710-12 |  | SUBM - Air Barrier Design Rev | 14d | 2021-08-10 | 2021-08-23 | 072710-02 |  | 7d |
| 072710-13 |  | GOV APPR - Air Barrier Des Rev | 30d | 2021-08-24 | 2021-09-22 | 072710-12 |  | 7d |

| ID | WBS | Task | Duration | Start | Finish | Predecessors | Complete | Total float |
| --- | --- | --- | --- | --- | --- | --- | --- | --- |
|  | 2719 | **07 27 19 Air Barrier System for Metal Buildings** |  | 2020-05-28 | 2021-04-21 |  |  |  |
| 072719-01 |  | SUBM - Air Barrier for Mtl Bld | 36d | 2020-05-28 A | 2021-04-02 A | PM1050 | 100% |  |
| 072719-02 |  | GOV APPR - Air Barrier for MB | 30d | 2021-04-03 A | 2021-04-21 A | 072719-01 | 100% |  |
|  | 2726 | **07 27 26 Fluid-Applied Membrane Air Barriers (FIO)** |  |  |  |  |  |  |
|  | 2736 | **07 27 36 Spray Foam Air Barriers (FIO)** |  |  |  |  |  |  |
|  | 6000 | **07 60 00 Flashing and Sheet Metal** |  |  |  |  |  |  |
|  | 08 | **Division 08 - Openings** |  | 2020-05-28 | 2021-12-01 |  |  |  |
|  | 1113 | **08 11 13 Steel Doors and Frames** |  | 2020-05-28 | 2021-07-29 |  |  |  |
| 081113-01 |  | SUBM - Steel Doors & Frames | 45d | 2020-05-28 A | 2021-03-29 A | PM1050 | 100% |  |
| 081113-02 |  | GOV APPR - Steel Doors & Frame | 30d | 2021-04-22 A | 2021-05-18 A | 081113-01 | 100% |  |
| 081113-21 |  | FABR - Steel Door Frames | 40d | 2021-05-19 A | 2021-07-29 | 081113-02 |  | 47d |
| 081113-31 |  | FABR - Steel Doors | 40d | 2021-05-19 A | 2021-07-29 | 081113-02 |  | 142d |
|  | 1400 | **08 14 00 Wood Doors** |  | 2020-05-28 | 2021-11-15 |  |  |  |
| 081400-01 |  | SUBM - Wood Doors | 45d | 2020-05-28 A | 2021-07-08 | PM1050 |  | 85d |
| 081400-02 |  | GOV APPR - Wood Doors | 30d | 2021-07-09 | 2021-08-07 | 081400-01 |  | 120d |
| 081400-12 |  | SUBM Fin Colors - Wood Doors | 10d | 2021-08-09 | 2021-08-20 | 081400-02 |  | 81d |
| 081400-22 |  | GOV APPR Fin Color - Wood Door | 30d | 2021-08-21 | 2021-09-19 | 081400-12 |  | 120d |
| 081400-23 |  | FABR - Wood Doors | 40d | 2021-09-20 | 2021-11-15 | 081400-02, 081400-22 |  | 81d |
|  | 2220 | **08 22 00 Fiberglass Reinforced Plastic FRP Doors and Frames** |  | 2020-05-28 | 2021-10-04 |  |  |  |
| 082200-01 |  | SUBM - FRP Doors & Frames | 45d | 2020-05-28 A | 2021-07-08 | PM1050 |  | 135d |
| 082200-02 |  | GOV APPR - FRP Doors & Frames | 30d | 2021-07-09 | 2021-08-07 | 082200-01 |  | 199d |
| 082200-21 |  | FABR - FRP Doors & Frames | 40d | 2021-08-09 | 2021-10-04 | 082200-02 |  | 173d |
|  | 3313 | **08 33 13 Coiling Counter Doors (FIO)** |  | 2021-05-03 | 2021-08-12 |  |  |  |
| 083313-01 |  | SUBM - Coiling Counter Doors | 20d | 2021-05-03 A | 2021-05-18 A | PM1050 | 100% |  |
| 083313-02 |  | QC APPR - Coil Counter Doors | 10d | 2021-05-18 A | 2021-05-20 A | 083313-01 | 100% |  |
| 083313-03 |  | GOV FIO - Coil Counter Doors | 7d | 2021-05-20 A | 2021-05-21 A | 083313-02 | 100% |  |
| 083313-13 |  | PROC - Coiling Counter Doors | 30d | 2021-05-24 A | 2021-08-12 | 083313-03 |  | 199d |
|  | 3323 | **08 33 23 Overhead Coiling Doors** |  | 2021-07-01 | 2021-12-01 |  |  |  |
| 083323-01 |  | SUBM - OH Coiling Doors | 45d | 2021-07-01 | 2021-09-02 | PM1050 |  | 139d |
| 083323-02 |  | GOV APPR - OH Coiling Doors | 30d | 2021-09-03 | 2021-10-02 | 083323-01 |  | 205d |
| 083323-21 |  | FABR - OH Coiling Doors | 40d | 2021-10-04 | 2021-12-01 | 083323-02 |  | 140d |
|  | 3402 | **08 34 02 Bullet-Resistant Components** |  | 2021-07-01 | 2021-12-01 |  |  |  |
| 083402-01 |  | SUBM - Bullet-Resistant Comps | 45d | 2021-07-01 | 2021-09-02 | PM1050 |  | 92d |
| 083402-02 |  | GOV APPR - Bullet-Res Comps | 30d | 2021-09-03 | 2021-10-02 | 083402-01 |  | 138d |
| 083402-21 |  | FABR - Bullet-Resistant Comps | 40d | 2021-10-04 | 2021-12-01 | 083402-02 |  | 94d |
|  | 3459 | **08 34 59 Vault Doors and Day Gates** |  | 2020-05-28 | 2021-11-01 |  |  |  |
| 083459-01 |  | SUBM - Vault Door & Day Gate | 45d | 2020-05-28 A | 2021-08-05 | PM1050 |  | 107d |
| 083459-02 |  | GOV APPR - Vault Dr & Day Gate | 30d | 2021-08-06 | 2021-09-04 | 083459-01 |  | 159d |
| 083459-21 |  | FABR - Vault Door & Day Gate | 40d | 2021-09-07 | 2021-11-01 | 083459-02 |  | 108d |
|  | 3463 | **08 34 63 Detention Hollow Metal Frames, Doors, and Door Frames** |  | 2020-11-02 | 2021-08-26 |  |  |  |
| 083463-01 |  | SUBM - Deten HM Frames & Drs | 45d | 2020-11-02 A | 2021-03-16 A | PM1050 | 100% |  |
| 083463-02 |  | GOV APPR - Det HM Frames & Drs | 30d | 2021-03-16 A | 2021-04-12 A | 083463-01 | 100% |  |
| 083463-21 |  | FABR - Detention HM Frames | 40d | 2021-04-13 A | 2021-07-28 | 083463-02 | 100% | 1d |
| 083463-31 |  | FABR - Detention HM Doors | 40d | 2021-04-13 A | 2021-08-26 | 083463-02 |  | 154d |
|  | 4113 | **08 41 13 Aluminum-Framed Entrances and Storefronts (FIO)** |  | 2020-06-01 | 2021-11-15 |  |  |  |
| 084113-01 |  | SUBM - Alum Entr & Storefront | 45d | 2020-06-01 A | 2021-07-29 | PM1050 |  | 34d |
| 084113-02 |  | QC APPR - Alum Entr & SF | 20d | 2021-03-08 A | 2021-08-12 | 084113-01 |  | 34d |
| 084113-03 |  | GOV FIO - Alum Entr & SF | 7d | 2021-03-08 A | 2021-08-19 | 084113-02 |  | 49d |
| 084113-21 |  | FABR - Alum Entr & Storefront | 60d | 2021-08-20 | 2021-11-15 | 084113-03 |  | 35d |
|  | 5663 | **08 56 63 Detention and Security Windows (FIO)** |  | 2021-07-01 | 2021-11-05 |  |  |  |
| 085663-01 |  | SUBM - Deten & Security Window | 45d | 2021-07-01 | 2021-09-02 | PM1050 |  | 138d |
| 085663-02 |  | QC APPR - Deten & Sec Windows | 20d | 2021-09-03 | 2021-10-01 | 085663-01 |  | 138d |
| 085663-03 |  | GOV FIO - Deten & Sec Windows | 7d | 2021-10-02 | 2021-10-08 | 085663-02 |  | 202d |
| 085663-21 |  | PROC - Deten & Sec Windows | 20d | 2021-10-11 | 2021-11-05 | 085663-03 |  | 138d |
|  | 6200 | **08 62 00 Tubular Daylighting Device** |  | 2020-05-28 | 2021-07-29 |  |  |  |
| 086200-01 |  | SUBM - Tubular Daylight Device | 36d | 2020-05-28 A | 2021-04-14 A | PM1050 | 100% |  |
| 086200-02 |  | GOV APPR - Tube Daylight Dev | 30d | 2021-04-15 A | 2021-04-21 A | 086200-01 | 100% |  |
| 086200-21 |  | PROC - Tubular Daylight Device | 60d | 2021-04-22 A | 2021-07-29 | 086200-02 |  | 51d |
|  | 7100 | **08 71 00 Door Hardware** |  | 2020-05-28 | 2021-10-04 |  |  |  |
| 087100-01 |  | SUBM - Door Hardware | 45d | 2020-05-28 A | 2021-07-08 | PM1050 |  | 89d |
| 087100-02 |  | GOV APPR - Door Hardware | 30d | 2021-05-04 A | 2021-08-07 | 087100-01 |  | 127d |
| 087100-21 |  | PROC - Door Hardware | 40d | 2021-08-09 | 2021-10-04 | 087100-02 |  | 86d |
|  | 7163 | **08 71 63 Detention Hardware (FIO)** |  | 2021-03-01 | 2021-08-26 |  |  |  |
| 087163-01 |  | SUBM - Detention Hardware | 45d | 2021-03-01 A | 2021-04-01 A | PM1050 | 100% |  |
| 087163-02 |  | QC APPR - Detention Hardware | 20d | 2021-03-16 A | 2021-04-01 A | 087163-01 | 100% |  |
| 087163-03 |  | GOV FIO - Detention Hardware | 7d | 2021-03-16 A | 2021-04-14 A | 087163-02 | 100% |  |
| 087163-21 |  | PROC - Detention Hardware | 40d | 2021-04-15 A | 2021-08-26 | 087163-03 |  | 154d |
|  | 8100 | **08 81 00 Glazing (FIO)** |  | 2020-06-01 | 2021-07-29 |  |  |  |
| 088100-01 |  | SUBM - Glazing | 45d | 2020-06-01 A | 2021-04-07 A | PM1050 | 100% |  |
| 088100-02 |  | QC APPR - Glazing | 20d | 2021-04-01 A | 2021-04-07 A | 088100-01 | 100% |  |

| ID | WBS | Task | Duration | Start | Finish | Predecessors | Complete | Total float |
| --- | --- | --- | --- | --- | --- | --- | --- | --- |
| 088100-03 |  | GOV FIO - Glazing | 7d | 2021-04-07 A | 2021-04-07 A | 088100-02 | 100% |  |
| 088100-21 |  | PROC - Glazing | 20d | 2021-07-01 | 2021-07-29 | 088100-03 |  | 110d |
|  | 8853 | **08 88 53 Detention and Security Glazing (FIO)** |  | 2021-01-04 | 2021-07-29 |  |  |  |
| 088853-01 |  | SUBM - Deten & Security Glaz | 45d | 2021-01-04 A | 2021-02-05 A | PM1050 | 100% |  |
| 088853-02 |  | QC APPR - Deten & Secur Glaz | 20d | 2021-02-05 A | 2021-02-10 A | 088853-01 | 100% |  |
| 088853-03 |  | GOV FIO - Deten & Secur Glaz | 7d | 2021-02-10 A | 2021-02-15 A | 088853-02 | 100% |  |
| 088853-21 |  | PROC - Deten & Security Glaz | 20d | 2021-03-02 A | 2021-07-29 | 088853-03 |  | 208d |
|  | 9100 | **08 91 00 Metal Wall Louvers** |  | 2021-07-01 | 2021-12-01 |  |  |  |
| 089100-01 |  | SUBM - Metal Wall Louvers | 45d | 2021-07-01 | 2021-09-02 | PM1050 |  | 134d |
| 089100-02 |  | QC APPR - Metal Wall Louvers | 10d | 2021-09-03 | 2021-09-17 | 089100-01 |  | 134d |
| 089100-03 |  | SUBM SAMP - Metal Wall Louvers | 10d | 2021-09-20 | 2021-10-01 | 089100-02 |  | 134d |
| 089100-13 |  | GOV APPR SAMP - Metal Louvers | 30d | 2021-10-02 | 2021-10-31 | 089100-03 |  | 196d |
| 089100-21 |  | PROC - Metal Wall Louvers | 20d | 2021-11-01 | 2021-12-01 | 089100-13 |  | 134d |
|  | 09 | **Division 09 - Finishes** |  | 2020-05-28 | 2021-10-22 |  |  |  |
|  | 2200 | **09 22 00 Supports for Plaster and Gypsum Board** |  | 2021-04-01 | 2021-06-15 |  |  |  |
| 092200-01 |  | SUBM - Support for Plast, Gyp | 20d | 2021-04-01 A | 2021-05-03 A | PM1050 | 100% |  |
| 092200-02 |  | GOV APPR - Supp for Plast, Gyp | 30d | 2021-05-04 A | 2021-06-15 A | 092200-01 | 100% |  |
|  | 2423 | **09 24 23 Cement Stucco** |  | 2021-07-01 | 2021-09-25 |  |  |  |
| 092423-01 |  | SUBM - Cement Stucco | 20d | 2021-07-01 | 2021-07-29 | PM1050 |  | 74d |
| 092423-02 |  | QC APPR - Cement Stucco | 10d | 2021-07-30 | 2021-08-12 | 092423-01 |  | 74d |
| 092423-03 |  | SUBM SAMP Panel - Stucco | 10d | 2021-08-13 | 2021-08-26 | 092423-02 |  | 74d |
| 092423-13 |  | GOV APPR SAMP Panel - Stucco | 30d | 2021-08-27 | 2021-09-25 | 092423-03 |  | 110d |
|  | 2900 | **09 29 00 Gypsum Board** |  | 2021-04-01 | 2021-04-20 |  |  |  |
| 092900-01 |  | SUBM - Gypsum Board | 20d | 2021-04-01 A | 2021-04-07 A | PM1050 | 100% |  |
| 092900-02 |  | GOV APPR - Gypsum Board | 30d | 2021-04-08 A | 2021-04-20 A | 092900-01 | 100% |  |
|  | 3010 | **09 30 10 Tiling (FIO)** |  | 2021-07-01 | 2021-10-22 |  |  |  |
| 093010-01 |  | SUBM - Tiling | 40d | 2021-07-01 | 2021-08-26 | PM1050 |  | 106d |
| 093010-02 |  | QC APPR - Tiling | 15d | 2021-08-27 | 2021-09-17 | 093010-01 |  | 106d |
| 093010-03 |  | GOV FIO - Tiling | 7d | 2021-09-18 | 2021-09-24 | 093010-02 |  | 158d |
| 093010-13 |  | PROC - Tiling | 20d | 2021-09-27 | 2021-10-22 | 093010-03 |  | 106d |
|  | 5100 | **09 51 00 Acoustical Ceilings (FIO)** |  | 2020-05-28 | 2021-08-19 |  |  |  |
| 095100-01 |  | SUBM - Acoustical Ceilings | 40d | 2020-05-28 A | 2021-07-08 | PM1050 |  | 113d |
| 095100-02 |  | QC APPR - Acoustical Ceilings | 15d | 2021-06-01 A | 2021-07-15 | 095100-01 |  | 113d |
| 095100-03 |  | GOV FIO - Acoustical Ceilings | 7d | 2021-06-18 A | 2021-07-22 | 095100-02 |  | 166d |
| 095100-13 |  | PROC - Acoustical Ceilings | 20d | 2021-07-23 | 2021-08-19 | 095100-03 |  | 112d |
|  | 6238 | **09 62 38 Static-Control Flooring** |  | 2021-07-01 | 2021-09-27 |  |  |  |
| 096238-01 |  | SUBM - Static-Control Flooring | 20d | 2021-07-01 | 2021-07-29 | PM1050 |  | 65d |
| 096238-02 |  | GOV APPR - Static-Control Flrg | 30d | 2021-07-30 | 2021-08-28 | 096238-01 |  | 93d |
| 096238-12 |  | PROC - Static-Control Flooring | 20d | 2021-08-30 | 2021-09-27 | 096238-02 |  | 62d |
|  | 6500 | **09 65 00 Resilient Flooring (FIO)** |  | 2021-07-01 | 2021-10-22 |  |  |  |
| 096500-01 |  | SUBM - Resilient Flooring | 40d | 2021-07-01 | 2021-08-26 | PM1050 |  | 111d |
| 096500-02 |  | QC APPR - Resilient Flooring | 15d | 2021-08-27 | 2021-09-17 | 096500-01 |  | 111d |
| 096500-03 |  | GOV FIO - Resilient Flooring | 7d | 2021-09-18 | 2021-09-24 | 096500-02 |  | 165d |
| 096500-13 |  | PROC - Resilient Flooring | 20d | 2021-09-27 | 2021-10-22 | 096500-03 |  | 111d |
|  | 6566 | **09 65 66 Resilient Athletic Flooring (FIO)** |  | 2021-07-01 | 2021-10-22 |  |  |  |
| 096566-01 |  | SUBM - Athletic Flooring | 40d | 2021-07-01 | 2021-08-26 | PM1050 |  | 138d |
| 096566-02 |  | QC APPR - Athletic Flooring | 15d | 2021-08-27 | 2021-09-17 | 096566-01 |  | 138d |
| 096566-03 |  | GOV FIO - Athletic Flooring | 7d | 2021-09-18 | 2021-09-24 | 096566-02 |  | 202d |
| 096566-13 |  | PROC - Athletic Flooring | 20d | 2021-09-27 | 2021-10-22 | 096566-03 |  | 138d |
|  | 6726 | **09 67 26 Quartz Flooring (FIO)** |  | 2021-07-01 | 2021-09-24 |  |  |  |
| 096726-01 |  | SUBM - Quartz Flooring | 40d | 2021-07-01 | 2021-08-26 | PM1050 |  | 105d |
| 096726-02 |  | QC APPR - Quartz Flooring | 15d | 2021-08-27 | 2021-09-17 | 096726-01 |  | 105d |
| 096726-03 |  | GOV FIO - Quartz Flooring | 7d | 2021-09-18 | 2021-09-24 | 096726-02 |  | 157d |
|  | 6800 | **09 68 00 Carpeting (FIO)** |  | 2021-07-01 | 2021-10-22 |  |  |  |
| 096800-01 |  | SUBM - Carpeting | 40d | 2021-07-01 | 2021-08-26 | PM1050 |  | 91d |
| 096800-02 |  | QC APPR - Carpeting | 15d | 2021-08-27 | 2021-09-17 | 096800-01 |  | 91d |
| 096800-03 |  | GOV FIO - Carpeting | 7d | 2021-09-18 | 2021-09-24 | 096800-02 |  | 136d |
| 096800-13 |  | PROC - Carpeting | 20d | 2021-09-27 | 2021-10-22 | 096800-03 |  | 91d |
|  | 6919 | **09 69 19 Stringerless Access Flooring (FIO)** |  | 2020-11-02 | 2021-09-17 |  |  |  |
| 096919-01 |  | SUBM - Access Flooring | 40d | 2020-11-02 A | 2021-07-15 | PM1050 |  | 150d |
| 096919-02 |  | QC APPR - Access Flooring | 15d | 2021-06-01 A | 2021-06-17 A | 096919-01 | 100% |  |
| 096919-03 |  | GOV FIO - Access Flooring | 7d | 2021-06-16 A | 2021-07-22 | 096919-02 |  | 221d |
| 096919-13 |  | PROC - Access Flooring | 40d | 2021-07-23 | 2021-09-17 | 096919-03 |  | 150d |
|  | 8420 | **09 84 20 Acoustical Panels** |  | 2021-07-01 | 2021-08-28 |  |  |  |
| 098420-01 |  | SUBM - Acoustical Panels | 20d | 2021-07-01 | 2021-07-29 | PM1050 |  | 186d |
| 098420-02 |  | GOV APPR - Acoustical Panels | 30d | 2021-07-30 | 2021-08-28 | 098420-01 |  | 271d |
|  | 9000 | **09 90 00 Paints and Coatings (FIO)** |  | 2021-07-01 | 2021-09-24 |  |  |  |
| 099000-01 |  | SUBM - Paints & Coatings | 40d | 2021-07-01 | 2021-08-26 | PM1050 |  | 37d |
| 099000-02 |  | QC APPR - Paints & Coatings | 15d | 2021-08-27 | 2021-09-17 | 099000-01 |  | 37d |
| 099000-03 |  | GOV FIO - Paints & Coatings | 7d | 2021-09-18 | 2021-09-24 | 099000-02 |  | 53d |

| ID | WBS | Task | Duration | Start | Finish | Predecessors | Complete | Total float |
| --- | --- | --- | --- | --- | --- | --- | --- | --- |
|  | 971316 | **09 97 13.16 Interior Coating of Welded Steel Water Tanks (FIO)** |  |  |  |  |  |  |
|  | 971317 | **09 97 13.17 Three Coat Epoxy Interior Coating of Welded Steel Fuel Tank (FIO)** |  |  |  |  |  |  |
|  | 971327 | **09 97 13.27 Exterior Coating of Steel Structures (FIO)** |  |  |  |  |  |  |
|  | 10 | **Division 10 - Specialties** |  | 2020-05-28 | 2021-11-23 |  |  |  |
|  | 1100 | **10 11 00 Visual Display Units (FIO)** |  |  |  |  |  |  |
|  | 140010 | **10 14 00.10 Exterior Signage (FIO)** |  | 2021-07-01 | 2021-09-17 |  |  |  |
| 101400-01 |  | SUBM - Exterior Signage | 20d | 2021-07-01 | 2021-07-29 | PM1050 |  | 168d |
| 101400-02 |  | QC APPR - Exterior Signage | 10d | 2021-07-30 | 2021-08-12 | 101400-01 |  | 168d |
| 101400-03 |  | GOV FIO - Exterior Signage | 7d | 2021-08-13 | 2021-08-19 | 101400-02 |  | 245d |
| 101400-09 |  | PROC - Exterior Signage | 20d | 2021-08-20 | 2021-09-17 | 101400-03 |  | 168d |
|  | 140020 | **10 14 00.20 Interior Signage** |  | 2021-07-01 | 2021-09-27 |  |  |  |
| 101400-20 |  | SUBM - Interior Signage | 20d | 2021-07-01 | 2021-07-29 | PM1050 |  | 161d |
| 101400-21 |  | GOV APPR - Interior Signage | 30d | 2021-07-30 | 2021-08-28 | 101400-20 |  | 236d |
| 101400-29 |  | PROC - Interior Signage | 20d | 2021-08-30 | 2021-09-27 | 101400-21 |  | 162d |
|  | 1453 | **10 14 53 Onsite Traffic Signage (FIO)** |  |  |  |  |  |  |
|  | 2113 | **10 21 13 Toilet Compartments** |  | 2020-05-28 | 2021-09-27 |  |  |  |
| 101453-01 |  | SUBM - Toilet Compartments | 20d | 2020-05-28 A | 2021-07-29 | PM1050 |  | 159d |
| 101453-02 |  | GOV APPR - Toilet Compartments | 30d | 2021-07-30 | 2021-08-28 | 101453-01 |  | 233d |
| 101453-09 |  | PROC - Toilet Compartments | 20d | 2021-08-30 | 2021-09-27 | 101453-02 |  | 159d |
|  | 2213 | **10 22 13 Wire Mesh Partitions (FIO)** |  | 2021-04-01 | 2021-07-29 |  |  |  |
| 102213-01 |  | SUBM - Wire Mesh Paritions | 60d | 2021-04-01 A | 2021-04-07 A | PM1050 | 100% |  |
| 102213-02 |  | QC APPR - Wire Mesh Partitions | 10d | 2021-04-07 A | 2021-04-12 A | 102213-01 | 100% |  |
| 102213-03 |  | GOV FIO - Wire Mesh Partitions | 7d | 2021-04-13 A | 2021-04-13 A | 102213-02 | 100% |  |
| 102213-09 |  | PROC - Wire Mesh Partitions | 20d | 2021-04-14 A | 2021-07-29 | 102213-03 |  | 225d |
|  | 2239 | **10 22 39 Folding Panel Partitions (FIO)** |  | 2020-05-28 | 2021-09-14 |  |  |  |
| 102239-01 |  | SUBM - Folding Panel Partition | 40d | 2020-05-28 A | 2021-06-03 A | PM1050 | 100% |  |
| 102239-02 |  | QC APPR - Fold Panel Partition | 15d | 2021-05-28 A | 2021-06-07 A | 102239-01 | 100% |  |
| 102239-12 |  | GOV FIO - Fold Panel Partition | 7d | 2021-06-08 A | 2021-07-01 | 102239-02 |  | 200d |
| 102239-08 |  | Field Measure - Fod Panel Part | 1d | 2021-07-02 | 2021-07-02 | 1STA100, 102239-12 |  | 135d |
| 102239-09 |  | PROC - Fold Panel Part Tracks | 30d | 2021-07-06 | 2021-08-16 | 102239-12, 102239-08 |  | 135d |
| 102239-10 |  | PROC - Fold Panel Part Panels | 50d | 2021-07-06 | 2021-09-14 | 102239-12, 102239-08 |  | 176d |
|  | 2600 | **10 26 00 Wall Protection** |  | 2021-07-01 | 2021-10-11 |  |  |  |
| 102600-01 |  | SUBM - Wall Protection | 20d | 2021-07-01 | 2021-07-29 | PM1050 |  | 130d |
| 102600-02 |  | GOV APPR - Wall Protection | 30d | 2021-07-30 | 2021-08-28 | 102600-01 |  | 192d |
| 102600-09 |  | PROC - Wall Protection | 30d | 2021-08-30 | 2021-10-11 | 102600-02 |  | 130d |
|  | 2641 | **10 26 41 Bullet Resistant Panels** |  | 2021-03-01 | 2021-07-29 |  |  |  |
| 102641-01 |  | SUBM - Bullet Resistant Panels | 20d | 2021-03-01 A | 2021-04-26 A | PM1050 | 100% |  |
| 102641-02 |  | GOV APPR - Bullet Resist Panel | 30d | 2021-04-14 A | 2021-05-18 A | 102641-01 | 100% |  |
| 102641-09 |  | PROC - Bullet Resistant Panels | 20d | 2021-05-19 A | 2021-07-29 | 102641-02 |  | 66d |
|  | 2813 | **10 28 13 Toilet Accessories** |  | 2020-05-28 | 2021-09-10 |  |  |  |
| 102813-01 |  | SUBM - Toilet Accessories | 20d | 2020-05-28 A | 2021-07-13 | PM1050 |  | 178d |
| 102813-02 |  | GOV APPR - Toilet Accessories | 30d | 2021-07-14 | 2021-08-12 | 102813-01 |  | 259d |
| 102813-09 |  | PROC - Toilet Accessories | 20d | 2021-08-13 | 2021-09-10 | 102813-02 |  | 178d |
|  | 3500 | **10 35 00 Flagpoles (FIO)** |  | 2020-05-28 | 2021-08-19 |  |  |  |
| 103500-01 |  | SUBM - Flagpoles | 20d | 2020-05-28 A | 2021-06-01 A | PM1050 | 100% |  |
| 103500-02 |  | QC APPR - Flagpoles | 15d | 2021-05-27 A | 2021-06-01 A | 103500-01 | 100% |  |
| 103500-12 |  | GOV FIO - Flagpoles | 7d | 2021-06-02 A | 2021-06-07 A | 103500-02 | 100% |  |
| 103500-09 |  | PROC - Flagpoles | 35d | 2021-06-08 A | 2021-08-19 | 103500-12 |  | 107d |
|  | 4416 | **10 44 16 Fire Extinguishers** |  | 2020-05-28 | 2021-09-10 |  |  |  |
| 104416-01 |  | SUBM - Fire Extinguishers | 20d | 2020-05-28 A | 2021-07-13 | PM1050 |  | 178d |
| 104416-02 |  | GOV APPR - Fire Extinguishers | 30d | 2021-07-14 | 2021-08-12 | 104416-01 |  | 259d |
| 104416-09 |  | PROC - Fire Extinguishers | 20d | 2021-08-13 | 2021-09-10 | 104416-02 |  | 178d |
|  | 5113 | **10 51 13 Metal Lockers** |  | 2021-07-01 | 2021-11-23 |  |  |  |
| 105113-01 |  | SUBM - Metal Lockers | 20d | 2021-07-01 | 2021-07-29 | PM1050 |  | 106d |
| 105113-02 |  | GOV APPR - Metal Lockers | 30d | 2021-07-30 | 2021-08-28 | 105113-01 |  | 158d |
| 105113-09 |  | PROC - Metal Lockers | 60d | 2021-08-30 | 2021-11-23 | 105113-02 |  | 107d |
|  | 5613 | **10 56 13 Shelving CFCI (FIO)** |  | 2021-07-01 | 2021-11-23 |  |  |  |
| 105613-01 |  | SUBM - Shelving | 20d | 2021-07-01 | 2021-07-29 | PM1050 |  | 116d |
| 105613-02 |  | GOV APPR - Shelving | 30d | 2021-07-30 | 2021-08-28 | 105613-01 |  | 172d |
| 105613-09 |  | PROC - Shelving | 60d | 2021-08-30 | 2021-11-23 | 105613-02 |  | 117d |
|  | 7000 | **10 70 00 Exterior Sun Control Devices** |  | 2021-03-01 | 2021-10-22 |  |  |  |
| 107000-01 |  | SUBM - Ext Sun Ctrl Devices | 60d | 2021-03-01 A | 2021-07-13 | PM1050 |  | 161d |
| 107000-02 |  | GOV APPR - Ext Sun Ctrl Device | 30d | 2021-03-24 A | 2021-08-12 | 107000-01 |  | 236d |
| 107000-09 |  | PROC - Ext Sun Ctrl Devices | 50d | 2021-08-13 | 2021-10-22 | 107000-02 |  | 161d |
|  | 11 | **Division 11 - Equipment** |  | 2021-07-01 | 2022-01-21 |  |  |  |
|  | 3113 | **11 31 13 Electric Kitchen Equipment CFCI (FIO)** |  |  |  |  |  |  |
|  | 6613 | **11 66 13 Exercise Equipment CFCI (FIO)** |  |  |  |  |  |  |
|  | 6623 | **11 66 23 Combat Ring Panels (FIO)** |  |  |  |  |  |  |
|  | 9819 | **11 98 19 Detention Padding (FIO)** |  | 2021-07-01 | 2021-11-05 |  |  |  |
| 119819-01 |  | SUBM - Detention Padding | 45d | 2021-07-01 | 2021-09-02 | PM1050 |  | 138d |

| ID | WBS | Task | Duration | Start | Finish | Predecessors | Complete | Total float |
| --- | --- | --- | --- | --- | --- | --- | --- | --- |
| 119819-02 |  | QC APPR - Detention Padding | 20d | 2021-09-03 | 2021-10-01 | 119819-01 |  | 138d |
| 119819-03 |  | GOV FIO - Detention Padding | 7d | 2021-10-02 | 2021-10-08 | 119819-02 |  | 202d |
| 119819-21 |  | PROC - Detention Padding | 20d | 2021-10-11 | 2021-11-05 | 119819-03 |  | 138d |
|  | 1126 | **11 11 26 Vehicle Washing Equipment** |  | 2021-07-01 | 2022-01-21 |  |  |  |
| 111126-01 |  | SUBM - Vehicle Wash Equip | 60d | 2021-07-01 | 2021-09-24 | PM1070 |  | 57d |
| 111126-02 |  | GOV APPR - Vehicle Wash Equip | 30d | 2021-09-25 | 2021-10-24 | 111126-01 |  | 86d |
| 111126-09 |  | PROC - Vehicle Wash Equip | 60d | 2021-10-25 | 2022-01-21 | 111126-02 |  | 57d |
|  | 12 | **Division 12 - Furnishings** |  | 2021-03-29 | 2021-11-15 |  |  |  |
|  | 2413 | **12 24 13 Roller Window Shades** |  | 2021-07-01 | 2021-10-29 |  |  |  |
| 122413-01 |  | SUBM - Roller Window Shades | 45d | 2021-07-01 | 2021-09-02 | PM1050 |  | 139d |
| 122413-02 |  | GOV APPR - Roller Window Shade | 30d | 2021-09-03 | 2021-10-02 | 122413-01 |  | 205d |
| 122413-09 |  | PROC - Roller Window Shades | 20d | 2021-10-04 | 2021-10-29 | 122413-02 |  | 140d |
|  | 3600 | **12 36 00 Countertops** |  | 2021-07-01 | 2021-11-15 |  |  |  |
| 123600-01 |  | SUBM - Countertops | 45d | 2021-07-01 | 2021-09-02 | PM1050 |  | 72d |
| 123600-02 |  | GOV APPR - Countertops | 30d | 2021-09-03 | 2021-10-02 | 123600-01 |  | 107d |
| 123600-09 |  | FABR - Countertops | 30d | 2021-10-04 | 2021-11-15 | 123600-02, 064116-30 |  | 71d |
|  | 4813 | **12 48 13 Entrance Floor Mats and Frames** |  | 2021-03-29 | 2021-09-10 |  |  |  |
| 124813-01 |  | SUBM - Entrance Floor Mats | 45d | 2021-03-29 A | 2021-07-13 | PM1050 |  | 181d |
| 124813-02 |  | GOV APPR - Entrance Floor Mats | 30d | 2021-07-14 | 2021-08-12 | 124813-01 |  | 264d |
| 124813-09 |  | PROC - Entrance Floor Mats | 20d | 2021-08-13 | 2021-09-10 | 124813-02 |  | 181d |
|  | 13 | **Division 13 - Special Construction** |  | 2020-05-28 | 2021-12-22 |  |  |  |
|  | 0480 | **13 04 80 Canopy** |  | 2020-10-01 | 2021-09-03 |  |  |  |
| 130480-01 |  | SUBM - Canopy | 80d | 2020-10-01 A | 2020-12-30 A | PM1070 | 100% |  |
| 130480-02 |  | GOV REV - Canopy | 30d | 2020-12-30 A | 2021-01-20 A | 130480-01 | 100% |  |
| 130480-03 |  | RESUBM - Canopy | 10d | 2021-01-20 A | 2021-01-20 A | 130480-02 | 100% |  |
| 130480-04 |  | GOV APPR - Canopy | 21d | 2021-01-20 A | 2021-01-20 A | 130480-03 | 100% |  |
| 130480-09 |  | Canopy Submittals Approved | 1d | 2021-01-20 A | 2021-07-01 | 130480-04 | 95% | 44d |
| 130480-12 |  | FABR Canopy | 45d | 2021-07-02 | 2021-09-03 | 130480-02, 130480-04, 130480-09 |  | 44d |
|  | 1931 | **13 19 31 Vertical Lift Kennel Doors** |  | 2021-07-01 | 2021-12-22 |  |  |  |
| 131931-01 |  | SUBM - Vert Lift Kennel Doors | 60d | 2021-07-01 | 2021-09-24 | PM1110 |  | 126d |
| 131931-02 |  | GOV APPR - Vert Lift Ken Doors | 30d | 2021-09-25 | 2021-10-24 | 131931-01 |  | 186d |
| 131931-09 |  | PROC - Vert Lift Kennel Doors | 40d | 2021-10-25 | 2021-12-22 | 131931-02 |  | 128d |
|  | 3419 | **13 34 19 Metal Building Systems** |  | 2020-05-28 | 2021-08-12 |  |  |  |
|  | 1 | **Buildings 1, 1A, & 3** |  | 2020-05-28 | 2021-03-23 |  |  |  |
| 133419-01 |  | SUBM - Metal Bldgs - 1,1A,3 | 46d | 2020-05-28 A | 2020-08-25 A | PM1050 | 100% |  |
| 133419-21 |  | SUBM - AB Dwgs - 1, 1A, & 3 | 41d | 2020-05-28 A | 2020-08-25 A | PM1050 | 100% |  |
| 133419-02 |  | GOV REV - Metal Bldgs - 1,1A,3 | 30d | 2020-09-03 A | 2020-09-22 A | 133419-01 | 100% |  |
| 133419-22 |  | GOV REV - AB Dwgs - 1, 1A, 3 | 30d | 2020-09-03 A | 2020-12-22 A | 133419-21 | 100% |  |
| 133419-03 |  | RESUBM - Metal Bldgs - 1,1A,3 | 10d | 2020-09-23 A | 2020-12-07 A | 133419-02, RFI53-120 FF | 100% |  |
| 133419-04 |  | GOV APPR - Metal Bldg - 1,1A,3 | 21d | 2020-12-07 A | 2021-03-11 A | 133419-03 | 100% |  |
| 133419-09 |  | Metal Bldgs 1 & 1A Approved | 1d | 2020-12-14 A | 2021-03-11 A | 133419-04 | 100% |  |
| 133419-12 |  | FABR Metal Bldgs - 1, 1A, 3 | 70d | 2020-12-15 A | 2021-03-23 A | 133419-02, 133419-04, 133419-09, 133419-10 | 100% |  |
| 133419-29 |  | FABR - Anchor Bolts - 1, 1A, 3 | 15d | 2021-01-26 A | 2021-02-04 A | 133419-22 | 100% |  |
| 133419-10 |  | Metal Bldg 3 Approved | 1d | 2021-03-11 A | 2021-03-11 A | 133419-04 | 100% |  |
|  | 2 | **Building 5** |  | 2020-10-01 | 2021-08-12 |  |  |  |
| 133419-50 |  | SUBM - Metal Bldgs - B5 | 80d | 2020-10-01 A | 2020-12-30 A | PM1110 | 100% |  |
| 133419-51 |  | GOV REV - Metal Bldgs - B5 | 30d | 2020-12-30 A | 2021-01-20 A | 133419-50 | 100% |  |
| 133419-52 |  | RESUBM - Metal Bldgs - B5 | 10d | 2021-01-20 A | 2021-01-20 A | 133419-51 | 100% |  |
| 133419-53 |  | GOV APPR - Metal Bldgs - B5 | 21d | 2021-01-20 A | 2021-01-20 A | 133419-52 | 100% |  |
| 133419-54 |  | Metal Bldg 5 Approved | 1d | 2021-01-20 A | 2021-02-10 A | 133419-53 | 100% |  |
| 133419-59 |  | FABR Metal Bldgs - B5 | 45d | 2021-02-11 A | 2021-08-12 | 133419-51, 133419-53, 133419-54 |  | 87d |
|  | 4800 | **13 48 00 Seismic Protection for Miscellaneous Equipment** |  |  |  |  |  |  |
|  | 21 | **Division 21 - Fire Suppression** |  | 2020-11-02 | 2021-09-24 |  |  |  |
| 210000-01 |  | SUBM - FP Specialist | 14d | 2020-11-02 A | 2020-11-19 A | PM1050 | 100% |  |
| 210000-02 |  | GOV REV - FP Specialist | 30d | 2020-11-23 A | 2020-11-30 A | 210000-01 | 100% |  |
|  | 1313 | **21 13 13 Wet Pipe Sprinkler System, Fire Protection** |  | 2020-11-02 | 2021-06-22 |  |  |  |
| 211313-01 |  | SUBM - Wet Pipe Sprink Sys | 45d | 2020-11-02 A | 2021-01-20 A | 210000-01 | 100% |  |
| 211313-03 |  | GOV REV - Wet Pipe Sprink Sys | 30d | 2020-12-03 A | 2021-02-10 A | 211313-01, 210000-02 | 100% |  |
| 211313-04 |  | RESUBM - Wet Pipe Sprink Sys | 10d | 2021-02-11 A | 2021-03-23 A | 211313-03 | 100% |  |
| 211313-06 |  | GOV APPR - Wet Pipe Sprink Sys | 21d | 2021-03-24 A | 2021-06-22 A | 211313-04 | 100% |  |
| 211313-12 |  | PROC - Wet Pipe Sprink Sys | 20d | 2021-05-03 A | 2021-06-10 A | 211313-06 | 100% |  |
|  | 1317 | **21 13 17 Dry Pipe Sprinkler System, Fire Protection** |  | 2020-11-02 | 2021-07-29 |  |  |  |
| 211317-01 |  | SUBM - Dry Pipe Sprink Sys | 45d | 2020-11-02 A | 2021-01-20 A | 210000-01 | 100% |  |
| 211317-03 |  | GOV REV - Dry Pipe Sprink Sys | 30d | 2021-01-19 A | 2021-02-11 A | 211317-01, 210000-02 | 100% |  |
| 211317-04 |  | RESUBM - Dry Pipe Sprink Sys | 10d | 2021-02-12 A | 2021-03-23 A | 211317-03 | 100% |  |
| 211317-06 |  | GOV APPR - Dry Pipe Sprink Sys | 21d | 2021-03-24 A | 2021-06-25 A | 211317-04 | 100% |  |
| 211317-12 |  | PROC - Dry Pipe Sprink Sys | 20d | 2021-06-28 A | 2021-07-29 | 211317-06 |  | 36d |
|  | 3000 | **21 30 00 Fire Pumps** |  | 2020-11-02 | 2021-09-24 |  |  |  |
| 213000-01 |  | SUBM - Fire Pumps | 45d | 2020-11-02 A | 2021-01-19 A | 210000-01 | 100% |  |
| 213000-03 |  | GOV REV - Fire Pumps | 30d | 2021-01-19 A | 2021-02-03 A | 213000-01, 210000-02 | 100% |  |

| ID | WBS | Task | Duration | Start | Finish | Predecessors | Complete | Total float |
| --- | --- | --- | --- | --- | --- | --- | --- | --- |
| 213000-04 |  | RESUBM - Fire Pumps | 10d | 2021-02-04 A | 2021-04-22 A | 213000-03 | 100% |  |
| 213000-06 |  | GOV APPR - Fire Pumps | 21d | 2021-03-25 A | 2021-07-15 | 213000-04 |  | 51d |
| 213000-12 |  | PROC - Fire Pumps | 50d | 2021-07-16 | 2021-09-24 | 213000-06 |  | 51d |
|  | 22 | **Division 22 - Plumbing** |  | 2020-09-01 | 2021-09-11 |  |  |  |
|  | 0000 | **22 00 00 Plumbing General Purpose** |  | 2020-09-01 | 2021-08-27 |  |  |  |
| 220000-01 |  | SUBM - Plumbing Sys | 45d | 2020-09-01 A | 2021-07-01 | PM1050 | 25% | 170d |
| 220000-02 |  | GOV APPR - Plumbing Sys | 30d | 2020-09-29 A | 2021-07-16 | 220000-01 |  | 250d |
| 220000-09 |  | PROC - Plumbing Fixtures | 30d | 2021-07-19 | 2021-08-27 | 220000-02 |  | 171d |
|  | 0548 | **22 05 48 Mechanical Sound, Vibration, and Seismic Control (FIO)** |  |  |  |  |  |  |
|  | 0719 | **22 07 19 Plumbing Piping Insulation** |  | 2021-05-03 | 2021-09-11 |  |  |  |
| 220719-01 |  | SUBM - Plumbing Insulation | 45d | 2021-05-03 A | 2021-08-12 | PM1050 |  | 16d |
| 220719-02 |  | GOV APPR - Plumbing Insulation | 30d | 2021-08-13 | 2021-09-11 | 220719-01 |  | 23d |
|  | 3100 | **22 31 00 Water Softeners, Cation-Exchange Sodium Cycle (FIO)** |  |  |  |  |  |  |
|  | 23 | **Division 23 - HVAC** |  | 2020-05-28 | 2021-12-12 |  |  |  |
|  | 0000 | **23 00 00 Air Supply, Distribution, Ventilation, and Exhaust Systems** |  | 2020-05-28 | 2021-09-27 |  |  |  |
| 230000-01 |  | SUBM - HVAC Sys | 81d | 2020-05-28 A | 2021-07-15 | PM1050 |  | 29d |
| 230000-02 |  | GOV APPR - HVAC Sys | 30d | 2021-03-19 A | 2021-07-30 | 230000-01 |  | 41d |
| 230000-22 |  | PROC - SDB - VAVs | 30d | 2021-04-05 A | 2021-09-13 | 230000-02 |  | 28d |
| 230000-32 |  | PROC - CRAC Units | 40d | 2021-04-05 A | 2021-09-27 | 230000-02 |  | 83d |
|  | 0515 | **23 05 15 Common Piping for HVAC** |  | 2020-05-28 | 2021-06-08 |  |  |  |
| 230515-01 |  | SUBM - Piping for HVAC | 81d | 2020-05-28 A | 2021-06-01 A | PM1050 | 100% |  |
| 230515-02 |  | GOV APPR - Piping for HVAC | 30d | 2021-05-11 A | 2021-06-08 A | 230515-01 | 100% |  |
|  | 0548 | **23 05 48 Vibration and Seismic Controls for HVAC Piping and Equipment** |  | 2020-05-28 | 2021-08-28 |  |  |  |
| 230548-01 |  | SUBM - Vibr & Seis Ctrl - HVAC | 81d | 2020-05-28 A | 2021-07-29 | PM1050 |  | 41d |
| 230548-02 |  | GOV APPR - Vib & Seis Ctr HVAC | 30d | 2021-07-30 | 2021-08-28 | 230548-01 |  | 60d |
|  | 0593 | **23 05 93 Testing, Adjusting, and Balancing for HVAC** |  | 2021-07-01 | 2021-12-12 |  |  |  |
| 230593-01 |  | SUBM - TAB Specialist | 45d | 2021-07-01 | 2021-08-14 | PM1050 |  | 93d |
| 230593-11 |  | SUBM - TAB Agency & Personnel | 45d | 2021-07-01 | 2021-08-14 | PM1050 |  | 93d |
| 230593-02 |  | GOV APPR - TAB Specialist | 30d | 2021-08-15 | 2021-09-13 | 230593-01 |  | 93d |
| 230593-12 |  | GOV APPR - TAB Agency & Person | 30d | 2021-08-15 | 2021-09-13 | 230593-11 |  | 93d |
| 230593-22 |  | Schedule Pre-Dalt/TAB Meeting | 7d | 2021-09-14 | 2021-09-20 | 230593-12, 1RIC150 |  | 119d |
| 230593-32 |  | SUBM - TAB Design Review | 60d | 2021-09-14 | 2021-11-12 | 230593-02, 230593-12, 230593-12 FF |  | 93d |
| 230593-23 |  | Pre-Dalt/TAB Meeting | 1d | 2021-09-21 | 2021-09-21 | 230593-22 |  | 80d |
| 230593-33 |  | GOV APPR - TAB Design Review | 30d | 2021-11-13 | 2021-12-12 | 230593-32 |  | 93d |
|  | 0700 | **23 07 00 Thermal Insulation for Mechanical Systems** |  | 2020-05-28 | 2021-09-25 |  |  |  |
| 230700-01 |  | SUBM - Insulation for Mech | 81d | 2020-05-28 A | 2021-08-26 | PM1050 |  | 85d |
| 230700-02 |  | GOV APPR - Insulation for Mech | 30d | 2021-08-27 | 2021-09-25 | 230700-01 |  | 129d |
|  | 0900 | **23 09 00 Instrumentation and Control for HVAC** |  | 2021-07-01 | 2021-10-24 |  |  |  |
| 230900-01 |  | SUBM - Instrument & Ctrl HVAC | 60d | 2021-07-01 | 2021-09-24 | PM1050 |  | 65d |
| 230900-02 |  | GOV APPR - Instrmt & Ctrl HVAC | 30d | 2021-09-25 | 2021-10-24 | 230900-01 |  | 98d |
|  | 1125 | **23 11 25 Facility Gas Piping** |  | 2020-05-28 | 2021-08-21 |  |  |  |
| 231125-01 |  | SUBM - Facility Gas Piping | 81d | 2020-05-28 A | 2021-07-22 | PM1050 |  | 16d |
| 231125-02 |  | GOV APPR - Facility Gas Piping | 30d | 2021-07-23 | 2021-08-21 | 231125-01 |  | 23d |
|  | 2123 | **23 21 23 Hydronic Pumps** |  | 2020-05-28 | 2021-08-26 |  |  |  |
| 232123-01 |  | SUBM - Hydronic Pumps | 81d | 2020-05-28 A | 2021-06-02 A | PM1050 | 100% |  |
| 232123-02 |  | GOV APPR - Hydronic Pumps | 30d | 2021-05-11 A | 2021-06-07 A | 232123-01 | 100% |  |
| 232123-12 |  | PROC - Hydronic Pumps | 40d | 2021-06-08 A | 2021-08-26 | 232123-02 |  | 72d |
|  | 2500 | **23 25 00 Chemical Treatment of Water for Mechanical Systems** |  | 2020-05-28 | 2021-10-10 |  |  |  |
| 232500-01 |  | SUBM - Water Treatment Sys | 81d | 2020-05-28 A | 2021-09-10 | PM1050 |  | 100d |
| 232500-02 |  | GOV APPR - Water Treatment Sys | 30d | 2021-09-11 | 2021-10-10 | 232500-01 |  | 149d |
|  | 5200 | **23 52 00 Heating Boilers** |  | 2020-05-28 | 2021-10-11 |  |  |  |
| 235200-01 |  | SUBM - Heating Boilers | 81d | 2020-05-28 A | 2021-07-15 | PM1050 |  | 40d |
| 235200-02 |  | GOV APPR - Heating Boilers | 30d | 2021-05-11 A | 2021-08-14 | 235200-01 |  | 59d |
| 235200-12 |  | PROC - Heating Boilers | 40d | 2021-08-16 | 2021-10-11 | 235200-02 |  | 41d |
|  | 5416 | **23 54 16 Heating System; Gas-Fired Heaters (FIO)** |  | 2020-05-28 | 2021-08-26 |  |  |  |
| 235416-01 |  | SUBM - Gas-Fired Heaters | 81d | 2020-05-28 A | 2021-02-17 A | PM1050 | 100% |  |
| 235416-02 |  | QC APPR - Gas-Fired Heaters | 20d | 2021-02-17 A | 2021-02-17 A | 235416-01 | 100% |  |
| 235416-22 |  | GOV FIO - Gas-Fired Heaters | 7d | 2021-02-17 A | 2021-02-22 A | 235416-02 | 100% |  |
| 235416-12 |  | PROC - Gas-Fired Heaters | 40d | 2021-02-23 A | 2021-08-26 | 235416-22 |  | 161d |
|  | 6410 | **23 64 10 Water Chillers, Vapor Compression Type** |  | 2020-05-28 | 2021-09-10 |  |  |  |
| 236410-01 |  | SUBM - Water Chillers | 81d | 2020-05-28 A | 2021-05-10 A | PM1050 | 100% |  |
| 236410-02 |  | GOV APPR - Water Chillers | 30d | 2021-03-24 A | 2021-05-10 A | 236410-01 | 100% |  |
| 236410-12 |  | PROC - Water Chillers | 50d | 2021-05-10 A | 2021-09-10 | 236410-02 |  | 62d |
|  | 6426 | **23 64 26 Chilled, Chilled-Hot, and Condenser Water Piping Systems** |  | 2020-05-28 | 2021-09-13 |  |  |  |
| 236426-01 |  | SUBM - Hydronic Piping | 81d | 2020-05-28 A | 2021-07-15 | PM1050 |  | 55d |
| 236426-02 |  | GOV APPR - Hydronic Piping | 30d | 2021-05-11 A | 2021-08-14 | 236426-01 |  | 79d |
| 236426-12 |  | PROC - Hydronic Piping | 20d | 2021-08-16 | 2021-09-13 | 236426-02 |  | 55d |
|  | 7313 | **23 73 13 Modular Indoor Central-Station Air-Handling Units** |  | 2020-05-28 | 2021-09-10 |  |  |  |
| 237313-01 |  | SUBM - Indoor AHUs | 81d | 2020-05-28 A | 2021-03-19 A | PM1050 | 100% |  |
| 237313-02 |  | GOV APPR - Indoor AHUs | 30d | 2021-01-07 A | 2021-04-05 A | 237313-01 | 100% |  |

| ID | WBS | Task | Duration | Start | Finish | Predecessors | Complete | Total float |
| --- | --- | --- | --- | --- | --- | --- | --- | --- |
| 237313-12 |  | PROC - Indoor AHUs | 50d | 2021-02-12 A | 2021-09-10 | 237313-02 |  | 61d |
|  | 7600 | **23 76 00 Evaporative Cooling System** |  |  |  |  |  |  |
|  | 26 | **Division 26 - Electrical** |  | 2020-07-01 | 2021-12-08 |  |  |  |
|  | 0500 | **26 05 00 Common Work Results for Electrical** |  | 2020-07-01 | 2021-08-07 |  |  |  |
| 260000-01 |  | SUBM - Common Work Result Elec | 30d | 2020-07-01 A | 2021-07-08 | PM1050 |  | 81d |
| 260000-02 |  | GOV APPR - Common Wrk Res Elec | 30d | 2021-07-09 | 2021-08-07 | 260000-01 |  | 116d |
|  | 0519 | **26 05 19 Insulated Wire and Cable** |  | 2020-07-01 | 2021-08-11 |  |  |  |
| 260519-01 |  | SUBM - Insulated Wire & Cable | 30d | 2020-07-01 A | 2021-07-12 | PM1050 |  | 92d |
| 260519-02 |  | GOV APPR - Insul Wire & Cable | 30d | 2021-07-13 | 2021-08-11 | 260519-01 |  | 131d |
|  | 0548 | **26 05 48 Seismic Protection for Electrical Equipment** |  | 2020-07-01 | 2021-08-28 |  |  |  |
| 260548-01 |  | SUBM - Seis Protect for Elec | 30d | 2020-07-01 A | 2021-07-29 | PM1050 |  | 71d |
| 260548-02 |  | GOV APPR - Seis Protect Elec | 30d | 2021-07-30 | 2021-08-28 | 260548-01 |  | 102d |
|  | 0571 | **26 05 71 Low Voltage Overcurrent Protective Devices** |  | 2020-07-01 | 2021-08-14 |  |  |  |
| 260571-01 |  | SUBM - LV Overcurr Protect Dev | 30d | 2020-07-01 A | 2021-07-15 | PM1050 |  | 21d |
| 260571-02 |  | GOV APPR - LV Overcur Prot Dev | 30d | 2021-07-16 | 2021-08-14 | 260571-01 |  | 29d |
|  | 0800 | **26 08 00 Apparatus Inspection and Testing** |  | 2021-07-01 | 2021-08-28 |  |  |  |
| 260800-01 |  | SUBM - Accept Test & Insp | 20d | 2021-07-01 | 2021-07-29 | 262413-02, 262300-02 |  | 101d |
| 260800-02 |  | GOV APPR - Accept Test & Insp | 30d | 2021-07-30 | 2021-08-28 | 260800-01 |  | 149d |
|  | 0923 | **26 09 23 Lighting Control Devices** |  | 2020-07-01 | 2021-10-02 |  |  |  |
| 260923-01 |  | SUBM - Lighting Ctrl Devices | 45d | 2020-07-01 A | 2021-09-02 | PM1050 |  | 95d |
| 260923-02 |  | GOV APPR - Lighting Ctr Device | 30d | 2021-09-03 | 2021-10-02 | 260923-01 |  | 143d |
|  | 2000 | **26 20 00 Interior Distribution System** |  | 2020-07-01 | 2021-08-14 |  |  |  |
| 262000-01 |  | SUBM - Int Distribution System | 45d | 2020-07-01 A | 2021-07-15 | PM1050 |  | 16d |
| 262000-02 |  | GOV APPR - Int Distrib Sys | 30d | 2021-03-16 A | 2021-08-14 | 262000-01 |  | 23d |
|  | 2300 | **26 23 00 Switchboards and Switchgear** |  | 2020-07-01 | 2021-11-08 |  |  |  |
| 262300-01 |  | SUBM - Switchboards/Switchgear | 45d | 2020-07-01 A | 2021-04-07 A | PM1050 | 100% |  |
| 262300-02 |  | GOV APPR - Switchbrds/Switchgr | 30d | 2021-03-16 A | 2021-04-07 A | 262300-01 | 100% |  |
| 262300-12 |  | PROC - Switchboards/Switchgear | 60d | 2021-04-08 A | 2021-11-08 | 262300-02, 260571-02 |  | 19d |
|  | 2413 | **26 24 13 Switchboards** |  | 2020-07-01 | 2021-10-22 |  |  |  |
| 262413-01 |  | SUBM - Switchboards | 45d | 2020-07-01 A | 2021-04-07 A | PM1050 | 100% |  |
| 262413-03 |  | SUBM - Power Coordination | 60d | 2020-07-01 A | 2021-04-20 A | PM1050 | 100% |  |
| 262413-05 |  | SUBM - Arc-Flash Study | 60d | 2020-07-01 A | 2021-04-20 A | PM1050 | 100% |  |
| 262413-07 |  | SUBM - Short Circ Study | 60d | 2020-07-01 A | 2021-04-20 A | PM1050 | 100% |  |
| 262413-02 |  | GOV APPR - Switchboards | 30d | 2021-04-07 A | 2021-04-09 A | 262413-01 | 100% |  |
| 262413-04 |  | GOV FIO - Power Coordination | 14d | 2021-04-22 A | 2021-05-11 A | 262413-03 | 100% |  |
| 262413-06 |  | GOV FIO - Arc-Flash Study | 14d | 2021-04-22 A | 2021-05-11 A | 262413-05 | 100% |  |
| 262413-08 |  | GOV FIO - Short Circ Study | 14d | 2021-04-22 A | 2021-05-11 A | 262413-07 | 100% |  |
| 262413-12 |  | PROC - Main Switchboards MSB1 | 80d | 2021-05-12 A | 2021-10-22 | 262413-02, 262413-04, 262413-06, 262413-08 |  | 28d |
|  | 2416 | **26 24 16 Panelboards** |  | 2020-07-01 | 2021-08-26 |  |  |  |
| 262416-01 |  | SUBM - Panelboards | 45d | 2020-07-01 A | 2021-04-07 A | PM1050 | 100% |  |
| 262416-02 |  | GOV APPR - Panelboards | 30d | 2021-04-07 A | 2021-04-07 A | 262416-01 | 100% |  |
| 262416-12 |  | PROC - Panelboards | 40d | 2021-04-08 A | 2021-08-26 | 262416-02 |  | 53d |
|  | 2800 | **26 28 00 Switchboards and Panelboards** |  |  |  |  |  |  |
|  | 2801 | **26 28 01 Coordinated Power System Protection (FIO)** |  |  |  |  |  |  |
|  | 2923 | **26 29 23 Variable Frequency Drive Systems Under 600 Volts** |  | 2020-07-01 | 2021-12-01 |  |  |  |
| 262923-01 |  | SUBM - Variable Freq Drive Sys | 45d | 2020-07-01 A | 2021-09-02 | PM1050 |  | 35d |
| 262923-02 |  | GOV APPR - Variable Freq Drive | 30d | 2021-09-03 | 2021-10-02 | 262923-01 |  | 52d |
| 262923-12 |  | PROC - Variable Freq Drive Sys | 40d | 2021-10-04 | 2021-12-01 | 262923-02 |  | 36d |
|  | 3215 | **26 32 15 Diesel-Generator Set Stationaly 100-2500 KW, With Auxiliaries** |  | 2020-07-01 | 2021-10-22 |  |  |  |
| 263215-01 |  | SUBM - Diesel-Generator Set | 60d | 2020-07-01 A | 2021-07-01 | PM1050 | 90% | 41d |
| 263215-02 |  | GOV APPR - Diesel-Generator | 30d | 2021-06-03 A | 2021-06-07 A | 263215-01 | 100% |  |
| 263215-12 |  | PROC - Diesel-Generator Set | 80d | 2021-06-08 A | 2021-10-22 | 263215-02 |  | 41d |
|  | 3233 | **26 32 33 Uninterruptible Power Supply UPS System Above 15KVA Capacity (FIO)** |  |  |  |  |  |  |
|  | 3353 | **26 33 53 Uninterruptible Power Supply UPS** |  | 2020-07-01 | 2021-09-24 |  |  |  |
| 263353-01 |  | SUBM - UPS | 60d | 2020-07-01 A | 2021-04-07 A | PM1050 | 100% |  |
| 263353-02 |  | GOV APPR - UPS | 30d | 2021-04-07 A | 2021-05-18 A | 263353-01 | 100% |  |
| 263353-12 |  | PROC - UPS | 60d | 2021-05-18 A | 2021-09-24 | 263353-02 |  | 78d |
|  | 41000 | **26 41 00 Lightning Protection System** |  | 2020-07-01 | 2021-05-11 |  |  |  |
| 264100-01 |  | SUBM - Lightning Protection | 60d | 2020-07-01 A | 2021-04-28 A | PM1050 | 100% |  |
| 264100-02 |  | GOV APPR - Lightning Protect | 30d | 2021-04-29 A | 2021-05-11 A | 264100-01 | 100% |  |
|  | 4214 | **26 42 14 Cathodic Protection System Sacrificial Anode** |  | 2020-07-01 | 2020-11-27 |  |  |  |
| 264214-01 |  | SUBM - Cathodic Protection | 60d | 2020-07-01 A | 2020-11-16 A | PM1050 | 100% |  |
| 264214-02 |  | GOV APPR - Cathodic Protection | 30d | 2020-11-16 A | 2020-11-27 A | 264214-01 | 100% |  |
|  | 4215 | **26 42 15 Cathodic Protection System Steel Water Tanks (FIO)** |  |  |  |  |  |  |
|  | 5100 | **26 51 00 Interior Lighting** |  | 2020-07-01 | 2021-11-23 |  |  |  |
| 265100-01 |  | SUBM - Interior Lighting | 60d | 2020-07-01 A | 2021-07-29 | PM1050 |  | 55d |
| 265400-02 |  | GOV APPR - Interior Lighting | 30d | 2021-07-30 | 2021-08-28 | 265100-01 |  | 80d |
| 265400-12 |  | PROC - Interior Lighting | 60d | 2021-08-30 | 2021-11-23 | 265400-02 |  | 55d |
|  | 5200 | **26 52 00 Emergency Lighting** |  | 2020-07-01 | 2021-09-24 |  |  |  |
| 265200-01 |  | SUBM - Emergency Lighting | 60d | 2020-07-01 A | 2021-05-19 A | PM1050 | 100% |  |

| ID | WBS | Task | Duration | Start | Finish | Predecessors | Complete | Total float |
| --- | --- | --- | --- | --- | --- | --- | --- | --- |
| 265200-02 |  | GOV APPR - Emergency Lighting | 30d | 2021-05-20 A | 2021-05-20 A | 265200-01 | 100% |  |
| 265200-12 |  | PROC - Emergency Lighting | 60d | 2021-05-24 A | 2021-09-24 | 265200-02 |  | 96d |
|  | 5300 | **26 53 00 Exit Signs** |  | 2020-07-01 | 2021-08-12 |  |  |  |
| 265300-01 |  | SUBM - Exit Signs | 60d | 2020-07-01 A | 2021-05-19 A | PM1050 | 100% |  |
| 265300-02 |  | GOV APPR - Exit Signs | 30d | 2021-05-20 A | 2021-05-20 A | 265300-01 | 100% |  |
| 265300-12 |  | PROC - Exit Signs | 30d | 2021-05-24 A | 2021-08-12 | 265300-02 |  | 128d |
|  | 5421 | **26 51 21 Helipad Lighting & Visual Navigation Aids** |  | 2020-07-01 | 2021-11-01 |  |  |  |
| 265421-01 |  | SUBM - Helipad Light/Vis Nav | 60d | 2020-07-01 A | 2021-07-08 | PM1080 |  | 131d |
| 265421-02 |  | GOV APPR - Helipad Ltg/Vis Nav | 30d | 2021-06-17 A | 2021-08-07 | 265421-01 |  | 193d |
| 265421-12 |  | PROC - Helipad Light/Vis Nav | 60d | 2021-08-09 | 2021-11-01 | 265421-02 |  | 132d |
|  | 5553 | **26 55 53 Security Lighting** |  | 2020-07-01 | 2021-12-08 |  |  |  |
| 265553-01 |  | SUBM - Security Lighting | 60d | 2020-07-01 A | 2021-08-12 | PM1050 |  | 45d |
| 265553-02 |  | GOV APPR - Security Lighting | 30d | 2021-08-13 | 2021-09-11 | 265553-01 |  | 66d |
| 265553-12 |  | PROC - Security Lighting | 60d | 2021-09-13 | 2021-12-08 | 265553-02 |  | 46d |
|  | 5600 | **26 56 00 Exterior Lighting** |  | 2020-07-01 | 2021-12-08 |  |  |  |
| 265600-01 |  | SUBM - Exterior Lighting | 60d | 2020-07-01 A | 2021-08-12 | PM1050 |  | 72d |
| 265600-02 |  | GOV APPR - Exterior Lighting | 30d | 2021-08-13 | 2021-09-11 | 265600-01 |  | 106d |
| 265600-12 |  | PROC - Exterior Lighting | 60d | 2021-09-13 | 2021-12-08 | 265600-02 |  | 71d |
|  | 27 | **Division 27 - Communications** |  | 2020-07-01 | 2021-10-24 |  |  |  |
|  | 0514 | **27 05 14 Cable Television Premises Distribution System (FIO)** |  |  |  |  |  |  |
|  | 0528 | **27 05 28 Cable Trays for Communications Systems** |  | 2020-07-01 | 2021-09-13 |  |  |  |
| 270528-01 |  | SUBM - Cable Trays | 60d | 2020-07-01 A | 2021-07-01 | PM1050 |  | 84d |
| 270528-02 |  | GOV APPR - Cable Trays | 30d | 2021-07-02 | 2021-07-31 | 270528-01 |  | 121d |
| 270528-12 |  | PROC - Cable Trays | 30d | 2021-08-02 | 2021-09-13 | 270528-02 |  | 82d |
|  | 1000 | **27 10 00 Building Telecommunications Cabling System** |  | 2020-07-01 | 2021-10-24 |  |  |  |
| 271000-01 |  | SUBM - Bldg Telecom Cabling | 60d | 2020-07-01 A | 2021-09-24 | PM1050 |  | 42d |
| 271000-02 |  | GOV APPR - Bldg Telecom Cable | 30d | 2021-09-25 | 2021-10-24 | 271000-01 |  | 64d |
|  | 1323 | **27 13 23 Communications Optical Backbone Cabling** |  | 2020-07-01 | 2021-10-24 |  |  |  |
| 271323-01 |  | SUBM - Comm Opt Backbone Cable | 60d | 2020-07-01 A | 2021-09-24 | PM1050 |  | 42d |
| 271323-02 |  | GOV APPR - Comm Opt Backbone | 30d | 2021-09-25 | 2021-10-24 | 271323-01 |  | 64d |
|  | 2100 | **27 21 00 Intercommunication System (FIO)** |  |  |  |  |  |  |
|  | 2110 | **27 21 10 Fiber Optic Data Transmission System** |  | 2020-07-01 | 2021-10-24 |  |  |  |
| 272100-01 |  | SUBM - FO Data Transmission | 60d | 2020-07-01 A | 2021-09-24 | PM1050 |  | 65d |
| 272100-02 |  | GOV APPR -FO Data Transmission | 30d | 2021-09-25 | 2021-10-24 | 272100-01 |  | 99d |
|  | 5400 | **27 54 00 Community Antenna Television CATV Systems** |  | 2020-07-01 | 2021-10-24 |  |  |  |
| 275400-01 |  | SUBM - Community Antenna CATV | 60d | 2020-07-01 A | 2021-09-24 | PM1050 |  | 65d |
| 275400-02 |  | GOV APPR - Community Ant CATV | 30d | 2021-09-25 | 2021-10-24 | 275400-01 |  | 99d |
|  | 28 | **Division 28 - Electronic Safety and Security** |  | 2020-07-01 | 2021-12-22 |  |  |  |
|  | 0526 | **28 05 26 Grounding and Bonding for Electronic Safety and Security** |  | 2020-07-01 | 2021-08-05 |  |  |  |
| 280526-01 |  | SUBM - Grounding & Bonding ESS | 60d | 2020-07-01 A | 2021-07-06 | PM1050 |  | 119d |
| 280526-02 |  | GOV APPR - Ground & Bond ESS | 30d | 2021-07-07 | 2021-08-05 | 280526-01 |  | 174d |
|  | 0810 | **28 08 10 Electronic Security System Acceptance Testing** |  | 2021-07-01 | 2021-10-24 |  |  |  |
| 280810-01 |  | SUBM - ESS Test Plan | 60d | 2021-07-01 | 2021-09-24 | PM1050 |  | 144d |
| 280810-02 |  | GOV APPR - ESS Test Plan | 30d | 2021-09-25 | 2021-10-24 | 280810-01 |  | 210d |
|  | 1005 | **28 10 05 Electronic Security System (ESS)** |  | 2020-07-01 | 2021-12-22 |  |  |  |
| 281005-01 |  | SUBM - ESS | 120d | 2020-07-01 A | 2021-08-26 | PM1050 |  | 35d |
| 281005-02 |  | GOV APPR - ESS | 30d | 2021-08-27 | 2021-09-25 | 281005-01 |  | 52d |
| 281005-12 |  | PROC - ESS | 60d | 2021-09-27 | 2021-12-22 | 281005-02 |  | 36d |
|  | 3164 | **28 31 64 Fire Detection and Alarm System, Addressable** |  | 2020-07-01 | 2021-10-11 |  |  |  |
| 283164-01 |  | SUBM - FA Sys | 120d | 2020-07-01 A | 2021-07-15 | PM1050 |  | 120d |
| 283164-02 |  | GOV APPR - FA Sys | 30d | 2020-10-05 A | 2021-08-14 | 283164-01 |  | 176d |
| 283164-12 |  | PROC - FA Sys | 40d | 2021-08-16 | 2021-10-11 | 283164-02 |  | 133d |
|  | 31 | **Division 31 - Earthwork** |  |  |  |  |  |  |
|  | 32 | **Division 32 - Exterior Improvements** |  | 2021-04-01 | 2021-10-08 |  |  |  |
|  | 0119 | **32 01 19 Field Molded Sealants for Sealing Joints in Rigid Pavements** |  |  |  |  |  |  |
|  | 1123 | **32 11 23 Aggregate Base Courses** |  | 2021-07-01 | 2021-10-02 |  |  |  |
| 321123-01 |  | SUBM - Aggregate Base Courses | 45d | 2021-07-01 | 2021-09-02 | PM1050 |  | 92d |
| 321123-02 |  | GOV APPR - Agg Base Courses | 30d | 2021-09-03 | 2021-10-02 | 321123-01 |  | 138d |
|  | 1216 | **32 12 16 Hot-Mix Asphalt (HMA) For Roads** |  | 2021-07-01 | 2021-10-02 |  |  |  |
| 321216-01 |  | SUBM - HMA for Roads | 45d | 2021-07-01 | 2021-09-02 | PM1050 |  | 131d |
| 321216-02 |  | GOV APPR - HMA for Roads | 30d | 2021-09-03 | 2021-10-02 | 321216-01 |  | 194d |
|  | 1313 | **32 13 13 Portland Cement Concrete Pavement for Roads and Site Facilities** |  | 2021-07-01 | 2021-10-02 |  |  |  |
| 321313-01 |  | SUBM - Concrete Pavement | 45d | 2021-07-01 | 2021-09-02 | PM1050 |  | 105d |
| 321313-02 |  | GOV APPR - Concrete Pavement | 30d | 2021-09-03 | 2021-10-02 | 321313-01 |  | 156d |
|  | 1500 | **32 15 00 Aggregate Surfacing** |  | 2021-07-01 | 2021-10-02 |  |  |  |
| 321500-01 |  | SUBM - Aggregate Surfacing | 45d | 2021-07-01 | 2021-09-02 | PM1050 |  | 169d |
| 321500-02 |  | GOV APPR - Aggregate Surfacing | 30d | 2021-09-03 | 2021-10-02 | 321500-01 |  | 246d |
|  | 1613 | **32 16 13 Concrete Sidewalks and Curbs and Gutters (FIO)** |  |  |  |  |  |  |
|  | 1723 | **32 17 23 Pavement Markings** |  | 2021-07-01 | 2021-10-02 |  |  |  |
| 321613-01 |  | SUBM - Pavement Markings | 45d | 2021-07-01 | 2021-09-02 | PM1050 |  | 174d |

| ID | WBS | Task | Duration | Start | Finish | Predecessors | Complete | Total float |
| --- | --- | --- | --- | --- | --- | --- | --- | --- |
| 321613-02 |  | GOV APPR - Pavement Markings | 30d | 2021-09-03 | 2021-10-02 | 321613-01 |  | 253d |
|  | 3113 | **32 31 13 Chain Link Fences and Gates** |  | 2021-04-01 | 2021-10-08 |  |  |  |
| 323113-01 |  | SUBM - Chain Link Fences/Gates | 40d | 2021-04-01 A | 2021-07-13 | PM1050 |  | 104d |
| 323113-02 |  | GOV APPR - Chain Link Fence/Gt | 30d | 2021-04-27 A | 2021-08-12 | 323113-01 |  | 152d |
| 323113-12 |  | PROC - Chain Link Fences/Gates | 20d | 2021-08-13 | 2021-09-10 | 323113-02 |  | 122d |
| 323113-22 |  | PROC - Gate Oper/Pivot Gates | 40d | 2021-08-13 | 2021-10-08 | 323113-02 |  | 102d |
|  | 33 | **Division 33 - Utilities** |  | 2020-09-01 | 2021-12-22 |  |  |  |
|  | 1100 | **33 11 00 Water Utility Distribution Piping (FIO)** |  |  |  |  |  |  |
|  | 1113 | **33 11 13 Potable Water Supply Wells (FIO)** |  |  |  |  |  |  |
|  | 1615 | **33 16 15 Water Storage Steel Tanks** |  | 2021-02-01 | 2021-11-08 |  |  |  |
| 331615-01 |  | SUBM - Water Storage Tanks | 60d | 2021-02-01 A | 2021-07-15 | PM1050 |  | 40d |
| 331615-02 |  | GOV APPR - Water Storage Tanks | 30d | 2021-02-17 A | 2021-08-14 | 331615-01 |  | 59d |
| 331615-12 |  | PROC - Water Storage Tanks | 60d | 2021-08-16 | 2021-11-08 | 331615-02 |  | 41d |
|  | 3000 | **33 30 00 Sanitary Sewerage (FIO)** |  | 2020-09-29 | 2021-08-12 |  |  |  |
| 333000-01 |  | SUBM - Sanitary Sewerage | 30d | 2020-09-29 A | 2021-07-15 | PM1050 | 45% | 24d |
| 333000-02 |  | QC APPR - Sanitary Sewerage | 5d | 2020-09-29 A | 2021-07-22 | 333000-01 |  | 24d |
| 333000-03 |  | GOV FIO - Sanitary Sewerage | 7d | 2020-09-29 A | 2021-07-29 | 333000-02 |  | 34d |
| 333000-12 |  | PROC - Sanitary Sewerage | 10d | 2021-07-30 | 2021-08-12 | 333000-02, 333000-03 |  | 24d |
|  | 3213 | **33 32 13 Packaged Sewage Lift Stations, Wet Well Type (FIO)** |  | 2021-02-01 | 2021-08-24 |  |  |  |
| 333213-01 |  | SUBM - Sewer Lift Station | 30d | 2021-02-01 A | 2021-07-13 | PM1050 |  | 90d |
| 333213-02 |  | QC APPR - Sewer Lift Station | 5d | 2021-07-14 | 2021-07-20 | 333213-01 |  | 90d |
| 333213-03 |  | GOV FIO - Sewer Lift Station | 7d | 2021-07-21 | 2021-07-27 | 333213-02 |  | 132d |
| 333213-12 |  | PROC - Sewer Lift Station | 20d | 2021-07-28 | 2021-08-24 | 333213-02, 333213-03 |  | 90d |
|  | 4000 | **33 40 00 Storm Drainage Utilities (FIO)** |  | 2020-09-30 | 2021-07-08 |  |  |  |
| 334000-01 |  | SUBM - Storm Drainage Utility | 30d | 2020-09-30 A | 2020-12-03 A | PM1050 | 100% |  |
| 334000-02 |  | QC APPR - Storm Drainage Util | 5d | 2020-10-02 A | 2020-11-18 A | 334000-01 | 100% |  |
| 334000-03 |  | GOV FIO - Storm Drainage Util | 7d | 2020-10-08 A | 2020-11-18 A | 334000-02 | 100% |  |
| 334000-12 |  | PROC - RCP Storm Drain & MHs | 10d | 2020-10-27 A | 2021-07-08 | 334000-02, 334000-03 | 50% | 37d |
|  | 5210 | **33 52 10 Service Piping, Fuel Systems** |  | 2020-10-01 | 2021-11-08 |  |  |  |
| 335210-01 |  | SUBM - Service Pipe, Fuel Sys | 60d | 2020-10-01 A | 2021-07-15 | PM1130 |  | 55d |
| 335210-02 |  | GOV APPR - Serv Pipe, Fuel Sys | 30d | 2020-11-11 A | 2021-08-14 | 335210-01 |  | 80d |
| 335210-12 |  | PROC - Service Pipe, Fuel Sys | 60d | 2020-11-11 A | 2021-11-08 | 335210-02 |  | 56d |
|  | 5610 | **33 56 10 Factory-Fabricated Fuel Storage Tanks** |  | 2020-10-01 | 2021-12-22 |  |  |  |
| 335610-01 |  | SUBM - Fuel Storage Tanks | 60d | 2020-10-01 A | 2020-10-29 A | PM1130 | 100% |  |
| 335610-02 |  | GOV APPR - Fuel Storage Tanks | 30d | 2020-10-29 A | 2020-11-05 A | 335610-01 | 100% |  |
| 335610-12 |  | PROC - Fuel Storage Tanks | 120d | 2020-11-05 A | 2021-12-22 | 335610-02 |  | 78d |
|  | 5800 | **33 58 00 Leak Detection for Fueling Systems** |  | 2021-07-01 | 2021-10-24 |  |  |  |
| 335800-01 |  | SUBM - Leak Detect Fueling Sys | 60d | 2021-07-01 | 2021-09-24 | PM1130 |  | 65d |
| 335800-02 |  | GOV APPR -Leak Detect Fuel Sys | 30d | 2021-09-25 | 2021-10-24 | 335800-01 |  | 100d |
|  | 7102 | **33 71 02 Underground Electrical Distribution** |  | 2020-09-01 | 2021-07-02 |  |  |  |
| 337102-01 |  | SUBM - UG Elec Dist | 45d | 2020-09-01 A | 2021-07-01 | PM1050 |  | 66d |
| 337102-02 |  | GOV APPR - UG Elec Dist | 30d | 2020-09-22 A | 2021-07-02 | 337102-01 |  | 96d |
| 337102-12 |  | PROC - UG Elec Dist | 20d | 2020-10-26 A | 2021-01-04 A | 337102-02 | 100% |  |
|  | 43 | **Division 43 - Process Gas and Liquid Handling, Purification, and Storage Equipment** |  | 2021-07-01 | 2021-09-24 |  |  |  |
|  | 2120 | **43 21 20 - Potable Water Treatment Equipment (FIO)** |  | 2021-07-01 | 2021-09-24 |  |  |  |
| 432120-01 |  | SUBM -Pot Water Treatment Eqp | 30d | 2021-07-01 | 2021-08-12 | PM1050 |  | 67d |
| 432120-02 |  | QC APPR - Pot Water Treatment | 5d | 2021-08-13 | 2021-08-19 | 432120-01 |  | 67d |
| 432120-03 |  | GOV FIO - Pot Water Treatment | 7d | 2021-08-20 | 2021-08-26 | 432120-02 |  | 98d |
| 432120-12 |  | PROC - Pot Water Treatment Eqp | 20d | 2021-08-27 | 2021-09-24 | 432120-02, 432120-03 |  | 66d |
|  | 99 | **Material Deliveries / FOB Materials** |  | 2021-02-05 | 2022-01-18 |  |  |  |
| 133419-90 |  | DELV Metal Bldg Anchor Bolts | 2d | 2021-02-05 A | 2021-02-05 A | 133419-29 | 100% |  |
| 083463-90 |  | DELV Detention HM Frames | 2d | 2021-07-29 | 2021-07-30 | 083463-21, 1SGE150 |  | 1d |
| 081113-90 |  | DELV HM Frames - Area E CMU | 2d | 2021-07-30 | 2021-08-02 | 1SGE150, 081113-21 |  | 47d |
| 081113-91 |  | DELV HM Frames - Areas A - D | 2d | 2021-08-03 | 2021-08-04 | 081113-90 |  | 47d |
| 265300-90 |  | DELV Exit Signs | 3d | 2021-08-13 | 2021-08-17 | 265300-12 |  | 128d |
| 262416-90 |  | DELV Panelboards | 5d | 2021-08-27 | 2021-09-02 | 262416-12 |  | 53d |
| 270528-90 |  | DELV Cable Trays | 5d | 2021-09-14 | 2021-09-20 | 270528-12 |  | 82d |
| 263353-90 |  | DELV UPS | 5d | 2021-09-27 | 2021-10-01 | 263353-02, 263353-12 |  | 78d |
| 265200-90 |  | DELV Emergency Lighting | 5d | 2021-09-27 | 2021-10-01 | 265200-12 |  | 96d |
| 283164-90 |  | DELV FA Sys | 3d | 2021-10-12 | 2021-10-14 | 283164-12 |  | 133d |
| 087100-90 |  | DELV Storefront Hardware | 1d | 2021-11-17 | 2021-11-17 | 087100-21, 1EX140 SS |  | 56d |
| 103500-90 |  | DELV Sleeve for Flagpole Ftg | 2d | 2021-11-18 | 2021-11-19 | 103500-09, 1ENT200 SS |  | 45d |
| 265100-90 |  | DELV Interior Lighting | 5d | 2021-11-24 | 2021-12-02 | 265400-02, 265400-12 |  | 55d |
| 265553-90 |  | DELV Security Lighting | 5d | 2021-12-09 | 2021-12-15 | 265553-12 |  | 46d |
| 281005-90 |  | DELV ESS | 5d | 2021-12-23 | 2021-12-30 | 281005-12 |  | 74d |
| 062000-90 |  | DELV Finish Carpentry | 5d | 2022-01-12 | 2022-01-18 | 062000-32, 1FIC180, 1FIA190 |  | 29d |
| 064116-90 |  | DELV P-Lam Cabinets | 5d | 2022-01-12 | 2022-01-18 | 064116-32, 1FIC180, 1FIA190 |  | 29d |
| 066116-90 |  | DELV Solid Surfacing Fabs | 5d | 2022-01-12 | 2022-01-18 | 066116-32, 1FIC180, 1FIA190 |  | 29d |
|  | 2 | **QC Preparatory Meetings** |  | 2020-07-28 | 2022-04-26 |  |  |  |
| PREP1020 |  | Prep Mtg - Clear/Grub/Grading | 1d | 2020-07-28 A | 2020-07-28 A | GRD1000 SS | 100% |  |

| ID | Task | Duration | Start | Finish | Predecessors | Complete | Total float |
| --- | --- | --- | --- | --- | --- | --- | --- |
| PREP1120 | Prep Mtg - Electrical | 1d | 2020-10-20 A | 2020-10-20 A | PREP1100 | 100% |  |
| PREP1180 | Prep Mtg - UG Elec Distr | 1d | 2020-10-20 A | 2020-10-20 A | GRD1140 | 100% |  |
| PREP1100 | Prep Mtg - Plumbing | 1d | 2020-10-27 A | 2020-10-27 A | GRD1140 SS | 100% |  |
| PREP1000 | Prep Mtg - SWPPP | 1d | 2020-11-04 A | 2020-11-04 A | MOB1000 | 100% |  |
| PREP1040 | Prep Mtg - Storm Drainage | 1d | 2020-11-09 A | 2020-11-09 A | GRD1040 FF, 334000-03 | 100% |  |
| PREP1060 | Prep Mtg - CIP Concrete | 1d | 2021-01-04 A | 2021-01-04 A | 031113-02, 033000-02, GRD1040 FF | 100% |  |
| PREP1080 | Prep Mtg - Rebar | 1d | 2021-01-14 A | 2021-01-14 A | PREP1060, 032000-22 | 100% |  |
| PREP1220 | Prep Mtg - Waterproofing | 1d | 2021-04-05 A | 2021-04-05 A | RW1130 SS | 100% |  |
| PREP1260 | Prep Mtg - Metal Bldg System | 1d | 2021-04-28 A | 2021-04-28 A | 133419-22, 133419-12 | 100% |  |
| PREP1240 | Prep Mtg - Concrete Piers | 1d | 2021-05-10 A | 2021-05-10 A | 1SGA150 | 100% |  |
| PREP1500 | Prep Mtg - Wet Pipe Sprinkler | 1d | 2021-06-23 A | 2021-06-23 A | 211313-06, 1STC140 FF | 100% |  |
| PREP1580 | Prep Mtg - Dry Pipe Fire Sprnk | 1d | 2021-06-23 A | 2021-06-23 A | 211317-06, 1RIE140 SS | 100% |  |
| PREP1480 | Prep Mtg - Metal Stud Framing | 1d | 2021-06-28 A | 2021-06-28 A | 092200-02, 054000-02, 1STC140 FF | 100% |  |
| PREP1340 | Prep Mtg - Masonry | 1d | 2021-07-02 | 2021-07-02 | 042000-22, 1STE110 SS |  | 20d |
| PREP1420 | Prep Mtg - Tube Daylight Dev | 1d | 2021-07-02 | 2021-07-02 | 086200-02, 1STC140 SS |  | 69d |
| PREP1140 | Prep Mtg - Site Sewer | 1d | 2021-07-30 | 2021-07-30 | SD1160 SS, 333000-03 |  | 35d |
| PREP1540 | Prep Mtg - Gypsum Board | 1d | 2021-08-04 | 2021-08-04 | 092900-02, 1RIC140 FF |  | 59d |
| PREP1360 | Prep Mtg - Water Storage Tanks | 1d | 2021-08-16 | 2021-08-16 | 331615-02, 3FN160 SS |  | 100d |
| PREP1560 | Prep Mtg - Fire Alarm System | 1d | 2021-08-16 | 2021-08-16 | 283164-02, 1STC140 SS |  | 119d |
| PREP1620 | Prep Mtg - Folding Panel Part | 1d | 2021-08-19 | 2021-08-19 | 102239-12, 1RIA140 FF |  | 132d |
| PREP1520 | Prep Mtg - HVAC | 1d | 2021-08-30 | 2021-08-30 | PREP1480, 230000-02, 230515-02, 230548-02 |  | 42d |
| PREP1640 | Prep Mtg - Bullet Resist Panel | 1d | 2021-08-30 | 2021-08-30 | 102641-02, 1RIA180 SS+5d |  | 44d |
| PREP1160 | Prep Mtg - Site Telecom | 1d | 2021-08-31 | 2021-08-31 | 337102-02, SS1060 FF |  | 28d |
| PREP1440 | Prep Mtg - Wall Insulation | 1d | 2021-08-31 | 2021-08-31 | 1STE120 SS+20d |  | 17d |
| PREP1200 | Prep Mtg - Site Water | 1d | 2021-09-13 | 2021-09-13 | EL1320 SS, EL1340 SS |  | 34d |
| PREP1320 | Prep Mtg - Slope Protection | 1d | 2021-09-13 | 2021-09-13 | SLP1000 |  | 58d |
| PREP1380 | Prep Mtg - Air Barrier | 1d | 2021-09-23 | 2021-09-23 | 072710-13, 072719-02, 1STC100 FF |  | 5d |
| PREP1400 | Prep Mtg - Storefront/Glazing | 1d | 2021-09-24 | 2021-09-24 | 084113-03, 088100-03, PREP1380 |  | 10d |
| PREP1600 | Prep Mtg - Set Elec Equip | 1d | 2021-10-11 | 2021-10-11 | 1AST130, 3ST120, 1STE180, 260571-02, 262300-02, 262413-02, 262416-02 |  | 27d |
| PREP1660 | Prep Mtg - Doors & Frames | 1d | 2021-10-11 | 2021-10-11 | 1EX120 SS, 081113-02, 081400-02, 082200-02, 087100-02 |  | 91d |
| PREP1680 | Prep Mtg - Finish Electrical | 1d | 2021-10-18 | 2021-10-18 | 1FIC110 SS, 265400-02, 265200-02, 265300-02, 265553-02, 265600-02 |  | 110d |
| PREP1280 | Prep Mtg - Facility Gas Piping | 1d | 2021-10-25 | 2021-10-25 | WA1040 SS |  | 56d |
| PREP1700 | Prep Mtg - Painting | 1d | 2021-11-01 | 2021-11-01 | 099000-03, 1FIC120 SS |  | 15d |
| PREP1720 | Prep Mtg - Mech Sys Insulation | 1d | 2021-11-01 | 2021-11-01 | 230700-02, 1RIC250 FF |  | 62d |
| PREP1740 | Prep Mtg - Fire Pumps | 1d | 2021-11-23 | 2021-11-23 | 213000-06, 3FI190 SS |  | 10d |
| PREP1820 | Prep Mtg - HVAC Controls | 1d | 2021-11-23 | 2021-11-23 | 230900-02, 1FIC130 SS |  | 45d |
| PREP1840 | Prep Mtg - Acoustical Ceilings | 1d | 2021-11-23 | 2021-11-23 | 095100-03, 1FIC130 SS |  | 46d |
| PREP1860 | Prep Mtg - Coiling Counter Drs | 1d | 2021-11-23 | 2021-11-23 | 083313-13, 1FIC130 SS |  | 129d |
| PREP1760 | Prep Mtg - Water Treat Equip | 1d | 2021-11-24 | 2021-11-24 | 3FI220 SS, 432120-03 |  | 24d |
| PREP1300 | Prep Mtg - Diesel Generator | 1d | 2021-11-29 | 2021-11-29 | 263215-02, PRE-1200, SFND1140 |  | 20d |
| PREP1880 | Prep Mtg - Static Ctrl Floor | 1d | 2021-11-30 | 2021-11-30 | 096238-02, 1LVD110 SS |  | 24d |
| PREP1460 | Prep Mtg - Hot Mix Asphalt | 1d | 2021-12-02 | 2021-12-02 | 321216-02, SIT1100 SS |  | 128d |
| PREP1780 | Prep Mtg - Water Supply Wells | 1d | 2021-12-03 | 2021-12-03 | 3FI250 SS |  | 32d |
| PREP1900 | Prep Mtg - Communications Bldg | 1d | 2021-12-08 | 2021-12-08 | 270528-02, 271000-02, 271323-02, 1FIC130 FF |  | 13d |
| PREP1920 | Prep Mtg - Quartz Flooring | 1d | 2021-12-09 | 2021-12-09 | 096726-03, 1FIC180 SS |  | 55d |
| PREP1940 | Prep Mtg - Ceramic Tiling | 1d | 2021-12-15 | 2021-12-15 | 093010-03, 1FIC200 SS |  | 71d |
| PREP1960 | Prep Mtg - ESS | 1d | 2021-12-20 | 2021-12-20 | 281005-02, 1RIC350 FF |  | 81d |
| PREP1980 | Prep Mtg - Metal Lockers | 1d | 2021-12-20 | 2021-12-20 | 105113-02, 1FIC700 SS |  | 90d |
| PREP2000 | Prep Mtg - UPS | 1d | 2021-12-23 | 2021-12-23 | 263353-02, 1LVD160 SS |  | 22d |
| PREP2040 | Prep Mtg - Cement Stucco | 1d | 2021-12-23 | 2021-12-23 | 092423-13, 1FIE730 SS |  | 14d |
| PREP1800 | Prep Mtg - Chain Link Fencing | 1d | 2022-01-10 | 2022-01-10 | 323113-02, SIT2200 SS+10d |  | 41d |
| PREP2140 | Prep Mtg - Casework | 1d | 2022-01-12 | 2022-01-12 | 062000-22, 064116-22, 066116-22, 123600-02, 1FIA190 |  | 33d |
| PREP2060 | Prep Mtg - Carpeting | 1d | 2022-01-13 | 2022-01-13 | 096800-03, 1FIC230 SS |  | 37d |
| PREP2100 | Prep Mtg - Resilient Flooring | 1d | 2022-01-14 | 2022-01-14 | 096500-03, 096566-03, PREP2060 |  | 83d |
| PREP2180 | Prep Mtg - Wall & Door Protect | 1d | 2022-01-26 | 2022-01-26 | 102600-02, 1FIC290 SS |  | 60d |
| PREP2200 | Prep Mtg - Finish Plumbing | 1d | 2022-01-26 | 2022-01-26 | 1FIA710 SS, 220000-02 |  | 69d |
| PREP2220 | Prep Mtg - Access Flooring | 1d | 2022-01-27 | 2022-01-27 | 096919-13, 1FIA220 SS |  | 62d |
| PREP2120 | Prep Mtg - Ext Sun Ctrl Device | 1d | 2022-02-01 | 2022-02-01 | 107000-02, 1EX180 SS+10d |  | 94d |
| PREP2240 | Prep Mtg - Toilet Accessories | 1d | 2022-02-10 | 2022-02-10 | 101453-02, 102813-02, 1FIC770 SS |  | 66d |
| PREP2260 | Prep Mtg - OH Coiling Doors | 1d | 2022-02-22 | 2022-02-22 | 083313-03, 083323-02, 1FIE820 SS+10d |  | 84d |
| PREP2280 | Prep Mtg - Wire Mesh Partition | 1d | 2022-02-22 | 2022-02-22 | 1FIE820 SS+10d, 102213-03 |  | 84d |
| PREP2300 | Prep Mtg - Exercise Equipment | 1d | 2022-02-24 | 2022-02-24 | 1FIC400 SS |  | 60d |
| PREP2020 | Prep Mtg - Riprap | 1d | 2022-02-25 | 2022-02-25 | SIT1120 SS, SIT1110 SS |  | 75d |
| PREP2320 | Prep Mtg - Roller Window Shade | 1d | 2022-03-03 | 2022-03-03 | 122413-02, 1FIA410 SS |  | 57d |
| PREP2080 | Prep Mtg - Aggregate Surfacing | 1d | 2022-03-04 | 2022-03-04 | 321500-02, CRR1000 SS |  | 65d |
| PREP2340 | Prep Mtg - Detention Doors/Frm | 1d | 2022-03-09 | 2022-03-09 | 083463-02, 1FIE930 SS |  | 22d |
| PREP2360 | Prep Mtg - Vault Door/Day Gate | 1d | 2022-03-09 | 2022-03-09 | 083459-02, 1FIE930 SS |  | 22d |
| PREP2160 | Prep Mtg - Flagpoles | 1d | 2022-03-11 | 2022-03-11 | 103500-12, SIT2480, SIT2580 SS |  | 71d |
| PREP2400 | Prep Mtg - Shelving | 1d | 2022-03-16 | 2022-03-16 | 105613-02, 1FIA420 FF |  | 41d |
| PREP2420 | Prep Mtg - Detention Padding | 1d | 2022-03-25 | 2022-03-25 | 119819-03, 1FIE930 FF |  | 44d |

| ID | WBS | Task | Duration | Start | Finish | Predecessors | Complete | Total float |
| --- | --- | --- | --- | --- | --- | --- | --- | --- |
| PREP2440 |  | Prep Mtg - Kitchen Equipment | 1d | 2022-04-11 | 2022-04-11 | 1FIE1050 SS |  | 33d |
| PREP2460 |  | Prep Mtg - Signage | 1d | 2022-04-11 | 2022-04-11 | 101400-03, 101400-21, 1FIE1050 SS |  | 28d |
| PREP2380 |  | Prep Mtg - Pavement Markings | 1d | 2022-04-26 | 2022-04-26 | 321613-02, SIT2640 SS |  | 33d |
|  | 5 | **Construction** |  | 2020-06-04 | 2022-06-23 |  |  |  |
|  | 1 | **Mobilization** |  | 2020-06-04 | 2021-01-12 |  |  |  |
| MOB1210 |  | Permit Consultant/Procurement | 5d | 2020-06-04 A | 2020-07-10 A | PM1050 | 100% |  |
| MOB1280 |  | Traffic Ctrl Plan for Entrance | 5d | 2020-06-22 A | 2020-08-11 A | PM1050 | 100% |  |
| MOB1250 |  | Temp Piping from 1st Pond | 5d | 2020-07-02 A | 2020-07-14 A | MOB1220 | 100% |  |
| MOB1000 |  | Survey Limits of Proj/Ctrls | 2d | 2020-07-07 A | 2020-07-28 A | 013526-02, 013526-12, 014504-11, PRE-1090, PRE-1100, PRE-1000, PRE-1070, PRE-1040, PRE-1010 | 100% |  |
| MOB1170 |  | Survey for Temp Fence | 2d | 2020-07-10 A | 2020-07-21 A | MOB1000 | 100% |  |
| MOB1190 |  | Temp Generator Prior to SDGE | 5d | 2020-07-13 A | 2021-01-11 A | PM1050 | 100% |  |
| MOB1200 |  | Temp Highway Signage | 5d | 2020-07-13 A | 2020-07-13 A | MOB1280 | 100% |  |
| MOB1020 |  | Scan for Existing Utilities | 10d | 2020-07-17 A | 2020-07-31 A | MOB1000 | 100% |  |
| MOB1080 |  | Notify Gov Prior to Excavation | 15d | 2020-07-17 A | 2020-07-17 A | MOB1100 FF, PRE-1070 | 100% |  |
| MOB1040 |  | Install Temp Fencing | 3d | 2020-07-21 A | 2020-07-29 A | MOB1000, MOB1170 | 100% |  |
| MOB1100 |  | Install Temp Water | 10d | 2020-07-21 A | 2020-07-29 A | MOB1060 FF, 015000-02 | 100% |  |
| MOB1180 |  | Grade & Prep for Job Trailer | 5d | 2020-07-21 A | 2020-07-21 A | MOB1000 | 100% |  |
| MOB1060 |  | Install BMPs | 5d | 2020-07-29 A | 2020-09-11 A | MOB1040, 015719-31 | 100% |  |
| MOB1220 |  | 1st Pond Development | 5d | 2020-08-03 A | 2020-08-21 A | MOB1000 | 100% |  |
| MOB1160 |  | Mark Out Access Roads | 3d | 2020-08-04 A | 2020-08-11 A | MOB1000, GRD1040 | 100% |  |
| MOB1260 |  | Construction Entrance | 2d | 2020-08-11 A | 2020-08-24 A | MOB1060 SS | 100% |  |
| MOB1270 |  | Setup Temp Trailer for QA | 5d | 2020-08-11 A | 2020-08-12 A | MOB1180, MOB1190 FF | 100% |  |
| MOB1140 |  | DELV & Setup Job Trailers | 15d | 2020-08-24 A | 2020-08-27 A | 015000-02, GRD1000, MOB1120 FF, MOB1180, MOB1190 FF, MOB1270 FF | 100% |  |
| MOB1120 |  | Install Temp Power Onsite | 20d | 2020-08-27 A | 2021-01-12 A | MOB1000, 015000-02 | 100% |  |
| MOB1230 |  | 2nd Pond Development | 5d | 2020-09-03 A | 2020-09-14 A | MOB1220 | 100% |  |
| MOB1240 |  | Truck in Water for Grading | 5d | 2020-09-14 A | 2021-01-06 A | MOB1230 | 100% |  |
|  | 2 | **Site Development** |  | 2020-08-10 | 2022-02-10 |  |  |  |
|  | 1 | **Earthwork** |  | 2020-08-10 | 2021-08-30 |  |  |  |
| GRD1000 |  | Mobilize Grading Equip | 3d | 2020-08-10 A | 2020-09-30 A | MOB1080, 013201-11, MOB1100, MOB1200 | 100% |  |
| GRD1040 |  | Clear & Grub / Rip Soil | 3d | 2020-08-10 A | 2020-08-21 A | GRD1000 SS+1d, 013526-32, MOB1020, GRD1020 SS+1d, PREP1020, MOB1260 | 100% |  |
| GRD1060 |  | Pre-Water Site | 10d | 2020-08-24 A | 2020-09-30 A | GRD1040, MOB1250 | 100% |  |
| GRD1020 |  | Survey Rough Grade | 2d | 2020-09-15 A | 2020-09-21 A | MOB1100, MOB1100 FF | 100% |  |
| GRD1080 |  | Overex & Bench at Fill Areas | 8d | 2020-09-24 A | 2020-12-22 A | GRD1060, MOB1240 | 100% |  |
| GRD1100 |  | Cut & Fill Site | 18d | 2020-09-28 A | 2021-01-15 A | GRD1080 FF, MOB1160, GRD1020 FF | 100% |  |
| GRD1140 |  | Fine Grade Bldg Pads | 3d | 2020-10-14 A | 2021-07-01 | GRD1100 SS | 95% | 2d |
| GRD1180 |  | Crush & Stockpile Onsite Mtrl | 10d | 2020-10-15 A | 2021-07-19 | GRD1160, GRD1120 | 5% | 85d |
| GRD1120 |  | Rock Excavation | 3d | 2020-10-28 A | 2020-10-30 A | GRD1100 FF, GRD1100 SS | 100% |  |
| GRD1200 |  | Install BMP's at Slopes | 5d | 2020-11-09 A | 2021-07-06 | GRD1140, PREP1000 | 90% | 75d |
| GRD1240 |  | Backfill Retaining Walls | 5d | 2021-04-19 A | 2021-08-30 | RW1150, RW4140, RW4150 | 60% | 60d |
| GRD1160 |  | Mobilize Crusher Operation | 2d | 2021-07-01 | 2021-07-02 | GRD1100 |  | 85d |
|  | 2 | **Site Utilities** |  | 2020-10-26 | 2022-02-10 |  |  |  |
|  | 1 | **Storm Drain** |  | 2020-11-09 | 2021-08-13 |  |  |  |
| SD1080 |  | RCP Storm Drain & MH - SD-D | 7d | 2020-11-09 A | 2021-07-15 | GRD1100 SS+3d, SD1060 | 95% | 35d |
| SD1020 |  | Receive/Unload RCP & Manholes | 5d | 2020-11-10 A | 2021-07-12 | 334000-02, 334000-03, 334000-12 | 90% | 35d |
| SD1060 |  | RCP Storm Drain & MH - SD-F | 10d | 2020-11-16 A | 2021-07-12 | GRD1080 SS+5d, 334000-12, SD1020 SS | 90% | 35d |
| SD1100 |  | RCP Storm Drain & MH -SD-B Lwr | 6d | 2021-04-14 A | 2021-07-19 | SD1080 | 95% | 35d |
| SD1200 |  | RCP Storm Drain - SD-B Upper | 4d | 2021-05-03 A | 2021-05-14 A | SD1100, SD1160 | 100% |  |
| SD1140 |  | RCP Storm Drain & MH - SD-A | 8d | 2021-05-10 A | 2021-07-21 | SD1100 | 95% | 35d |
| SD1160 |  | RCP Storm Drain & MH - SD-C | 10d | 2021-05-17 A | 2021-07-28 | SD1140 | 50% | 35d |
| SD1120 |  | Set Box Culvert - SD-H | 5d | 2021-05-26 A | 2021-07-08 | GRD1100 SS+10d | 50% | 29d |
| SD1220 |  | RCP Storm Drain & MH - SD-G | 5d | 2021-06-17 A | 2021-07-30 | SD1200 | 90% | 176d |
| SD1000 |  | Set Box Culvert to Stock Pile | 5d | 2021-07-09 | 2021-07-16 | GRD1040, 334000-12, PREP1040, SD1020 SS |  | 85d |
| SD1040 |  | Backfill Stock Pile Culvert | 2d | 2021-07-19 | 2021-07-20 | SD1000 |  | 85d |
| SD1180 |  | PVC Storm Drain to Bldgs | 5d | 2021-07-29 | 2021-08-04 | SD1160 |  | 75d |
| SD1240 |  | PVC Backdrain - BD-L | 5d | 2021-08-02 | 2021-08-06 | SD1220 |  | 191d |
| SD1260 |  | RCP Storm Drain & MH - SD-I | 5d | 2021-08-02 | 2021-08-06 | SD1220, SD1020 |  | 176d |
| SD1280 |  | Replace Drain Pipe -Campbell R | 5d | 2021-08-09 | 2021-08-13 | SD1260 |  | 176d |
|  | 2 | **Sanitary Sewer** |  | 2020-11-06 | 2022-02-10 |  |  |  |
| SS1000 |  | Receive/Unload Sanitary Sewer | 3d | 2020-11-06 A | 2021-08-16 | 333000-12, SD1160 SS | 30% | 22d |
| SS1040 |  | Sewer Main/MH -CO-29 to Septic | 5d | 2021-08-17 | 2021-08-24 | SD1160, 333000-12, PREP1140, SS1000 |  | 22d |
| SS1060 |  | Sewer & MH - Bldg 4 to MH-02 | 5d | 2021-08-25 | 2021-08-31 | SS1040 |  | 22d |
| SS1080 |  | Sewer Force Main - Sec 50 & 51 | 5d | 2021-09-01 | 2021-09-09 | SS1060 |  | 32d |
| SS1100 |  | Sewer Laterals to Bldgs | 5d | 2021-10-20 | 2021-10-26 | SS1060, EL1400 |  | 23d |
| SS1110 |  | Receive/Unload Sewer Lift Stn | 2d | 2021-12-08 | 2021-12-09 | 333213-12, SS1000, PRE-1060 |  | 14d |
| SS1120 |  | Septic & Sewer Lift Station | 5d | 2021-12-10 | 2021-12-17 | SS1080, 333213-12, PRE-1060, SS1110 |  | 14d |
| SS1140 |  | Sewer Force Main -To Leach Fld | 8d | 2021-12-20 | 2022-01-06 | SS1120, GRD1240 |  | 15d |
| SS1160 |  | Leach Field (CU-301) | 20d | 2022-01-07 | 2022-02-10 | SS1120, SS1140 |  | 15d |
|  | 4 | **Electrical** |  | 2020-10-26 | 2022-01-10 |  |  |  |
| EL1000 |  | Receive UG Elec Material | 5d | 2020-10-26 A | 2021-03-19 A | 337102-12, SS1060 SS | 100% |  |
| EL1020 |  | UG Teleco Conduit to Bldg 1,1A | 15d | 2020-12-08 A | 2021-03-19 A | SS1060, PREP1160, 337102-12 | 100% |  |

| ID | WBS | Task | Duration | Start | Finish | Predecessors | Complete | Total float |
| --- | --- | --- | --- | --- | --- | --- | --- | --- |
| EL1040 |  | UG Elec Conduit to Bldg 1,1A | 15d | 2020-12-08 A | 2021-03-09 A | SS1060, PREP1180, 337102-12 | 100% |  |
| EL1080 |  | UG ESS Conduits to Bldg 1,1A | 15d | 2021-01-11 A | 2021-04-16 A | SS1060, PREP1160, 337102-12 | 100% |  |
| EL1180 |  | UG Conduits to Generator | 15d | 2021-01-11 A | 2021-09-14 | SS1060, PREP1180, 337102-12 | 50% | 26d |
| EL1240 |  | UG Teleco Conduit to Bldg 2 | 15d | 2021-01-11 A | 2021-09-10 | PREP1160, 337102-12, EL1020 | 60% | 31d |
| EL1260 |  | UG ESS Conduits to Bldg 2 | 15d | 2021-01-11 A | 2021-09-10 | PREP1160, 337102-12, EL1080 | 60% | 31d |
| EL1280 |  | UG ESS Conduits to Bldg 4 | 15d | 2021-01-11 A | 2021-09-20 | PREP1160, 337102-12, EL1260 SS, EL1120 | 60% | 25d |
| EL1300 |  | UG ESS Conduits to Bldg 4A | 15d | 2021-01-11 A | 2021-09-20 | PREP1160, 337102-12, EL1280 SS | 60% | 25d |
| EL1320 |  | UG Elec Conduits to Bldg 2 | 15d | 2021-01-11 A | 2021-09-10 | PREP1180, 337102-12, EL1040 | 60% | 28d |
| EL1340 |  | UG Elec Conduits to Bldg 4 | 15d | 2021-01-11 A | 2021-09-20 | PREP1180, 337102-12, EL1320 SS, EL1160 | 60% | 22d |
| EL1100 |  | UG ESS Conduits to Bldg 3 | 15d | 2021-01-18 A | 2021-09-20 | SS1060, PREP1160, 337102-12 | 20% | 47d |
| EL1120 |  | UG ESS Conduits to Bldg 5 | 15d | 2021-01-18 A | 2021-09-10 | SS1060, PREP1160, 337102-12 | 60% | 25d |
| EL1140 |  | UG Elec Conduits to Bldg 3 | 15d | 2021-01-18 A | 2021-09-20 | SS1060, PREP1180, 337102-12 | 20% | 22d |
| EL1160 |  | UG Elec Conduits to Bldg 5 | 15d | 2021-01-18 A | 2021-09-10 | SS1060, PREP1180, 337102-12 | 60% | 22d |
| EL1400 |  | SDG&E Primary Elec Duct Bank | 20d | 2021-01-20 A | 2021-10-18 | SDGE100, EL1320, EL1340, EL1160, EL1180, EL1000 FF, EL1140 | 15% | 22d |
| EL1200 |  | Ground - Lightning Protect -B3 | 10d | 2021-02-02 A | 2021-09-27 | EL1060 | 25% | 68d |
| EL1220 |  | Ground - Lightning Protect -B1 | 10d | 2021-02-02 A | 2021-09-15 | EL1060 | 90% | 74d |
| EL1060 |  | Ground - Lightning Prot - Site | 10d | 2021-02-08 A | 2021-09-14 | EL1020 SS | 25% | 68d |
| EL1360 |  | Ground - Lightning Prot - B1A | 5d | 2021-03-08 A | 2021-09-16 | EL1220 | 90% | 74d |
| EL1380 |  | Ground - Lightning Prot -B4,4A | 5d | 2021-09-17 | 2021-09-24 | EL1360 |  | 139d |
| EL1420 |  | Set Transformer Pad | 1d | 2021-10-20 | 2021-10-20 | EL1400 |  | 22d |
| EL1520 |  | Schedule Install - SDG&E XFMR | 20d | 2021-10-21 | 2021-11-18 | EL1420 |  | 25d |
| EL1440 |  | Receive/Unload Generator | 2d | 2021-10-25 | 2021-10-26 | 263215-12, SFND1140 SS |  | 41d |
| EL1540 |  | New Power Pole (By SDG&E) | 2d | 2021-11-19 | 2021-11-22 | SDGE100, EL1520 |  | 33d |
| EL1560 |  | Set Transformer (By SDG&E) | 1d | 2021-11-29 | 2021-11-29 | EL1420, SDGE200, EL1520 |  | 16d |
| EL1460 |  | Install Generators | 20d | 2021-11-30 | 2022-01-07 | SFND1140, 263215-12, PRE-1200, PREP1300, EL1440, 260548-02 |  | 15d |
| EL1580 |  | Primary Feeders (By SDG&E) | 2d | 2021-11-30 | 2021-12-02 | EL1560, EL1540 |  | 31d |
| EL1480 |  | Power Rack - Sewer Lift Stn | 5d | 2021-12-20 | 2021-12-29 | SS1120, EL1320, EL1340 |  | 14d |
| EL1500 |  | Pull Wire - Sewer Lift Station | 5d | 2022-01-04 | 2022-01-10 | EL1480 |  | 14d |
|  | 3 | **Water** |  | 2021-09-21 | 2021-10-29 |  |  |  |
| WA1000 |  | UG Fire Water - Site to Xing | 10d | 2021-09-21 | 2021-10-05 | SS1060, SS1080, PREP1200, EL1240, EL1260, EL1280, EL1300, EL1320, EL1340 |  | 25d |
| WA1020 |  | UG Dom Water - Site to Xing | 10d | 2021-10-07 | 2021-10-22 | WA1000 |  | 40d |
| WA1060 |  | UG Fire Water - to Bldg 3 | 5d | 2021-10-07 | 2021-10-13 | WA1000, CRS1120 |  | 25d |
| WA1100 |  | Fire Hydrants | 5d | 2021-10-15 | 2021-10-22 | WA1060 |  | 25d |
| WA1030 |  | Hydrostatic Test - UG DW | 2d | 2021-10-25 | 2021-10-26 | WA1100 |  | 152d |
| WA1040 |  | UG CW Lines - to Bldg 2 | 5d | 2021-10-25 | 2021-10-29 | WA1020 |  | 40d |
| WA1050 |  | Hydrostatic Test - UG FW | 2d | 2021-10-25 | 2021-10-26 | WA1100 |  | 152d |
| WA1080 |  | UG Domestic Water - to Bldg 3 | 5d | 2021-10-25 | 2021-10-29 | WA1020, CRS1120 |  | 128d |
|  | 5 | **Propane** |  | 2021-11-01 | 2021-12-09 |  |  |  |
| LP1140 |  | UG Propane Lines | 5d | 2021-11-01 | 2021-11-08 | WA1040, PREP1280 |  | 40d |
| LP1160 |  | Set Propane Tank By USACE Vend | 2d | 2021-11-29 | 2021-11-30 | SFND1200, LP1140, 1AFI180, 1RIA180, 1RIC180, 1RIE180 |  | 31d |
| LP1170 |  | Install Propane Regulator | 5d | 2021-12-02 | 2021-12-09 | LP1160 |  | 31d |
|  | 3 | **Retaining Walls & Site Structures** |  | 2021-01-04 | 2021-11-04 |  |  |  |
|  | 1 | **North - RW1 (SS101, CR-101)** |  | 2021-01-04 | 2021-04-22 |  |  |  |
| RW1000 |  | Dig & Form Ftg - RW1 | 9d | 2021-01-04 A | 2021-02-05 A | GRD1100, PREP1060 | 100% |  |
| RW1040 |  | Form Ret Wall - RW1 Pour 1 | 9d | 2021-01-04 A | 2021-02-26 A | RW1030 | 100% |  |
| RW1050 |  | Rebar Ret Wall - RW1 Pour 1 | 4d | 2021-01-04 A | 2021-02-25 A | RW1040 SS+2d | 100% |  |
| RW1080 |  | Form Ret Wall - RW1 Pour 2 | 9d | 2021-01-04 A | 2021-03-08 A | RW1070 | 100% |  |
| RW1020 |  | Ftg Rebar - RW1 | 5d | 2021-01-11 A | 2021-02-09 A | RW1000 SS+5d, RW1000 FF, PREP1080, 032000-29 | 100% |  |
| RW1030 |  | Place Ftg Concrete - RW1 | 2d | 2021-02-15 A | 2021-02-15 A | RW1020 | 100% |  |
| RW1090 |  | Rebar Ret Wall - RW1 Pour 2 | 4d | 2021-02-25 A | 2021-02-26 A | RW1080 SS+2d | 100% |  |
| RW1070 |  | Place Ret Wall - RW1 Pour 1 | 1d | 2021-03-08 A | 2021-03-08 A | RW1040, RW1050 | 100% |  |
| RW1110 |  | Place Ret Wall - RW1 Pour 2 | 1d | 2021-03-08 A | 2021-03-08 A | RW1080, RW1090 | 100% |  |
| RW1120 |  | Cure Retaining Wall - RW1 | 14d | 2021-03-09 A | 2021-03-15 A | RW1110 | 100% |  |
| RW1130 |  | Strip Retaining Wall - RW1 | 5d | 2021-03-16 A | 2021-04-02 A | RW1120 | 100% |  |
| RW1140 |  | Waterproof Ret Wall - RW1 | 5d | 2021-04-06 A | 2021-04-08 A | RW1130, PREP1220 | 100% |  |
| RW1150 |  | Ret Wall Drain & Wrap - RW1 | 5d | 2021-04-09 A | 2021-04-22 A | RW1140 SS+2d | 100% |  |
|  | 3 | **South - RW4 (SS104, CR-102)** |  | 2021-03-17 | 2021-05-06 |  |  |  |
| RW4020 |  | Ftg Rebar - RW4 | 4d | 2021-03-17 A | 2021-04-21 A | RW4000 SS+4d, RW4000 FF | 100% |  |
| RW4000 |  | Dig & Form Ftg - RW4 | 7d | 2021-03-31 A | 2021-04-02 A | RW1030 | 100% |  |
| RW4080 |  | Form Ret Wall - RW4 Pour 2 | 8d | 2021-04-12 A | 2021-04-23 A | RW4070 | 100% |  |
| RW4030 |  | Place Ftg Concrete - RW4 | 1d | 2021-04-12 A | 2021-04-12 A | RW4020 | 100% |  |
| RW4040 |  | Form Ret Wall - RW4 Pour 1 | 7d | 2021-04-14 A | 2021-04-23 A | RW4030, RW1110 | 100% |  |
| RW4050 |  | Rebar Ret Wall - RW4 Pour 1 | 3d | 2021-04-14 A | 2021-04-19 A | RW4040 SS+2d | 100% |  |
| RW4090 |  | Rebar Ret Wall - RW4 Pour 2 | 3d | 2021-04-14 A | 2021-04-19 A | RW4080 SS+2d | 100% |  |
| RW4070 |  | Place Ret Wall - RW4 Pour 1 | 1d | 2021-04-27 A | 2021-04-27 A | RW4040, RW4050 | 100% |  |
| RW4110 |  | Place Ret Wall - RW4 Pour 2 | 1d | 2021-04-27 A | 2021-04-27 A | RW4090, RW4080 | 100% |  |
| RW4120 |  | Cure Retaining Wall - RW4 | 14d | 2021-04-27 A | 2021-04-30 A | RW4110 | 100% |  |
| RW4130 |  | Strip Retaining Wall - RW4 | 3d | 2021-04-30 A | 2021-05-03 A | RW4120 | 100% |  |
| RW4140 |  | Waterproof Ret Wall - RW4 | 2d | 2021-05-05 A | 2021-05-06 A | RW4130, RW1140 | 100% |  |
|  | 2 | **Box Culvert Headwalls - RW2 and RW3 (SS103)** |  | 2021-06-14 | 2021-08-26 |  |  |  |

| ID | WBS | Task | Duration | Start | Finish | Predecessors | Complete | Total float |
| --- | --- | --- | --- | --- | --- | --- | --- | --- |
| RW2000 |  | Dig & Form Ftg - RW2 & RW3 | 7d | 2021-06-14 A | 2021-06-25 A | SD1120, RW4030 | 100% |  |
| RW2020 |  | Ftg Rebar - RW2 & RW3 | 4d | 2021-06-23 A | 2021-06-28 A | RW2000 SS+4d, RW2000 FF | 100% |  |
| RW2030 |  | Place Ftg Concrete - RW2 & RW3 | 1d | 2021-06-30 A | 2021-06-30 A | RW2020 | 100% |  |
| RW2040 |  | Form Ret Wall - RW2,3 Pour 1 | 8d | 2021-07-09 | 2021-07-21 | RW2030, RW4110 |  | 29d |
| RW2050 |  | Rebar Ret Wall - RW2,3 Pour 1 | 4d | 2021-07-13 | 2021-07-19 | RW2040 SS+2d |  | 31d |
| RW2070 |  | Place Ret Wall - RW2,3 Pour 1 | 1d | 2021-07-22 | 2021-07-22 | RW2040, RW2050 |  | 29d |
| RW2080 |  | Form Ret Wall - RW2,3 Pour 2 | 8d | 2021-07-23 | 2021-08-03 | RW2070 |  | 29d |
| RW2090 |  | Rebar Ret Wall - RW2,3 Pour 2 | 4d | 2021-07-27 | 2021-07-30 | RW2080 SS+2d |  | 31d |
| RW2110 |  | Place Ret Wall - RW2,3 Pour 2 | 1d | 2021-08-04 | 2021-08-04 | RW2080, RW2090 |  | 29d |
| RW2120 |  | Cure Retaining Wall - RW2,3 | 14d | 2021-08-05 | 2021-08-18 | RW2110 |  | 102d |
| RW2130 |  | Strip Retaining Wall - RW2,3 | 4d | 2021-08-19 | 2021-08-24 | RW2120 |  | 60d |
| RW4150 |  | Waterproof Ret Wall - RW2,3 | 2d | 2021-08-25 | 2021-08-26 | RW2130, RW4140 |  | 60d |
|  | 5 | **RCP Headwalls (SD-B, SD-D, SD-F)** |  | 2021-08-05 | 2021-11-03 |  |  |  |
| HW1000 |  | Dig/Form Ftgs - RCP Headwalls | 8d | 2021-08-05 | 2021-08-16 | SD1100, RW2110 |  | 29d |
| HW1010 |  | Rebar Ftgs - RCP Headwalls | 3d | 2021-08-17 | 2021-08-20 | HW1000 |  | 29d |
| HW1020 |  | Place Ftgs - RCP Headwalls | 1d | 2021-08-23 | 2021-08-23 | HW1010 |  | 29d |
| HW1030 |  | Form Walls - RCP Headwalls | 8d | 2021-08-24 | 2021-09-02 | HW1020 |  | 29d |
| HW1040 |  | Rebar Walls - RCP Headwalls | 3d | 2021-08-25 | 2021-08-27 | HW1030 SS+1d |  | 33d |
| HW1050 |  | Place Walls - RCP Headwalls | 1d | 2021-09-03 | 2021-09-03 | HW1040, HW1030 |  | 29d |
| HW1060 |  | Cure - RCP Headwalls | 7d | 2021-09-04 | 2021-09-10 | HW1050 |  | 51d |
| HW1080 |  | Security Grates -RCP Headwalls | 3d | 2021-10-29 | 2021-11-03 | HW1060, SLP1120 |  | 141d |
|  | 4 | **Above Ground Utility Crossing (SS108, CU-206)** |  | 2021-05-12 | 2021-11-04 |  |  |  |
| CRS1000 |  | Drill & Place Conc Piers | 5d | 2021-05-12 A | 2021-05-28 A | GRD1140, PREP1240, CRS1010 | 100% |  |
| CRS1010 |  | FOB Rebar Cages for Conc Piers | 1d | 2021-05-17 A | 2021-05-17 A | PREP1240 | 100% |  |
| CRS1020 |  | Form Pier Caps | 5d | 2021-07-02 | 2021-07-09 | CRS1000, CRS1010 |  | 61d |
| CRS1040 |  | Rebar Pier Caps | 5d | 2021-07-12 | 2021-07-19 | CRS1020 |  | 61d |
| CRS1060 |  | Set Embeds for Steel Casings | 5d | 2021-07-20 | 2021-07-26 | CRS1040 |  | 61d |
| CRS1080 |  | Place Pier Caps | 2d | 2021-07-27 | 2021-07-28 | CRS1060 |  | 61d |
| CRS1100 |  | Cure Pier Caps | 7d | 2021-07-29 | 2021-08-04 | CRS1080 |  | 97d |
| CRS1120 |  | Install Steel Casings | 4d | 2021-08-05 | 2021-08-10 | CRS1000, CRS1100 |  | 61d |
| CRS1140 |  | Form Security Cap at Pier | 5d | 2021-08-11 | 2021-08-17 | CRS1120 |  | 83d |
| CRS1160 |  | Rebar Security Cap at Pier | 3d | 2021-08-19 | 2021-08-23 | CRS1140 |  | 83d |
| CRS1180 |  | Place Security Cap at Pier | 1d | 2021-08-24 | 2021-08-24 | CRS1160 |  | 83d |
| CRS1200 |  | Paint Steel Casings | 2d | 2021-11-03 | 2021-11-04 | CRS1120, CRS1180, PREP1700 |  | 140d |
|  | 7 | **Misc Foundations** |  | 2021-07-02 | 2021-09-28 |  |  |  |
| SFND1000 |  | Dig/Form Propane/Fire Tank Ftg | 2d | 2021-07-02 | 2021-07-06 | CRS1000 |  | 102d |
| SFND1040 |  | Rebar Propane Tank Ftg | 2d | 2021-07-07 | 2021-07-08 | SFND1000 |  | 102d |
| SFND1080 |  | Place Propane/Fire Tank Ftg | 1d | 2021-07-09 | 2021-07-09 | SFND1040 |  | 102d |
| SFND1120 |  | Rebar Propane Tank Supports | 4d | 2021-07-12 | 2021-07-16 | SFND1080 |  | 102d |
| SFND1160 |  | Form Propane Tank Supports | 5d | 2021-07-19 | 2021-07-23 | SFND1120 |  | 102d |
| SFND1180 |  | Place Propane Tank Supports | 1d | 2021-07-26 | 2021-07-26 | SFND1160 |  | 102d |
| SFND1200 |  | Cure Propane Tank Supports | 7d | 2021-07-27 | 2021-08-02 | SFND1180 |  | 176d |
| SFND1020 |  | Dig/Form Generator/Chiller Ftg | 2d | 2021-09-15 | 2021-09-16 | CRS1000, EL1180 |  | 51d |
| SFND1060 |  | Rebar Generator Foundations | 2d | 2021-09-17 | 2021-09-20 | SFND1020 |  | 51d |
| SFND1100 |  | Place Generator/Chiller Ftgs | 1d | 2021-09-21 | 2021-09-21 | SFND1060 |  | 51d |
| SFND1140 |  | Cure Generator/Chiller Ftgs | 7d | 2021-09-22 | 2021-09-28 | SFND1100 |  | 90d |
|  | 10 | **Slope Protection** |  | 2020-12-07 | 2021-12-13 |  |  |  |
| SLP1000 |  | Fine Grade Slope - W SD Basin | 5d | 2020-12-07 A | 2021-01-22 A | SD1080, GRD1140, HW1060, GRD1200 | 100% |  |
| SLP1040 |  | Fine Grade Slope - Parking Lot | 3d | 2020-12-09 A | 2021-01-20 A | SLP1000 | 100% |  |
| SLP1060 |  | Fine Grade Slopes at Entry | 5d | 2021-01-06 A | 2021-09-13 | SLP1000, SLP1040 | 90% | 151d |
| SLP1010 |  | Outlet Ctrl Structure - SD-E | 5d | 2021-09-13 | 2021-09-17 | SLP1000 SS |  | 31d |
| SLP1050 |  | Form Slp Prot - Stock Pile Cul | 3d | 2021-09-14 | 2021-09-16 | SD1040, SLP1000 SS, PREP1320 |  | 49d |
| SLP1070 |  | Rebar Slp Prot -Stock Pile Cul | 2d | 2021-09-17 | 2021-09-20 | SLP1050 |  | 49d |
| SLP1020 |  | Form Slope Protect - W Basin | 10d | 2021-09-20 | 2021-10-04 | SLP1000, SLP1010 |  | 31d |
| SLP1080 |  | Place Slp Prot -Stock Pile Cul | 1d | 2021-09-21 | 2021-09-21 | SLP1070 |  | 49d |
| SLP1090 |  | Rebar Slope Protect - W Basin | 10d | 2021-10-05 | 2021-10-21 | SLP1020 |  | 31d |
| SLP1100 |  | Form Slope Protect - Parking | 5d | 2021-10-05 | 2021-10-12 | SLP1020, SLP1040 |  | 36d |
| SLP1120 |  | Place Slope Protect - W Basin | 5d | 2021-10-22 | 2021-10-28 | SLP1000, SLP1090, SLP1080 |  | 31d |
| SLP1140 |  | Rebar Slope Protect - Parking | 5d | 2021-10-22 | 2021-10-28 | SLP1090, SLP1100 |  | 31d |
| SLP1160 |  | Place Slope Protect - Parking | 2d | 2021-10-29 | 2021-11-01 | SLP1120, SLP1140 |  | 31d |
| SLP1180 |  | Form Slope Protect - N Perim | 5d | 2021-11-03 | 2021-11-09 | SLP1160 |  | 71d |
| SLP1200 |  | Rebar Slope Protect - N Perim | 5d | 2021-11-10 | 2021-11-18 | SLP1180 |  | 71d |
| SLP1220 |  | Form Slope Protect - Site Entr | 7d | 2021-11-10 | 2021-11-22 | SLP1180, SLP1060 |  | 115d |
| SLP1240 |  | Place Slope Protect - N Perim | 3d | 2021-11-19 | 2021-11-23 | SLP1120, SLP1120 FF, SLP1200 |  | 71d |
| SLP1260 |  | Rebar Slope Protect -Site Entr | 7d | 2021-11-23 | 2021-12-08 | SLP1220, SLP1200 |  | 115d |
| SLP1280 |  | Place Slope Protect -Site Entr | 3d | 2021-12-09 | 2021-12-13 | SLP1240, SLP1260 |  | 115d |
|  | 3 | **Building 1 Border Patrol Station** |  | 2020-10-26 | 2022-05-13 |  |  |  |
|  | 1 | **Foundations** |  | 2020-10-26 | 2021-05-03 |  |  |  |
|  | 5 | **South Retaining Walls (GL 0)** |  | 2021-02-03 | 2021-05-03 |  |  |  |
| 1FN0100 |  | Dig & Form Ftg - B1 RW | 4d | 2021-02-03 A | 2021-02-05 A | GRD1140, 031113-02, 133419-01, PREP1060, 013201-31, 033000-02, MOB1140, 032000-02, RFP07-140 | 100% |  |

| ID | WBS | Task | Duration | Start | Finish | Predecessors | Complete | Total float |
| --- | --- | --- | --- | --- | --- | --- | --- | --- |
| 1FN0110 |  | Ftg Rebar - B1 RW | 2d | 2021-02-10 A | 2021-02-15 A | 1FN0100, 032000-09, PREP1080 | 100% |  |
| 1FN0140 |  | Wall Rebar - B1 RW | 4d | 2021-02-10 A | 2021-03-17 A | 1FN0130 SS+2d | 100% |  |
| 1FN0120 |  | Place Ftg Concrete - B1 RW | 1d | 2021-02-22 A | 2021-02-22 A | 1FN0110 | 100% |  |
| 1FN0130 |  | Form 1 Side Walls - B1 RW | 5d | 2021-02-24 A | 2021-02-25 A | 1FN0120 | 100% |  |
| 1FN0150 |  | Close Wall Forms - B1 RW | 5d | 2021-03-18 A | 2021-03-22 A | 1FN0140, 1FN0130 | 100% |  |
| 1FN0160 |  | Place Wall Concrete - B1 RW | 1d | 2021-03-29 A | 2021-03-29 A | 1FN0150, 133419-29 | 100% |  |
| 1FN0170 |  | Cure Walls - B1 RW | 7d | 2021-03-29 A | 2021-04-02 A | 1FN0160 | 100% |  |
| 1FN0180 |  | Strip Walls - B1 RW | 6d | 2021-04-02 A | 2021-05-03 A | 1FN0170 | 100% |  |
| 1FN0190 |  | Waterproofing - B1 RW | 1d | 2021-04-12 A | 2021-04-12 A | 1FN0180 | 100% |  |
| 1FN0200 |  | Backfill Walls - B1 RW | 4d | 2021-04-13 A | 2021-04-19 A | 1FN0190 | 100% |  |
|  | 3 | **Area E (1-S105)** |  | 2020-11-12 | 2021-04-09 |  |  |  |
| 1FNE130 |  | Deep Elec/Comm in Pad - B1 E | 10d | 2020-11-12 A | 2020-12-18 A | 1FNE120 SS+5d, PREP1120, 1FNC120 | 100% |  |
| 1FNE110 |  | Layout/Dig UG Plumbing - B1 E | 3d | 2020-11-20 A | 2020-12-18 A | GRD1140, PREP1100, 1FNA110 | 100% |  |
| 1FNE120 |  | UG Waste & Vent - B1 E | 7d | 2020-12-14 A | 2020-12-18 A | PREP1100, 1FNE110 | 100% |  |
| 1FNE140 |  | Dig Ftgs & GBs - B1 E | 5d | 2021-01-18 A | 2021-02-25 A | 1FN0100, 1FNE120, 1FNE100, 1FNE130, PREP1060, RFP07-140 | 100% |  |
| 1FNE100 |  | Install Fire Risers - Bldg 1 | 3d | 2021-02-12 A | 2021-03-01 A | GRD1140 | 100% |  |
| 1FNE160 |  | Spread Ftg Rebar - B1 E | 4d | 2021-02-17 A | 2021-03-23 A | 1FNE140, 032000-09, PREP1080 | 100% |  |
| 1FNE150 |  | Form Grade Beams - B1 E | 8d | 2021-02-19 A | 2021-03-24 A | 1FNE140, 031113-02, 033000-02 | 100% |  |
| 1FNE170 |  | Set Anchor Bolts - B1 E | 3d | 2021-02-19 A | 2021-03-25 A | 1FNE160, 133419-29, 133419-90 | 100% |  |
| 1FNE190 |  | Grade Beam Rebar - B1 E | 7d | 2021-02-22 A | 2021-03-23 A | 1FNE150 SS+3d, 1FNE150 FF, 1FNE180, 032000-09 | 100% |  |
| 1FNE180 |  | Place Spread Ftgs - B1 E | 1d | 2021-03-29 A | 2021-03-29 A | 1FNE170 | 100% |  |
| 1FNE200 |  | Place Grade Beams - B1 E | 2d | 2021-03-29 A | 2021-03-29 A | 1FNE190 | 100% |  |
| 1FNE210 |  | Cure Grade Beams - B1 E | 3d | 2021-03-29 A | 2021-04-02 A | 1FNE200 | 100% |  |
| 1FNE220 |  | Strip Grade Beams - B1 E | 3d | 2021-04-09 A | 2021-04-09 A | 1FNE210 | 100% |  |
|  | 1 | **Areas C & D (1-S103 & 1-S104)** |  | 2020-10-28 | 2021-04-09 |  |  |  |
| 1FNC100 |  | Layout/Dig UG Plumbing - B1 CD | 2d | 2020-10-28 A | 2020-11-16 A | GRD1140 SS, PREP1100 | 100% |  |
| 1FNC110 |  | UG Waste & Vent - B1 CD | 7d | 2020-10-28 A | 2020-11-16 A | 1FNC100 | 100% |  |
| 1FNC120 |  | Deep Elec/Comm in Pad - B1 CD | 10d | 2020-11-09 A | 2020-11-20 A | 1FNC110 SS+5d, 1FNA120 | 100% |  |
| 1FNC130 |  | Dig Ftgs & GBs - B1 CD | 4d | 2021-01-18 A | 2021-02-17 A | 1FNE140, 1FNC110, 1FNC120 | 100% |  |
| 1FNC140 |  | Spread Ftg Rebar - B1 CD | 3d | 2021-02-15 A | 2021-02-18 A | 1FNC130, 1FNE160 | 100% |  |
| 1FNC180 |  | Grade Beam Rebar - B1 CD | 5d | 2021-02-15 A | 2021-02-19 A | 1FNC170 SS+3d, 1FNC170 FF, 1FNC160, 1FNE190 | 100% |  |
| 1FNC150 |  | Set Anchor Bolts - B1 CD | 3d | 2021-02-18 A | 2021-02-19 A | 1FNC140, 1FNE170, 133419-90 | 100% |  |
| 1FNC170 |  | Form Grade Beams - B1 CD | 5d | 2021-02-18 A | 2021-03-03 A | 1FNC130, 1FNE150, 1FNC160 | 100% |  |
| 1FNC160 |  | Place Spread Ftgs - B1 CD | 1d | 2021-02-22 A | 2021-02-22 A | 1FNC150 | 100% |  |
| 1FNC190 |  | Place Grade Beam - B1 CD | 2d | 2021-02-22 A | 2021-02-22 A | 1FNC180 | 100% |  |
| 1FNC200 |  | Cure Grade Beams - B1 CD | 3d | 2021-02-23 A | 2021-02-26 A | 1FNC190 | 100% |  |
| 1FNC210 |  | Strip Grade Beams - B1 CD | 3d | 2021-02-24 A | 2021-04-09 A | 1FNC200 | 100% |  |
|  | 2 | **Areas A & B (1-S101 & 1-S102)** |  | 2020-10-26 | 2021-04-12 |  |  |  |
| 1FNA120 |  | Deep Elec/Comm in Pad - B1 AB | 10d | 2020-10-26 A | 2020-11-16 A | GRD1140 SS, PREP1180 | 100% |  |
| 1FNA100 |  | Layout/Dig UG Plumbing - B1 AB | 3d | 2020-11-09 A | 2020-11-16 A | 1FNC100, 1FNC110 | 100% |  |
| 1FNA110 |  | UG Waste & Vent - B1 AB | 7d | 2020-11-09 A | 2020-11-16 A | 1FNA100 | 100% |  |
| 1FNA130 |  | Dig Ftgs & GBs - B1 AB | 4d | 2021-01-18 A | 2021-02-10 A | 1FNC130, 1FN0200, 1FNA110, 1FNA120 | 100% |  |
| 1FNA150 |  | Spread Ftg Rebar - B1 AB | 3d | 2021-02-10 A | 2021-02-12 A | 1FNA130 | 100% |  |
| 1FNA180 |  | Grade Beam Rebar - B1 AB | 5d | 2021-02-10 A | 2021-02-16 A | 1FNA140 SS+3d, 1FNA140 FF, 1FNA170 | 100% |  |
| 1FNA160 |  | Install Anchor Bolts - B1 AB | 2d | 2021-02-16 A | 2021-02-17 A | 1FNA150, 1FNC150, 133419-90 | 100% |  |
| 1FNA170 |  | Place Spread Ftgs - B1 AB | 1d | 2021-02-22 A | 2021-02-22 A | 1FNA160 | 100% |  |
| 1FNA190 |  | Place Grade Beams - B1 AB | 2d | 2021-02-22 A | 2021-02-22 A | 1FNA180 | 100% |  |
| 1FNA140 |  | Form Grade Beams - B1 AB | 5d | 2021-02-23 A | 2021-03-03 A | 1FNA130, 1FNC170 | 100% |  |
| 1FNA200 |  | Cure Grade Beams - B1 AB | 3d | 2021-02-23 A | 2021-04-09 A | 1FNA190 | 100% |  |
| 1FNA210 |  | Strip Grade Beams - B1 AB | 4d | 2021-02-25 A | 2021-04-12 A | 1FNA200 | 100% |  |
|  | 5 | **Slab on Grade** |  | 2020-11-18 | 2021-07-02 |  |  |  |
|  | 1 | **Area E (1-S105)** |  | 2020-12-01 | 2021-07-02 |  |  |  |
| 1SGE110 |  | Underslab Shallow Elec - B1 E | 10d | 2020-12-01 A | 2021-03-09 A | 1SGE100 | 100% |  |
| 1SGE100 |  | Grade Pad/Rem Spoils - B1 E | 3d | 2021-01-19 A | 2021-04-02 A | 1FNE220 | 100% |  |
| 1SGE130 |  | Vapor Barrier - B1 E | 2d | 2021-03-31 A | 2021-04-06 A | 1SGE110, 1SGE120 | 100% |  |
| 1SGE120 |  | Set 6" Base - B1 E | 5d | 2021-04-03 A | 2021-04-06 A | 1SGE100, 1SGE110, 1SGC110 FF | 100% |  |
| 1SGE140 |  | Slab Rebar - B1 E | 4d | 2021-04-08 A | 2021-04-12 A | 1SGE130 | 100% |  |
| 1SGE150 |  | Place Concrete Slab - B1 E | 1d | 2021-04-17 A | 2021-07-02 | 1SGE140 | 95% | 18d |
| 1SGE160 |  | Cure Slab - B1 E | 7d | 2021-04-17 A | 2021-04-23 A | 1SGE150 | 100% |  |
|  | 2 | **Area C & D (1-S103 & 1-S104)** |  | 2020-11-18 | 2021-07-02 |  |  |  |
| 1SGC110 |  | Underslab Shallow Elec - B1 CD | 10d | 2020-11-18 A | 2021-03-02 A | 1SGC100, 1SGE110 | 100% |  |
| 1SGC100 |  | Grade Pad/Rem Spoils - B1 CD | 3d | 2021-01-19 A | 2021-04-06 A | 1FNC210 | 100% |  |
| 1SGC130 |  | Vapor Barrier - B1 CD | 3d | 2021-03-31 A | 2021-04-12 A | 1SGC110, 1SGC120 | 100% |  |
| 1SGC120 |  | Set 6" Base - B1 CD | 7d | 2021-04-12 A | 2021-04-13 A | 1SGC100, 1SGE120, 1SGC110 | 100% |  |
| 1SGC140 |  | Slab Rebar - B1 CD | 5d | 2021-04-14 A | 2021-04-19 A | 1SGC130 | 100% |  |
| 1SGC150 |  | Place Concrete Slab - B1 CD | 1d | 2021-04-30 A | 2021-07-02 | 1SGC140 | 95% | 20d |
| 1SGC160 |  | Cure Slab - B1 CD | 7d | 2021-05-03 A | 2021-05-07 A | 1SGC150 | 100% |  |
|  | 4 | **Area A & B (1-S101 & 1-S102)** |  | 2020-11-20 | 2021-07-02 |  |  |  |
| 1SGA110 |  | Underslab Shallow Elec - B1 AB | 10d | 2020-11-20 A | 2021-03-02 A | 1SGA100, 1SGC110 | 100% |  |
| 1SGA100 |  | Grade Pad/Rem Spoils - B1 AB | 3d | 2021-01-19 A | 2021-04-08 A | 1FNA210 | 100% |  |

| ID | WBS | Task | Duration | Start | Finish | Predecessors | Complete | Total float |
| --- | --- | --- | --- | --- | --- | --- | --- | --- |
| 1SGA130 |  | Vapor Barrier - B1 AB | 3d | 2021-03-31 A | 2021-04-12 A | 1SGA110, 1SGA120 | 100% |  |
| 1SGA120 |  | Set 6" Base - B1 AB | 7d | 2021-04-12 A | 2021-04-12 A | 1SGA100, 1SGA110 | 100% |  |
| 1SGA140 |  | Slab Rebar - B1 AB | 5d | 2021-04-20 A | 2021-04-23 A | 1SGA130 | 100% |  |
| 1SGA150 |  | Place Concrete Slab - B1 AB | 1d | 2021-04-30 A | 2021-07-02 | 1SGA140 | 95% | 2d |
| 1SGA160 |  | Cure Slab - B1 AB | 7d | 2021-05-03 A | 2021-05-07 A | 1SGA150 | 100% |  |
|  | 2 | **Metal Building Structure & Exterior** |  | 2021-03-24 | 2022-03-04 |  |  |  |
|  | 1 | **Area E** |  | 2021-03-24 | 2021-10-18 |  |  |  |
| 1STE100 |  | Unload/Shakeout Mtl Bldg - B1 | 5d | 2021-03-24 A | 2021-05-07 A | PREP1260, 133419-12 | 100% |  |
| 1STE140 |  | Electrical in CMU Walls - B1 E | 25d | 2021-04-12 A | 2021-08-09 | 1STE110 | 10% | 30d |
| 1STE110 |  | Erect Metal Bldg Steel - B1 E | 13d | 2021-04-27 A | 2021-05-21 A | 1SGE160, 1SGC150, 133419-12, PREP1260, 1STE100, RFP02-140 | 100% |  |
| RFP02-140 |  | Addtl Field Erection Time | 5d | 2021-04-27 A | 2021-05-14 A | 1SGC150, PREP1260, 1STE100, 1SGE160 | 100% |  |
| 1STE180 |  | Mtl Panels/Air Barrier - B1 E | 7d | 2021-05-21 A | 2021-10-08 | 1STE120, 1STE160, 1STA110 | 25% | 1d |
| 1STE130 |  | Plumbing in CMU Walls - B1 E | 25d | 2021-06-11 A | 2021-09-03 | 1STE110, 042000-52 | 5% | 12d |
| 1STE120 |  | Erect CMU Walls - B1 E | 35d | 2021-08-02 | 2021-09-23 | 1STE110, 1STE130 FF, 1STE140 FF, 1STE150 SS, 1STE150 FF, 083463-90, PREP1340, 042000-52 |  | 1d |
| 1STE150 |  | Set HM Frames in CMU - B1 E | 5d | 2021-08-02 | 2021-08-06 | 1STE110, 083463-90 |  | 1d |
| 1STE160 |  | Insulation at CMU Perim - B1 E | 3d | 2021-09-24 | 2021-09-28 | 1STE120, PREP1440 |  | 1d |
| 1STE170 |  | Rigid Insulation - Sally Port | 3d | 2021-09-24 | 2021-09-28 | 1STE120 |  | 153d |
| 1STE190 |  | Erect 4" CMU - Sally Port | 5d | 2021-10-11 | 2021-10-18 | 1STE180, 1STE170 |  | 146d |
|  | 2 | **Areas C & D** |  | 2021-05-17 | 2021-10-07 |  |  |  |
| 1STC100 |  | Erect Metal Bldg Steel - B1 CD | 22d | 2021-05-17 A | 2021-07-02 | 1SGA150, 1STE110, 1SGC160 | 95% | 21d |
| 1STC140 |  | Mtl Panels/Air Barrier - B1 CD | 11d | 2021-06-09 A | 2021-07-20 | 1STC100, 1STA100 FF | 45% | 21d |
| 1STC110 |  | Air Barrier Mockup - B1 | 7d | 2021-09-24 | 2021-10-04 | 1STC100, PREP1380 |  | 5d |
| 1STC120 |  | Set Windows in Mockup - B1 | 2d | 2021-10-01 | 2021-10-04 | 1STC110 FF, 084113-03, 088100-03, PREP1400 |  | 5d |
| 1STC130 |  | Test Air Barrier Mockup - B1 | 1d | 2021-10-05 | 2021-10-05 | 1STC110, 1STC120 |  | 5d |
| 1STC150 |  | GOV APPR Air Barrier Mockup | 2d | 2021-10-06 | 2021-10-07 | 1STC130 |  | 7d |
|  | 3 | **Areas A & B** |  | 2021-05-17 | 2021-08-04 |  |  |  |
| 1STA100 |  | Erect Metal Bldg Steel - B1 AB | 19d | 2021-05-17 A | 2021-05-28 A | 1STC100, 1SGA160 | 100% |  |
| 1STA110 |  | Mtl Panels/Air Barrier - B1 AB | 11d | 2021-06-09 A | 2021-08-04 | 1STA100, 1STC100, 1STC140 | 45% | 25d |
|  | 4 | **All Areas** |  | 2021-07-30 | 2022-03-04 |  |  |  |
| 1EX100 |  | Tube Daylight Devices - B1 RF | 15d | 2021-07-30 | 2021-08-20 | 1STA110 SS, 086200-21, PREP1420 |  | 47d |
| 1EX110 |  | Roof Top Mech Units - B1 RF | 10d | 2021-10-11 | 2021-10-26 | 1STA100, 1STA110, 1STC140, 1STE180 |  | 54d |
| 1EX120 |  | Gutter, Dwn Spout, Trim - B1 | 15d | 2021-10-11 | 2021-11-03 | 1STA110, 1STE180 |  | 15d |
| 1EX130 |  | Elec Connect Rf Top Units - B1 | 5d | 2021-10-27 | 2021-11-03 | 1EX110 |  | 54d |
| 1EX150 |  | Exterior HM Doors - B1 | 8d | 2021-11-04 | 2021-11-17 | 081113-31, 1EX120, PREP1660 |  | 58d |
| 1EX160 |  | Lightning Protection - B1, B1A | 15d | 2021-11-04 | 2021-12-02 | 1EX120, 1RIC100, 1RIA100, 1RIE100, 264100-02, 1RIC110, 1RIA110, 1RIE110, 1AFI100 |  | 30d |
| 1EX140 |  | Alum Windows - B1 | 18d | 2021-11-17 | 2021-12-20 | 084113-21, 088100-21, 1EX120 |  | 26d |
| 1EX170 |  | Exterior Door Hardware - B1 | 5d | 2021-11-18 | 2021-11-29 | 1EX150, 087100-21 |  | 58d |
| 1EX190 |  | Exterior Painting - B1 | 5d | 2022-01-10 | 2022-01-17 | 1EX120, 099000-03, PREP1700, 1FIC130, 1FIA140, 1FIE730 |  | 98d |
| 1EX180 |  | Alum Storefront Entrances - B1 | 20d | 2022-01-14 | 2022-02-16 | 1EX140, 087100-90, 1ENT270 |  | 15d |
| 1EX200 |  | Ext Bldg Light Fixtures - B1 | 5d | 2022-01-19 | 2022-01-25 | 1EX190, 1RIC270, 1RIA300, 1RIE290 |  | 98d |
| 1EX210 |  | Sunshades Above Windows - B1 | 9d | 2022-02-18 | 2022-03-04 | 1EX140, 107000-09, PREP2120, 1EX180 |  | 76d |
| 1EX220 |  | Wire Mesh Partitions - B1 | 5d | 2022-02-24 | 2022-03-02 | 1FIE820, PREP2280, 102213-09, 1STE190 |  | 78d |
| 1EX230 |  | OH Coiling Doors - Sally Port | 5d | 2022-02-24 | 2022-03-02 | 083323-21, PREP2260, 1FIE820, 1STE190 |  | 78d |
|  | 4 | **Interior** |  | 2021-06-03 | 2022-05-13 |  |  |  |
|  | 2 | **Areas C & D (1-A103 & 1-A104)** |  | 2021-06-03 | 2022-03-16 |  |  |  |
|  | 1 | **Rough In** |  | 2021-06-03 | 2022-01-14 |  |  |  |
| 1RIC100 |  | Electrical Rough In OH - B1 CD | 20d | 2021-06-03 A | 2021-08-25 | 1STC140 SS+5d, 260000-02 | 35% | 79d |
| 1RIC110 |  | Fire Alarm Rough In OH - B1 CD | 20d | 2021-06-03 A | 2021-07-07 | 1STC140 SS+5d | 85% | 114d |
| 1RIC160 |  | Waste & Vent Rough In - B1 CD | 10d | 2021-06-11 A | 2021-08-03 | 1RIC120 SS+5d | 3% | 48d |
| 1RIC120 |  | Layout Framing - B1 CD | 4d | 2021-06-21 A | 2021-07-21 | 1STC140, PREP1480 | 90% | 22d |
| 1RIC130 |  | Fire Sprink Rough In - B1 CD | 10d | 2021-06-23 A | 2021-07-27 | 1RIC120 SS, 211313-12, PREP1500 | 50% | 33d |
| 1RIC140 |  | Frame Walls - B1 CD | 10d | 2021-07-22 | 2021-08-04 | 1RIC120, 054000-02 |  | 22d |
| 1RIC200 |  | Top Down Drywall - B1 CD | 8d | 2021-08-05 | 2021-08-16 | 1RIC140, PREP1540 |  | 59d |
| 1RIC210 |  | Set Interior HM Frames - B1 CD | 5d | 2021-08-05 | 2021-08-11 | 1RIC140, 081113-91 |  | 47d |
| 1RIC190 |  | Elec Rough In Walls - B1 CD | 20d | 2021-08-16 | 2021-09-13 | 1RIC140, 262000-02 |  | 15d |
| 1RIC220 |  | FA Rough In Walls - B1 CD | 20d | 2021-08-16 | 2021-09-13 | 1RIC140, 262000-02 |  | 15d |
| 1RIC230 |  | Tel/Data Rough In Wall - B1 CD | 20d | 2021-08-16 | 2021-09-13 | 1RIC140, 262000-02 |  | 15d |
| 1RIC240 |  | ESS Rough In Walls - B1 CD | 20d | 2021-08-16 | 2021-09-13 | 1RIC140, 262000-02 |  | 15d |
| 1RIC180 |  | Water & Gas Rough In - B1 CD | 15d | 2021-08-23 | 2021-09-13 | 1RIC140, 231125-02 |  | 15d |
| 1RIC150 |  | HVAC Hangers - B1 CD | 5d | 2021-08-31 | 2021-09-07 | 1RIC120, PREP1520, 230000-02 |  | 42d |
| 1RIC170 |  | OH Mech Units - B1 CD | 5d | 2021-09-14 | 2021-09-20 | 1RIC150, 230000-22 |  | 41d |
| 1RIC260 |  | Insulate Plumbing - B1 CD | 5d | 2021-09-14 | 2021-09-20 | 1RIC180, 220719-02 |  | 15d |
| 1RIC250 |  | Ductwork & Accessories - B1 CD | 30d | 2021-09-21 | 2021-11-01 | 1RIC200, 1RIC170 |  | 41d |
| 1RIC270 |  | Power & Lighting Wire - B1 CD | 10d | 2021-11-01 | 2021-11-15 | 1RIC100, 260519-02, 1FIC110, 1RIC110 |  | 33d |
| 1RIC280 |  | Hydronic Piping - B1 CD | 15d | 2021-11-02 | 2021-11-23 | 1RIC250, 230515-02, 236426-12 |  | 41d |
| 1RIC283 |  | Perform DALT - B1 CD | 2d | 2021-11-02 | 2021-11-03 | 1RIC250, 230593-23 |  | 53d |
| 1RIC286 |  | Submit DALT Report - B1 CD | 2d | 2021-11-04 | 2021-11-05 | 1RIC283 |  | 53d |
| 1RIC288 |  | GOV APPR Dalt Report - B1 CD | 5d | 2021-11-08 | 2021-11-15 | 1RIC286 |  | 53d |
| 1RIC290 |  | Insulate Ductwork - B1 CD | 8d | 2021-11-16 | 2021-11-29 | 1RIC250, PREP1720, 1RIC286, 1RIC288 |  | 53d |
| 1RIC300 |  | Elec Connect OH Units - B1 CD | 5d | 2021-11-16 | 2021-11-22 | 1RIC250, 1RIC100, 1RIC270, 1RIC110 |  | 56d |

| ID | WBS | Task | Duration | Start | Finish | Predecessors | Total float |
| --- | --- | --- | --- | --- | --- | --- | --- |
| 1RIC310 |  | Pull Fire Alarm Cable - B1 CD | 5d | 2021-11-23 | 2021-12-01 | 1RIC100, PREP1560, 1FIC120, 1RIC110 | 51d |
| 1RIC320 |  | Insulate Hydronic Pipe - B1 CD | 5d | 2021-11-24 | 2021-12-02 | 1RIC280, PREP1720 | 50d |
| 1RIC330 |  | Condensate to OH Units - B1 CD | 5d | 2021-11-24 | 2021-12-02 | 1RIC280 | 41d |
| 1RIC340 |  | Frame Hardlids - B1 D | 3d | 2021-12-03 | 2021-12-07 | 1RIC320 | 69d |
| 1RIC350 |  | Cable Trays - B1 CD | 8d | 2021-12-09 | 2021-12-20 | 1FIC130, PREP1900, 270528-12, 270528-90 | 28d |
| 1RIC360 |  | Communication Cable - B1 CD | 10d | 2021-12-21 | 2022-01-05 | 1RIC350, 275400-02, 272100-02 | 28d |
| 1RIC370 |  | Pull Security Cable - B1 CD | 10d | 2022-01-03 | 2022-01-14 | 1RIC350, 281005-12, PREP1960, 281005-90 | 74d |
|  | 2 | **Finishes** |  | 2021-10-11 | 2022-03-16 |  |  |
| 1FIC100 |  | Insulation & Firestop - B1 CD | 5d | 2021-10-11 | 2021-10-15 | 1RIC160, 1RIC260, 1RIC190, PM1180, 1EX100 SS, 1RIC220, 1RIC230, 1RIC240 | 1d |
| 1FIC110 |  | Hang Drywall - B1 CD | 10d | 2021-10-18 | 2021-10-29 | 1FIC100, 1RIC210, 1STC150 | 1d |
| 1FIC120 |  | Tape & Finish Drywall - B1 CD | 15d | 2021-11-01 | 2021-11-22 | 1FIC110 | 1d |
| 1FIC130 |  | Prime & 1st Coat Walls - B1 CD | 10d | 2021-11-23 | 2021-12-08 | 1FIC120, 099000-03, PREP1700 | 1d |
| 1FIC190 |  | Hang/Tape Gyp Hardlids - B1 D | 5d | 2021-12-08 | 2021-12-14 | 1RIC340 | 69d |
| 1FIC140 |  | Paint Exposed Struct - B1 CD | 10d | 2021-12-09 | 2021-12-22 | 1FIC130 | 51d |
| 1FIC150 |  | Install Controls - B1 CD | 8d | 2021-12-09 | 2021-12-20 | 1FIC130, PREP1820, 230900-02 | 105d |
| 1FIC160 |  | Coil Counter Drs - Issue Area | 3d | 2021-12-09 | 2021-12-13 | 1FIC130, 083313-13, PREP1860 | 120d |
| 1FIC170 |  | Elec Finish & Trim - B1 CD | 15d | 2021-12-09 | 2021-12-30 | 1FIC130, 1RIC270 | 83d |
| 1FIC180 |  | Ceiling Grid - Rooms - B1 CD | 7d | 2021-12-09 | 2021-12-17 | 1FIC130, 1RIC330, 095100-13, PREP1840 | 37d |
| 1FIC200 |  | Paint Hardlids - B1 D | 3d | 2021-12-15 | 2021-12-17 | 1FIC190 | 69d |
| 1FIC210 |  | Ceiling Grid Corridors - B1 CD | 5d | 2022-01-06 | 2022-01-12 | 1FIC130, 1RIC320, 1RIC290, 1RIC100, 1RIC300, 1RIC360, 1FIC180, 1RIC310, 1RIC110 | 28d |
| 1FIC220 |  | Cut Fire Sprink Drops - B1 CD | 3d | 2022-01-06 | 2022-01-10 | 1RIC340, 1FIC210 SS | 92d |
| 1FIC230 |  | Install Light Fixtures - B1 CD | 10d | 2022-01-13 | 2022-01-26 | 1FIC210 SS+5d, 1RIC270, 260923-02, 265400-12, 265200-12, 265300-12, 265553-12, 265553-90, 265300-90, 265200-90, 265100-90 | 28d |
| 1FIC240 |  | HVAC Registers/Grilles - B1 CD | 5d | 2022-01-13 | 2022-01-19 | 1FIC210 | 85d |
| 1FIC250 |  | Fire Alarm Devices - B1 CD | 10d | 2022-01-13 | 2022-01-26 | 1FIC210, 283164-12, 283164-90 | 74d |
| 1FIC260 |  | Casework & Countertops - B1 CD | 5d | 2022-01-19 | 2022-01-25 | 1FIC180, 064116-32, 066116-32, 123600-09, PREP2140, 062000-32, 062000-90, 064116-90, 066116-90, 1FIA190 | 29d |
| 1FIC290 |  | Vinyl Tile Flooring - B1 CD | 10d | 2022-01-26 | 2022-02-08 | 1FIC260, 1FIC210, 096500-13 | 51d |
| 1FIC300 |  | Tile Backsplash Brkrm - B1 D | 5d | 2022-01-26 | 2022-02-01 | 1FIC260 | 61d |
| 1FIC310 |  | Telecom Finish & Trim - B1 CD | 5d | 2022-01-26 | 2022-02-01 | 1RIC360, 1FIC130, 1FIC260 | 61d |
| 1FIC270 |  | Carpet Tile - Bldg 1 - Area C | 5d | 2022-01-27 | 2022-02-02 | 1FIC140, 1FIC180, 1FIC230, 096800-13, PREP2060 | 28d |
| 1FIC320 |  | Int Doors & Hardware - B1 CD | 8d | 2022-02-03 | 2022-02-14 | 1FIC700, PREP1660, 081400-23, 087100-21, 1FIC270 | 28d |
| 1FIC350 |  | Wall/Corner Protection - B1 CD | 5d | 2022-02-09 | 2022-02-15 | 1FIC290, 102600-09, PREP2180 | 51d |
| 1FIC360 |  | Seismic Joint Covers - B1 CD | 5d | 2022-02-09 | 2022-02-15 | 1FIC290 | 76d |
| 1FIC370 |  | Drop Ceiling Tiles - B1 CD | 5d | 2022-02-09 | 2022-02-15 | 1FIC240, 1FIC150, 1FIC230, 1FIC220, 1FIC290 | 71d |
| 1FIC330 |  | Seal Concrete Floors - B1 D | 3d | 2022-02-14 | 2022-02-16 | 1ELD140, 1MCD150 | 67d |
| 1FIC340 |  | Access Ctrl / ESS Trim - B1 CD | 10d | 2022-02-15 | 2022-03-01 | 1FIC320 | 28d |
| 1FIC380 |  | Final Paint - B1 CD | 5d | 2022-02-16 | 2022-02-23 | 1FIC320, 1FIC350, 1FIC290, 1FIC170, 1FIC310, 1FIC300 | 51d |
| 1FIC390 |  | Finish Fire Sprinklers - B1 CD | 5d | 2022-02-16 | 2022-02-23 | 1FIC370 | 71d |
| 1FIC280 |  | Rubber Floor (Fitness) - B1 D | 5d | 2022-02-17 | 2022-02-24 | 1FIC140, 1FIC230, 1EX180, 096566-13, PREP2100 | 60d |
| 1FIC400 |  | Resilient Base - B1 CD | 5d | 2022-02-24 | 2022-03-02 | 1FIC270, 1FIC290, 1FIC380 | 51d |
| 1FIC410 |  | Fitness Equipment - B1 D | 5d | 2022-03-03 | 2022-03-09 | 1FIC400, PREP2300, 1FIC280 | 56d |
| 1FIC420 |  | Fitness Mirrors - B1 D | 5d | 2022-03-10 | 2022-03-16 | 1FIC410 | 56d |
|  | 1 | **Restrooms & Locker Rooms** |  | 2021-12-20 | 2022-03-11 |  |  |
| 1FIC700 |  | Quarts Floor Locker Rms - B1 D | 10d | 2021-12-20 | 2022-01-04 | 1FIC180, 096726-03, PREP1920 | 49d |
| 1FIC710 |  | Float/Waterprf Showers - B1 D | 5d | 2021-12-20 | 2021-12-27 | 1FIC200, 1FIC130, PREP1940, 093010-13 | 69d |
| 1FIC720 |  | Porcelain Wall Tile - B1 D | 10d | 2021-12-28 | 2022-01-11 | 1FIC710 | 69d |
| 1FIC730 |  | Install Lockers - B1 D | 15d | 2022-01-05 | 2022-01-25 | 1FIC700, 105113-09, PREP1980 | 81d |
| 1FIC740 |  | Porcelain Floor Tile - B1 D | 10d | 2022-01-12 | 2022-01-25 | 1FIC720 | 69d |
| 1FIC750 |  | Elec Finish at Lockers - B1 D | 10d | 2022-01-26 | 2022-02-08 | 1FIC730 | 81d |
| 1FIC760 |  | Countertop - Restrooms - B1 CD | 1d | 2022-02-09 | 2022-02-09 | 1FIC740, 1FIA710 | 59d |
| 1FIC770 |  | Plumbing Fixtures - B1 CD | 8d | 2022-02-10 | 2022-02-22 | 1FIC760, 220000-09, PREP2200 | 59d |
| 1FIC780 |  | Toilet Partitions - B1 CD | 8d | 2022-02-23 | 2022-03-04 | 1FIC770, PREP2240, 101453-09 | 59d |
| 1FIC790 |  | Toilet Accessories - B1 CD | 5d | 2022-03-07 | 2022-03-11 | 1FIC780, 102813-09 | 59d |
|  | 4 | **Electrical Room** |  | 2021-11-08 | 2022-01-25 |  |  |
| 1ELD100 |  | Paint Electrical Rooms - B1 D | 2d | 2021-11-08 | 2021-11-09 | 1FIC120 SS+5d, 099000-03 | 6d |
| 1ELD110 |  | Set Electrical Panels - B1 D | 20d | 2021-11-10 | 2021-12-10 | 1ELD100, 262416-12, PREP1600, 262416-90 | 6d |
| 1ELD120 |  | Set Transformers - B1 Rm 1161 | 5d | 2021-12-13 | 2021-12-17 | 1ELD110 | 6d |
| 1ELD130 |  | Pull Feeders - B1 - Rm 1184 | 5d | 2021-12-20 | 2021-12-27 | 1ELD120, 1ELD110, 260519-02 | 6d |
| 1ELD140 |  | Make Up Elec Panels - B1 D | 20d | 2021-12-28 | 2022-01-25 | 1ELD130, 1LVD180 FF, 1RIC270 | 6d |
|  | 6 | **LV Rooms (Telecom / Security)** |  | 2021-11-23 | 2022-01-21 |  |  |
| 1LVD100 |  | Plywood Walls - LV Rms - B1 D | 3d | 2021-11-23 | 2021-11-29 | 1FIC120, 061000-02 | 17d |
| 1LVD110 |  | Paint Plywood - LV Rms - B1 D | 3d | 2021-11-30 | 2021-12-02 | 1LVD100 | 17d |
| 1LVD120 |  | Anti-Static Flooring - B1 D | 5d | 2021-12-03 | 2021-12-09 | 1LVD110, 096238-12, PREP1880 | 22d |
| 1LVD130 |  | Cable Tray/Ladder LV Rm - B1 D | 10d | 2021-12-09 | 2021-12-22 | 1LVD110, PREP1900 | 13d |
| 1LVD140 |  | Set CRAC Units - LV Rms - B1 D | 2d | 2021-12-10 | 2021-12-13 | 1LVD110, 1LVD120, 230000-32 | 33d |
| 1LVD150 |  | Build Out CRAC Units - B1 D | 10d | 2021-12-14 | 2021-12-28 | 1LVD140 | 33d |
| 1LVD160 |  | Racks/Cabinets - LV Rms - B1 D | 10d | 2021-12-23 | 2022-01-07 | 1LVD130, 1LVD120 | 13d |
| 1LVD180 |  | UPS Equipment - LV Rms - B1 D | 5d | 2022-01-10 | 2022-01-14 | 1LVD160, PREP2000, 263353-12, 263353-90 | 13d |
| 1LVD190 |  | Patch Panel/Termination - B1 D | 10d | 2022-01-10 | 2022-01-21 | 1LVD160 | 63d |
| 1LVD200 |  | Grounding - LV Rms - B1 D | 5d | 2022-01-10 | 2022-01-14 | 1LVD160, 280526-02 | 13d |
| 1LVD170 |  | ESS Panel Wiring/Makeup - B1 D | 5d | 2022-01-17 | 2022-01-21 | 1RIC370, 1LVD120 | 74d |

| ID | WBS | Task | Duration | Start | Finish | Predecessors | Complete | Total float |
| --- | --- | --- | --- | --- | --- | --- | --- | --- |
|  | 3 | **Mechanical Room (1167)** |  | 2021-12-09 | 2022-02-11 |  |  |  |
| 1MCD100 |  | Build-Out AHU - B1 - Rm 1167 | 5d | 2021-12-09 | 2021-12-15 | 237313-12, 1FIC130 |  | 1d |
| 1MCD110 |  | Duct & Mech Piping - RM 1167 | 20d | 2021-12-16 | 2022-01-14 | 1FIC130, 1MCD100 |  | 1d |
| 1MCD120 |  | Install VFDs - B1 - Rm 1167 | 5d | 2022-01-17 | 2022-01-21 | 1MCD110, 262923-12 |  | 6d |
| 1MCD130 |  | Insulate Duct/Piping - Rm 1167 | 10d | 2022-01-17 | 2022-01-28 | 1MCD110 |  | 1d |
| 1MCD140 |  | Elec Connect Mec Units-Rm 1167 | 10d | 2022-01-24 | 2022-02-04 | 1MCD120 |  | 6d |
| 1MCD150 |  | Install Controls - Rm 1167 | 10d | 2022-01-31 | 2022-02-11 | 1MCD130, 230900-02, PREP1820 |  | 1d |
|  | 3 | **Areas A & B (1-A101 & 1-A102)** |  | 2021-06-03 | 2022-03-16 |  |  |  |
|  | 1 | **Rough In** |  | 2021-06-03 | 2022-01-26 |  |  |  |
| 1RIA100 |  | Electrical Rough In OH - B1 AB | 20d | 2021-06-03 A | 2021-08-25 | 1STA110 SS+5d, 260000-02 | 35% | 79d |
| 1RIA110 |  | Fire Alarm Rough In OH - B1 AB | 20d | 2021-06-03 A | 2021-07-23 | 1STA110 SS+5d | 85% | 102d |
| 1RIA120 |  | Layout Framing - B1 AB | 4d | 2021-06-21 A | 2021-08-05 | 1RIC120, 1STA110 | 95% | 27d |
| 1RIA130 |  | Fire Sprink Rough In - B1 AB | 10d | 2021-06-21 A | 2021-08-11 | 1RIA120 SS, 1RIC130 | 50% | 27d |
| 1RIA140 |  | Frame Walls - B1 AB | 10d | 2021-08-06 | 2021-08-19 | 1RIA120, 1RIC140 |  | 31d |
| 1RIA160 |  | Waste & Vent Rough In - B1 AB | 10d | 2021-08-13 | 2021-08-26 | 1RIC160, 1RIA140 SS+5d |  | 46d |
| 1RIA190 |  | Top Down Drywall - B1 AB | 8d | 2021-08-20 | 2021-08-31 | 1RIA140, 1RIC200 |  | 56d |
| 1RIA200 |  | Set Interior HM Frames - B1 AB | 5d | 2021-08-20 | 2021-08-26 | 1RIA140 |  | 51d |
| 1RIA210 |  | Folding Partition Track - B1 B | 3d | 2021-08-20 | 2021-08-24 | 1RIA140, 102239-09, PREP1620 |  | 132d |
| 1RIA180 |  | Water & Gas Rough In - B1 AB | 15d | 2021-08-23 | 2021-09-13 | 1RIA140, 231125-02 |  | 30d |
| 1RIA150 |  | HVAC Hangers - B1 AB | 5d | 2021-09-08 | 2021-09-14 | 1RIA120, 1RIC150 |  | 42d |
| 1RIA220 |  | Elec Rough In Walls - B1 AB | 20d | 2021-09-14 | 2021-10-11 | 1RIA140, 1RIC190, 262000-02 |  | 15d |
| 1RIA240 |  | FA Rough In Walls - B1 AB | 20d | 2021-09-14 | 2021-10-11 | 1RIA140, 262000-02, 1RIC220 |  | 15d |
| 1RIA250 |  | Tel/Data Rough In Wall - B1 AB | 20d | 2021-09-14 | 2021-10-11 | 1RIA140, 262000-02, 1RIC230 |  | 15d |
| 1RIA260 |  | ESS Rough In Walls - B1 AB | 20d | 2021-09-14 | 2021-10-11 | 1RIA140, 262000-02, 1RIC240 |  | 15d |
| 1RIA270 |  | Insulate Plumbing - B1 AB | 5d | 2021-09-14 | 2021-09-20 | 1RIA180, 220719-02 |  | 30d |
| 1RIA170 |  | OH Mech Units - B1 AB | 5d | 2021-09-15 | 2021-09-21 | 1RIA150, 230000-22 |  | 42d |
| 1RIA230 |  | Ductwork & Accessories - B1 AB | 25d | 2021-09-22 | 2021-10-26 | 1RIA190, 1RIA170 |  | 42d |
| 1RIA280 |  | Hydronic Piping - B1 AB | 15d | 2021-10-27 | 2021-11-17 | 1RIA230, 230515-02, 236426-12 |  | 42d |
| 1RIA283 |  | Perform DALT - B1 AB | 2d | 2021-10-27 | 2021-10-28 | 1RIA230, 230593-23 |  | 55d |
| 1RIA286 |  | Submit DALT Report - B1 AB | 2d | 2021-10-29 | 2021-11-01 | 1RIA283 |  | 55d |
| 1RIA288 |  | GOV APPR Dalt Report - B1 AB | 5d | 2021-11-02 | 2021-11-08 | 1RIA286 |  | 55d |
| 1RIA290 |  | Insulate Ductwork - B1 AB | 10d | 2021-11-09 | 2021-11-23 | 1RIA230, 1RIA286, 1RIA288 |  | 55d |
| 1RIA300 |  | Power & Lighting Wire - B1 AB | 10d | 2021-11-16 | 2021-12-01 | 1RIA100, 260519-02, 1FIA120, 1RIA110 |  | 23d |
| 1RIA310 |  | Insulate Hydronic Pipe - B1 AB | 10d | 2021-11-18 | 2021-12-03 | 1RIA280 |  | 42d |
| 1RIA320 |  | Elect Connect OH Units - B1 AB | 5d | 2021-12-02 | 2021-12-08 | 1RIA230, 1RIA100, 1RIA300, 1RIA110 |  | 61d |
| 1RIA330 |  | Frame Hardlids - B1 AB | 3d | 2021-12-06 | 2021-12-08 | 1RIA310, 1RIA210 |  | 63d |
| 1RIA350 |  | Condensate to OH Units - B1 AB | 5d | 2021-12-06 | 2021-12-10 | 1RIA310 |  | 42d |
| 1RIA340 |  | Pull Fire Alarm Wiring - B1 AB | 5d | 2021-12-16 | 2021-12-22 | 1RIA100, 1FIA130, 1RIA110 |  | 51d |
| 1RIA360 |  | Cable Trays - B1 AB | 8d | 2022-01-03 | 2022-01-12 | 1FIA140 |  | 28d |
| 1RIA370 |  | Communication Cable - B1 AB | 10d | 2022-01-13 | 2022-01-26 | 1RIA360, 272100-02 |  | 28d |
| 1RIA380 |  | Security Cable - B1 AB | 10d | 2022-01-13 | 2022-01-26 | 1RIA360, 281005-12 |  | 61d |
|  | 2 | **Finishes** |  | 2021-09-14 | 2022-03-16 |  |  |  |
| 1FIA100 |  | Bullet Resist Panels - Lobby | 5d | 2021-09-14 | 2021-09-20 | 1RIA180, 102641-09, PREP1640 |  | 35d |
| 1FIA110 |  | Insulation & Firestop - B1 AB | 5d | 2021-10-12 | 2021-10-18 | 1RIA140, 1RIA160, 1RIA270, 1RIA220, 1EX100 SS, 1RIA240, 1RIA250, 1RIA260 |  | 15d |
| 1FIA120 |  | Hang Drywall - B1 AB | 10d | 2021-11-01 | 2021-11-15 | 1FIA110, 1RIA200, 1FIC110, 1FIA100 |  | 6d |
| 1FIA130 |  | Tape & Finish Drywall - B1 AB | 15d | 2021-11-23 | 2021-12-15 | 1FIA120, 1FIC120 |  | 1d |
| 1FIA150 |  | Hang/Tape Gyp Hardlids - B1 AB | 5d | 2021-12-09 | 2021-12-15 | 1RIA330 |  | 63d |
| 1FIA140 |  | Prime & 1st Coat Walls - B1 AB | 10d | 2021-12-16 | 2021-12-30 | 1FIA130 |  | 28d |
| 1FIA160 |  | Paint Hardlids - B1 AB | 3d | 2021-12-16 | 2021-12-20 | 1FIA150 |  | 63d |
| 1FIA170 |  | Paint Exposed Struct - B1 AB | 10d | 2022-01-03 | 2022-01-14 | 1FIA140 |  | 36d |
| 1FIA180 |  | Install Controls - B1 AB | 10d | 2022-01-03 | 2022-01-14 | 1FIA140 |  | 93d |
| 1FIA190 |  | Ceiling Grid - Rooms - B1 AB | 7d | 2022-01-03 | 2022-01-11 | 1FIA140, 1RIA350, 1FIC180 |  | 29d |
| 1FIA200 |  | Elec Finish & Trim - B1 AB | 10d | 2022-01-12 | 2022-01-25 | 1FIA140, 1RIA300, 1FIA190 |  | 66d |
| 1FIA210 |  | Casework & Countertops - B1 AB | 5d | 2022-01-26 | 2022-02-01 | 1FIA190, 1FIC260 |  | 29d |
| 1FIA220 |  | Ceiling Grid Corridors - B1 AB | 7d | 2022-01-27 | 2022-02-04 | 1FIA140, 1RIA310, 1RIA290, 1RIA100, 1RIA320, 1RIA370, 1RIA340, 1RIA110 |  | 28d |
| 1FIA230 |  | Cut Fire Sprink Drops - B1 AB | 3d | 2022-01-27 | 2022-01-31 | 1RIA330, 1FIA220 SS |  | 82d |
| 1FIA240 |  | Install Light Fixtures - B1 AB | 10d | 2022-01-27 | 2022-02-09 | 1FIA220 SS, 1RIA300, 260923-02, 265400-12, 265200-12, 265300-12, 1FIA170, 265553-12, 265553-90, 265300-90, 265200-90, 265100-90 |  | 28d |
| 1FIA250 |  | Tile Backsplash Brkrm - B1 AB | 5d | 2022-02-02 | 2022-02-08 | 1FIA210 |  | 56d |
| 1FIA260 |  | Telecom Finish & Trim - B1 AB | 8d | 2022-02-02 | 2022-02-11 | 1RIA370, 1FIA140, 1FIA210 |  | 53d |
| 1FIA270 |  | Acoustical Wall Panels - B1 B | 5d | 2022-02-02 | 2022-02-08 | 098420-02, 1FIA210 |  | 81d |
| 1FIA280 |  | Vinyl Tile Flooring - B1 AB | 10d | 2022-02-07 | 2022-02-18 | 1FIA210, 1FIA220, 096500-13 |  | 41d |
| 1FIA290 |  | HVAC Registers/Grilles - B1 AB | 8d | 2022-02-07 | 2022-02-16 | 1FIA220 |  | 70d |
| 1FIA300 |  | Fire Alarm Devices - B1 AB | 10d | 2022-02-07 | 2022-02-18 | 1FIA220, 283164-12 |  | 57d |
| 1FIA310 |  | Access Floor Cmd & Ctrl - B1 B | 5d | 2022-02-07 | 2022-02-11 | 1FIA220, 096919-13, 1FN100, PREP2220 |  | 73d |
| 1FIA330 |  | Carpet Tile - B1 AB | 5d | 2022-02-10 | 2022-02-16 | 1FIA210, 1FIA240, 096800-13 |  | 28d |
| 1FIA320 |  | Porcelain Tile at Lobby - B1 A | 7d | 2022-02-17 | 2022-02-28 | 1FIA710, 1EX180 |  | 43d |
| 1FIA340 |  | Seal Concrete Floors - B1 AB | 5d | 2022-02-17 | 2022-02-24 | 1MCA160, 1ELB140, 1FIC330 |  | 67d |
| 1FIA350 |  | Int Doors & Hardware - B1 AB | 8d | 2022-02-17 | 2022-03-01 | 1FIA330, 081400-23 |  | 28d |
| 1FIA360 |  | Wall/Corner Protection - B1 AB | 7d | 2022-02-22 | 2022-03-02 | 1FIA280, 102600-09 |  | 41d |
| 1FIA370 |  | Drop Ceiling Tiles - B1 AB | 5d | 2022-02-22 | 2022-02-28 | 1FIA290, 1FIA180, 1FIA240, 1FIA230, 1FIA310, 1FIA280, 1FN120 |  | 68d |

| ID | WBS | Task | Duration | Start | Finish | Predecessors | Complete | Total float |
| --- | --- | --- | --- | --- | --- | --- | --- | --- |
| 1FIA380 |  | Folding Panel Partition - B1 B | 5d | 2022-02-22 | 2022-02-28 | 1FIA280, 102239-10 |  | 68d |
| 1FIA390 |  | Finish Fire Sprinklers - B1 AB | 5d | 2022-03-01 | 2022-03-07 | 1FIA370 |  | 68d |
| 1FIA400 |  | Access Ctrl / ESS Trim - B1 AB | 10d | 2022-03-02 | 2022-03-15 | 1FIA350, 1FIC340 |  | 28d |
| 1FIA410 |  | Final Paint - B1 AB | 5d | 2022-03-03 | 2022-03-09 | 1FIA350, 1FIA360, 1FIA280, 1FIA200, 1FIA260, 1FIA320, 1FIA250 |  | 41d |
| 1FIA420 |  | Resilient Base - B1 AB | 5d | 2022-03-10 | 2022-03-16 | 1FIA330, 1FIA280, 1FIA410 |  | 41d |
|  | 1 | **Restrooms** |  | 2022-01-12 | 2022-03-07 |  |  |  |
| 1FIA700 |  | Wall Tile - Restrooms - B1 AB | 10d | 2022-01-12 | 2022-01-25 | 1FIA140, 1FIA190, 1FIA160 |  | 49d |
| 1FIA710 |  | Flr Tile - Restrooms - B1 AB | 10d | 2022-01-26 | 2022-02-08 | 1FIA700 |  | 49d |
| 1FIA720 |  | Countertop - Restrooms - B1 AB | 1d | 2022-02-10 | 2022-02-10 | 1FIA710, 1FIC760 |  | 63d |
| 1FIA730 |  | Plumbing Fixtures - B1 AB | 5d | 2022-02-11 | 2022-02-17 | 1FIA720, 220000-09, PREP2200 |  | 63d |
| 1FIA740 |  | Toilet Partitions - B1 AB | 8d | 2022-02-18 | 2022-03-02 | 1FIA730 |  | 63d |
| 1FIA750 |  | Toilet Accessories - B1 AB | 3d | 2022-03-03 | 2022-03-07 | 1FIA740 |  | 63d |
|  | 5 | **Electrical Room** |  | 2021-12-02 | 2022-02-01 |  |  |  |
| 1ELB100 |  | Paint - Elec Rooms - B1 B | 2d | 2021-12-02 | 2021-12-03 | 1FIA130 SS+5d |  | 1d |
| 1ELB110 |  | Set Electrical Panels - B1 B | 20d | 2021-12-06 | 2022-01-04 | 1ELB100, 262416-12, 262416-90 |  | 1d |
| 1ELB120 |  | Set Transformers - B1 B | 20d | 2021-12-06 | 2022-01-04 | 1ELB110 SS |  | 1d |
| 1ELB130 |  | Pull Feeders - B1 - Rm 1161 | 5d | 2022-01-05 | 2022-01-11 | 1ELB110, 260519-02 |  | 1d |
| 1ELB140 |  | Make Up Elec Panels - B1 B | 20d | 2022-01-05 | 2022-02-01 | 1ELB130 SS, 1RIA300, 1ELB120, 1LVB170 FF, 1ELB130 FF |  | 1d |
|  | 3 | **LV Rooms (Telecom / LAN / Security)** |  | 2021-12-02 | 2022-02-25 |  |  |  |
| 1LVB100 |  | Plywood Walls - LV Rms - B1 B | 2d | 2021-12-02 | 2021-12-03 | 1FIA130 SS+5d, 061000-02 |  | 9d |
| 1LVB110 |  | Paint - LV Rms - B1 B | 2d | 2021-12-06 | 2021-12-07 | 1LVB100 |  | 9d |
| 1LVB120 |  | Cable Tray/Ladder LV Rm - B1 B | 10d | 2021-12-08 | 2021-12-21 | 1LVB110 |  | 9d |
| 1LVB130 |  | Anti-Static Flooring - B1 B | 5d | 2021-12-08 | 2021-12-14 | 1LVB110, 096238-12 |  | 14d |
| 1LVB140 |  | Set CRAC Units - LV Rms - B1 B | 2d | 2021-12-15 | 2021-12-16 | 1LVB110, 1LVB130, 230000-32 |  | 30d |
| 1LVB150 |  | Build Out CRAC Units - B1 B | 10d | 2021-12-17 | 2022-01-03 | 1LVB140 |  | 30d |
| 1LVB160 |  | Racks/Cabinets - LV Rms - B1 B | 15d | 2021-12-22 | 2022-01-13 | 1LVB120, 1LVB130 |  | 9d |
| 1LVB170 |  | UPS Equipment - LV Rms - B1 B | 5d | 2022-01-14 | 2022-01-20 | 1LVB160, 263353-12, 263353-90 |  | 9d |
| 1LVB180 |  | Patch Panel/Termination - B1 B | 10d | 2022-01-14 | 2022-01-27 | 1LVB160 |  | 50d |
| 1LVB190 |  | Grounding - LV Rms - B1 B | 5d | 2022-01-14 | 2022-01-20 | 1LVB160, 280526-02 |  | 9d |
| 1LVB200 |  | ESS Panel Wiring/Makeup - B1 B | 10d | 2022-01-27 | 2022-02-09 | 1RIA380, 1LVB130 |  | 61d |
| 1LVB210 |  | AT&T Install FO Lines & Equip | 20d | 2022-01-28 | 2022-02-25 | 1LVB160, ATT100, 1LVB180 |  | 50d |
|  | 4 | **Mechanical Room (1125)** |  | 2021-11-30 | 2022-01-25 |  |  |  |
| 1MCA100 |  | Paint Mech Rm 1125 - B1 A | 2d | 2021-11-30 | 2021-12-01 | 1FIA130 SS+3d |  | 14d |
| 1MCA110 |  | AHUs in Mech Rm 1125 - B1 A | 5d | 2021-12-02 | 2021-12-08 | 237313-12, 1MCA100 |  | 14d |
| 1MCA120 |  | Duct & Mech Piping - Rm 1125 | 15d | 2021-12-09 | 2021-12-30 | 1MCA110 |  | 14d |
| 1MCA130 |  | Install VFDs - B1 - Rm 1125 | 3d | 2022-01-03 | 2022-01-05 | 1MCA120, 262923-12 |  | 21d |
| 1MCA140 |  | Insulate Duct/Piping - Rm 1125 | 7d | 2022-01-03 | 2022-01-11 | 1MCA120 |  | 14d |
| 1MCA150 |  | Elec Connect Mec Units-Rm 1125 | 7d | 2022-01-06 | 2022-01-14 | 1MCA130 |  | 21d |
| 1MCA160 |  | Install Controls - Rm 1125 | 10d | 2022-01-12 | 2022-01-25 | 1MCA140 |  | 14d |
|  | 1 | **Area E (1-A105)** |  | 2021-06-03 | 2022-04-22 |  |  |  |
|  | 1 | **Rough In** |  | 2021-06-03 | 2022-02-02 |  |  |  |
| 1RIE100 |  | Electrical Rough In OH - B1 E | 20d | 2021-06-03 A | 2021-08-25 | 260000-02, 1STE110 | 35% | 88d |
| 1RIE110 |  | Fire Alarm Rough In OH - B1 E | 20d | 2021-06-03 A | 2021-07-08 | 1STE110 | 80% | 122d |
| 1RIE140 |  | Fire Sprinkler Rough In - B1 E | 10d | 2021-08-12 | 2021-08-25 | 1RIA130, 211317-12 |  | 27d |
| 1RIE170 |  | Dry Pipe Sprink - Sally Port | 8d | 2021-08-26 | 2021-09-07 | 1RIE140, 211317-12, PREP1580 |  | 162d |
| 1RIE160 |  | Frame Top of CMU Walls - B1 E | 10d | 2021-09-24 | 2021-10-07 | 1RIE140, 1STE120 |  | 7d |
| 1RIE180 |  | Water & Gas Rough In - B1 E | 10d | 2021-10-08 | 2021-10-21 | 1RIE160, 231125-02 |  | 21d |
| 1RIE190 |  | Top Down Drywall - B1 E | 8d | 2021-10-08 | 2021-10-19 | 1RIE160 |  | 7d |
| 1RIE120 |  | Waste & Vent Rough In - B1 E | 10d | 2021-10-11 | 2021-10-22 | 1STE180 |  | 25d |
| 1RIE130 |  | HVAC Hangers - B1 E | 5d | 2021-10-11 | 2021-10-15 | 1STE180 |  | 4d |
| 1RIE220 |  | Elec Rough In Walls - B1 E | 10d | 2021-10-12 | 2021-10-25 | 1RIE160, 1RIA220, 262000-02 |  | 24d |
| 1RIE230 |  | FA Rough In Walls - B1 E | 10d | 2021-10-12 | 2021-10-25 | 1RIE160, 262000-02, 1RIA240 |  | 24d |
| 1RIE240 |  | Tel/Data Rough In Walls - B1 E | 10d | 2021-10-12 | 2021-10-25 | 1RIE160, 262000-02, 1RIA250 |  | 24d |
| 1RIE250 |  | ESS Rough In Walls - B1 E | 10d | 2021-10-12 | 2021-10-25 | 1RIE160, 262000-02, 1RIA260 |  | 24d |
| 1RIE260 |  | Intercom Rough In - B1 E | 10d | 2021-10-12 | 2021-10-25 | 1RIE160, 1RIA220, 262000-02, 1RIA240, 1RIA250, 1RIA260 |  | 24d |
| 1RIE150 |  | OH Mech Units - B1 E | 5d | 2021-10-18 | 2021-10-22 | 1RIE130, 230000-22 |  | 4d |
| 1RIE210 |  | Insulate Plumbing Lines - B1 E | 5d | 2021-10-22 | 2021-10-28 | 1RIE180, 220719-02 |  | 21d |
| 1RIE200 |  | Ductwork & Accessories - B1 E | 22d | 2021-10-25 | 2021-11-24 | 1RIE190, 1RIE150 |  | 4d |
| 1RIE270 |  | Hydronic Piping - B1 E | 15d | 2021-11-29 | 2021-12-17 | 1RIE200, 230515-02, 236426-12 |  | 4d |
| 1RIE273 |  | Perform DALT - B1 E | 2d | 2021-11-29 | 2021-11-30 | 1RIE200, 230593-23 |  | 37d |
| 1RIE276 |  | Submit DALT Report - B1 E | 2d | 2021-12-01 | 2021-12-02 | 1RIE273 |  | 37d |
| 1RIE290 |  | Power & Lighting Wire - B1 E | 10d | 2021-12-02 | 2021-12-15 | 1RIE100, 260519-02, 1FIE710, 1RIE110 |  | 36d |
| 1RIE278 |  | GOV APPR Dalt Report | 5d | 2021-12-03 | 2021-12-09 | 1RIE276 |  | 37d |
| 1RIE280 |  | Insulate Ductwork - B1 E | 8d | 2021-12-10 | 2021-12-21 | 1RIE200, 1RIE276, 1RIE278 |  | 37d |
| 1RIE320 |  | Elec Connect OH Units - B1 E | 5d | 2021-12-16 | 2021-12-22 | 1RIE200, 1FIE710, 1RIE290 |  | 36d |
| 1RIE300 |  | Insulate Hydronic Pipe - B1 E | 8d | 2021-12-20 | 2021-12-30 | 1RIE270 |  | 10d |
| 1RIE310 |  | Condensate to OH Units - B1 E | 5d | 2021-12-20 | 2021-12-27 | 1RIE270 |  | 13d |
| 1RIE330 |  | Pull Fire Alarm Wiring - B1 E | 10d | 2021-12-23 | 2022-01-07 | 1FIE720 |  | 36d |
| 1RIE340 |  | Cable Trays - B1 E | 8d | 2022-01-10 | 2022-01-19 | 1FIE730 |  | 18d |
| 1RIE350 |  | Unit Heaters - Fire Riser Rms | 2d | 2022-01-17 | 2022-01-18 | 1FIE760, 235416-12 |  | 66d |

| ID | WBS | Task | Duration | Start | Finish | Predecessors | Total float |
| --- | --- | --- | --- | --- | --- | --- | --- |
| 1RIE360 |  | Communication Cable - B1 E | 10d | 2022-01-20 | 2022-02-02 | 1RIE340, 272100-02 | 18d |
| 1RIE370 |  | Pull Security Cable - B1 E | 10d | 2022-01-20 | 2022-02-02 | 1RIE340, 281005-12 | 18d |
|  | 2 | **Finishes** |  | 2021-10-29 | 2022-04-22 |  |  |
| 1FIE700 |  | Insulation & Firestop - B1 E | 3d | 2021-10-29 | 2021-11-02 | 1RIE160, 1RIE120, 1RIE210, 1RIE220, 1RIE230, 1RIE240, 1RIE250, 1RIE260 | 21d |
| 1FIE710 |  | Hang Secur Mesh & Gyp - B1 E | 10d | 2021-11-16 | 2021-12-01 | 1FIE700, 1FIA120 | 13d |
| 1FIE720 |  | Tape & Finish Drywall - B1 E | 15d | 2021-12-02 | 2021-12-22 | 1FIE710 | 14d |
| 1FIE730 |  | Prime & 1st Coat Walls - B1 E | 10d | 2021-12-23 | 2022-01-07 | 1FIE720 | 14d |
| 1FIE740 |  | Support for Plaster Clg - B1 E | 8d | 2022-01-03 | 2022-01-12 | 1RIE300, 1FIE730 SS, 092200-02, 1RIE310, PREP2040 | 10d |
| 1FIE760 |  | Paint Exposed Struct - B1 E | 5d | 2022-01-10 | 2022-01-14 | 1FIE730 | 36d |
| 1FIE750 |  | Lath Ceilings - B1 E | 5d | 2022-01-13 | 2022-01-19 | 1FIE740 | 10d |
| 1FIE790 |  | Install Controls - B1 E | 8d | 2022-01-19 | 2022-01-28 | 1FIE730, 1RIE350 | 66d |
| 1FIE770 |  | Scratch Coat Ceilings - B1 E | 2d | 2022-01-20 | 2022-01-21 | 1FIE750 | 10d |
| 1FIE780 |  | Cure Scratch Coat - B1 E | 2d | 2022-01-22 | 2022-01-23 | 1FIE770 | 15d |
| 1FIE800 |  | Brown Coat Ceilings - B1 E | 4d | 2022-01-24 | 2022-01-27 | 1FIE780 | 11d |
| 1FIE810 |  | Cure Brown Coat - B1 E | 10d | 2022-01-28 | 2022-02-06 | 1FIE800 | 15d |
| 1FIE820 |  | Color Coat Ceilings - B1 E | 6d | 2022-02-07 | 2022-02-14 | 092423-13, 1FIE810 | 10d |
| 1FIE830 |  | Ceiling Grid - B1 E | 5d | 2022-02-15 | 2022-02-22 | 1FIE730, 1RIE300, 1RIE280, 1RIE100, 1RIE320, 1RIE360, 1RIE370, 1RIE310, 1FIA190, 1FIE820, 1RIE330, 1RIE110 | 10d |
| 1FIE840 |  | Cut Fire Sprink Drops - B1 E | 2d | 2022-02-15 | 2022-02-16 | 1FIE740, 1FIE830 SS, 1RIE170 | 53d |
| 1FIE850 |  | Elec Finish & Trim - B1 E | 10d | 2022-02-15 | 2022-03-01 | 1FIE730, 1RIE290, 1FIE820 | 52d |
| 1FIE860 |  | Telecom Finish & Trim - B1 E | 5d | 2022-02-15 | 2022-02-22 | 1RIE360, 1FIE730, 1FIE820 | 57d |
| 1FIE880 |  | Install Light Fixtures - B1 E | 10d | 2022-02-23 | 2022-03-08 | 1FIE830, 1RIE290, 1FIE820, 260923-02, 265400-12, 265200-12, 265300-12, 1FIE760, 265553-12, 265553-90, 265300-90, 265200-90, 265100-90 | 10d |
| 1FIE890 |  | Casework & Countertops - B1 E | 5d | 2022-02-23 | 2022-03-01 | 1FIE830, 1FIA210 | 15d |
| 1FIE900 |  | HVAC Registers/Grilles - B1 E | 5d | 2022-02-23 | 2022-03-01 | 1FIE830, 1FIE820 | 45d |
| 1FIE910 |  | FACP & FA Devices - B1 E | 10d | 2022-02-23 | 2022-03-08 | 1FIE830, 1FIE820 | 46d |
| 1FIE920 |  | Access Floor Ctrl/Mon - B1 E | 5d | 2022-02-23 | 2022-03-01 | 1FIE830, 096919-13, 1FN100, PREP2220 | 45d |
| 1FIE870 |  | Seal Concrete Floors - B1 E | 3d | 2022-02-25 | 2022-03-01 | 1ELE140, 1FIA340 | 67d |
| 1FIE930 |  | Quartz Flooring - B1 E | 13d | 2022-03-09 | 2022-03-25 | 1FIE830, 1FIE820, 1FIE890, 1FIE880, 1FIC700, 096726-03 | 10d |
| 1FIE1000 |  | Acoustical Wall Panels - B1 E | 5d | 2022-03-28 | 2022-04-01 | 1FIE930, 098420-02 | 44d |
| 1FIE940 |  | Plumbing Fixtures - B1 E | 5d | 2022-03-28 | 2022-04-01 | 1FIE930, 220000-09 | 41d |
| 1FIE950 |  | Detention Doors & HW - B1 E | 10d | 2022-03-28 | 2022-04-08 | 1FIE930, 083463-31, 087163-21, PREP2340 | 10d |
| 1FIE960 |  | Drop Ceiling Tiles - B1 E | 4d | 2022-03-28 | 2022-03-31 | 1FIE900, 1FIE790, 1FIE880, 1FIE840, 1FIE930, 1FIE880 FF, 1FIE920 | 27d |
| 1FIE970 |  | Install Weapons Lockers - B1 E | 5d | 2022-03-28 | 2022-04-01 | 1FIE930 | 44d |
| 1FIE980 |  | SS Countertops - B1 E | 3d | 2022-03-28 | 2022-03-30 | 1FIE890, 1FIE930 | 44d |
| 1FIE990 |  | Vault Door & Day Gate - B1 E | 5d | 2022-03-28 | 2022-04-01 | 1FIE930, PREP2360, 083459-21 | 10d |
| 1FIE1010 |  | Finish Fire Sprinklers - B1 E | 3d | 2022-04-01 | 2022-04-05 | 1FIE960 | 27d |
| 1FIE1020 |  | Toilet Accessories - B1 E | 3d | 2022-04-04 | 2022-04-06 | 1FIE940 | 41d |
| 1FIE1030 |  | Standard Int Drs & HW - B1 E | 5d | 2022-04-04 | 2022-04-08 | 1FIE990, 081113-31, 083402-21 | 10d |
| 1FIE1040 |  | Detention Padding - B1 E | 5d | 2022-04-11 | 2022-04-15 | 1FIE930, 119819-21, PREP2420, 1FIE950 | 34d |
| 1FIE1050 |  | Final Paint - B1 E | 5d | 2022-04-11 | 2022-04-15 | 1FIE930, 1FIE950, 1FIE1030, 1FIE1010, 1FIE850, 1FIE860 | 24d |
| 1FIE1060 |  | Detention Windows/Glass - B1 E | 5d | 2022-04-11 | 2022-04-15 | 1FIE950, 088853-21, 085663-21 | 34d |
| 1FIE1070 |  | Access Ctrl / ESS Trim - B1 E | 10d | 2022-04-11 | 2022-04-22 | 1FIE990, 1FIE1030, 1FIA400, 1FIE950 | 10d |
| 1FIE1080 |  | Intercom Sys & Devices - B1 E | 10d | 2022-04-11 | 2022-04-22 | 1FIE990, 1FIE1030, 1FIE950 | 10d |
| 1FIE1090 |  | Handcuff Rails - B1 E | 2d | 2022-04-18 | 2022-04-19 | 1FIE980, 1FIE1050 | 32d |
|  | 3 | **Electrical Room** |  | 2021-11-16 | 2022-01-18 |  |  |
| 1ELE100 |  | Paint - Bldg 1 - Rm 1214 | 2d | 2021-11-16 | 2021-11-17 | 1FIE710 SS | 13d |
| 1ELE110 |  | Receive Main Switchboard MSB1 | 2d | 2021-11-16 | 2021-11-17 | 262413-12, 1ELE100 SS | 13d |
| 1ELE120 |  | Set Switch Gear - B1 - Rm 1214 | 5d | 2021-11-18 | 2021-11-24 | 1ELE100, 262300-12, 262413-12, 1ELE110, 260548-02 | 13d |
| 1ELE130 |  | Receive All Other Switchboards | 5d | 2021-11-18 | 2021-11-24 | 260571-02, 262300-12, 1ELE110 | 43d |
| 1ELE140 |  | Build Switch Gear - B1 Rm 1214 | 30d | 2021-11-29 | 2022-01-11 | 1ELE120, 1ELE130 FF | 13d |
| 1ELE150 |  | FA Control Panel - B1 Rm 1214 | 5d | 2021-11-29 | 2021-12-03 | 1ELE120 | 110d |
| 1ELE160 |  | Pull Feeders - B1 - Rm 1214 | 10d | 2021-11-30 | 2021-12-13 | 1ELE140 SS, EL1560 | 23d |
| 1ELE200 |  | Test UG Elec Distribution | 1d | 2021-12-01 | 2021-12-01 | 1ELE160 SS+1d | 31d |
| 1ELE210 |  | GOV APPR UG Elect Test Report | 14d | 2021-12-02 | 2021-12-15 | 1ELE200 | 49d |
| 1ELE170 |  | Makeup Switchgear - B1 Rm 1214 | 5d | 2021-12-14 | 2021-12-20 | 1ELE160, 1ELE200 | 23d |
| 1ELE220 |  | Apparatus Insp & Testing | 5d | 2021-12-21 | 2021-12-28 | 1ELE170, 260800-02 | 23d |
| 1ELE230 |  | GOV APPR Apparatus Test | 14d | 2021-12-29 | 2022-01-11 | 1ELE220 | 34d |
| 1ELE180 |  | Schedule SDG&E Inspection | 3d | 2022-01-12 | 2022-01-14 | 1ELE160, 1ELE170, 1EX160, EL1060, EL1200, EL1220, EL1360, 3ST220, 1ELE140 | 17d |
| 1ELE190 |  | SDG&E Inspection & Set Meter | 2d | 2022-01-17 | 2022-01-18 | 1ELE180, EL1580 | 11d |
|  | 4 | **All Areas** |  | 2021-09-24 | 2022-05-13 |  |  |
| 1FN100 |  | Layout Access Floor - B1 | 1d | 2021-09-24 | 2021-09-24 | 1RIC140, 1STE120 | 146d |
| 1FN110 |  | Build Out Fire Risers - B1 | 10d | 2022-01-03 | 2022-01-14 | 1RIA130, 1RIE140, 1FIA140 | 103d |
| 1FN130 |  | FRP in Janitors Closets - B1 | 10d | 2022-01-10 | 2022-01-21 | 1FIC130, 1FIA140, 1FIE730 | 93d |
| 1FN120 |  | Tube Daylight Diffuser - B1 AC | 7d | 2022-01-12 | 2022-01-20 | 1EX100, 1FIA190, 1FIC180 | 89d |
| 1FN140 |  | AV System & Equip - B1 | 30d | 2022-01-28 | 2022-03-11 | 1LVB160, 1LVD160, 1LVD190, 1LVB180 | 59d |
| 1FN150 |  | Walk-Off Mats - B1 | 2d | 2022-02-22 | 2022-02-23 | 1ENT270, 1FIA280, 1EX180, 124813-09 | 71d |
| 1FN160 |  | Window Coverings - B1 | 8d | 2022-03-10 | 2022-03-21 | 1FIA410, 122413-09, PREP2320 | 53d |
| 1FN170 |  | Fire Ext & Cabinets - B1 | 5d | 2022-03-28 | 2022-04-01 | 1FIE930, 1FIA280, 1FIC290, 104416-09 | 44d |
| 1FN180 |  | Shelving & Storage Equip - B1 | 15d | 2022-03-28 | 2022-04-15 | 1FIE930, 1FIC400, 1FIA420, 105613-09, PREP2400 | 34d |
| 1FN190 |  | Kitchen Equipment - B1 | 5d | 2022-04-18 | 2022-04-22 | 1FIE1050, PREP2440 | 29d |
| 1FN200 |  | Bldg Signage - B1 | 10d | 2022-04-18 | 2022-04-29 | 101400-09, 101400-29, 1FIE1050, PREP2460 | 24d |

| ID | WBS | Task | Duration | Start | Finish | Predecessors | Complete | Total float |
| --- | --- | --- | --- | --- | --- | --- | --- | --- |
| 1FN210 |  | Final Clean - B1 | 10d | 2022-05-02 | 2022-05-13 | 1FIE1060, 1FN160, 1FN170, 1FN150, 1FN190, 1FIA420, 1FIE870, 1FIE1020, 1FIE1040, 1FIE970, 1FIE1090, 1FN180, 1FN200, 1FIC160, 1FIA380, 1FIC390, 1FIC410, 1FIC360, 1FIC790, 1FIC750, 1FIA750, 1FN130, 1FN140, 1FIE1000, 1FIA270, 1FIE1080, 1FIC420 |  | 24d |
|  | 6 | **BPS Entry Stairs & Ramp** |  | 2021-06-09 | 2022-01-21 |  |  |  |
| 1ENT100 |  | Dig & Form Ftg - B1 Entry RW | 2d | 2021-06-09 A | 2021-06-10 A | 1EX120 | 100% |  |
| 1ENT110 |  | Ftg Rebar - B1 Entry RW | 2d | 2021-06-11 A | 2021-06-11 A | 1ENT100 | 100% |  |
| 1ENT120 |  | Place Ftg Conc - B1 Entry RW | 1d | 2021-06-14 A | 2021-11-04 | 1ENT110 | 95% | 15d |
| 1ENT130 |  | Form 1 Side Walls -B1 Entry RW | 3d | 2021-06-16 A | 2021-06-17 A | 1ENT120 | 100% |  |
| 1ENT140 |  | Wall Rebar - B1 Entry RW | 3d | 2021-06-17 A | 2021-06-18 A | 1ENT130 SS+2d | 100% |  |
| 1ENT150 |  | Close Wall Forms - B1 Entry RW | 2d | 2021-06-23 A | 2021-06-28 A | 1ENT140, 1ENT130 | 100% |  |
| 1ENT160 |  | Place Wall Concr - B1 Entry RW | 1d | 2021-06-30 A | 2021-11-04 | 1ENT150 | 75% | 15d |
| 1ENT170 |  | Cure Walls - B1 Entry RW | 7d | 2021-06-30 A | 2021-11-11 | 1ENT160 |  | 31d |
| 1ENT180 |  | Strip Walls - B1 Entry RW | 2d | 2021-11-12 | 2021-11-15 | 1ENT170 |  | 15d |
| 1ENT190 |  | Waterproofing - B1 Entry RW | 1d | 2021-11-17 | 2021-11-17 | 1ENT180 |  | 15d |
| 1ENT200 |  | Backfill & Grade - B1 Entry | 5d | 2021-11-18 | 2021-11-29 | 1ENT190 |  | 15d |
| 1ENT210 |  | Form Entrance Ramps - B1 Entry | 8d | 2021-11-30 | 2021-12-13 | 1ENT200, 1ENT190 |  | 15d |
| 1ENT220 |  | Flagpole Ftgs - B1 Entry | 5d | 2021-11-30 | 2021-12-08 | 1ENT200, 103500-90 |  | 31d |
| 1ENT230 |  | Rebar Ramps - B1 Entry | 5d | 2021-12-14 | 2021-12-22 | 1ENT210 |  | 21d |
| 1ENT240 |  | Form Stairs & Slab - B1 Entry | 8d | 2021-12-14 | 2021-12-29 | 1ENT210 |  | 15d |
| 1ENT250 |  | Place Ramp Concrete - B1 Entry | 2d | 2021-12-27 | 2021-12-28 | 1ENT230 |  | 21d |
| 1ENT260 |  | Rebar Stairs & Slab - B1 Entry | 5d | 2022-01-04 | 2022-01-10 | 1ENT240 |  | 15d |
| 1ENT270 |  | Place Stairs & Slab - B1 Entry | 2d | 2022-01-11 | 2022-01-12 | 1ENT260, 1ENT220, 1ENT250 |  | 15d |
| 1ENT280 |  | Set Handrails - B1 Entry | 5d | 2022-01-14 | 2022-01-21 | 1ENT270, 055200-09 |  | 100d |
|  | 6 | **Building 1A Central Plant** |  | 2020-12-07 | 2022-03-02 |  |  |  |
|  | 1 | **Foundations** |  | 2021-05-24 | 2021-06-14 |  |  |  |
| 1AFN100 |  | Excavate Drilled Ftgs - B1A | 3d | 2021-05-24 A | 2021-05-27 A | 1FNA190 | 100% |  |
| 1AFN120 |  | Set ABs in Drilled Ftgs - B1A | 2d | 2021-05-27 A | 2021-05-28 A | 1AFN110 | 100% |  |
| 1AFN110 |  | Rebar in Drilled Ftg - B1A | 2d | 2021-05-28 A | 2021-05-28 A | 1AFN100 | 100% |  |
| 1AFN130 |  | Place Drilled Ftgs - B1A | 1d | 2021-06-07 A | 2021-06-07 A | 1AFN120 | 100% |  |
| 1AFN140 |  | Cure Drilled Ftgs - B1A | 14d | 2021-06-07 A | 2021-06-14 A | 1AFN130 | 100% |  |
|  | 2 | **Structure** |  | 2020-12-07 | 2021-08-10 |  |  |  |
| 1AST120 |  | Underslab Shallow Elec - B1A | 5d | 2020-12-07 A | 2021-01-15 A | 1AST100 | 100% |  |
| 1AST100 |  | Underslab Plumbing - B1A | 5d | 2020-12-14 A | 2021-07-02 | 1AFN130 | 95% | 69d |
| 1AST130 |  | Erect Metal Bldg - B1A | 10d | 2021-06-16 A | 2021-07-16 | 1STA100, 1AFN140, 1AST120 | 25% | 64d |
| 1AST110 |  | Underslab Mech Piping - B1A | 15d | 2021-06-29 A | 2021-07-26 | 1AFN130, 1AST100 | 25% | 104d |
| 1AST140 |  | Set 6" Base - B1A | 2d | 2021-07-19 | 2021-07-20 | 1AST120, 1AST130 |  | 76d |
| 1AST150 |  | Install Vapor Barrier - B1A | 1d | 2021-07-21 | 2021-07-21 | 1AST120, 1AST140 |  | 76d |
| 1AST160 |  | Slab Rebar - B1A | 2d | 2021-07-22 | 2021-07-23 | 1AST150 |  | 76d |
| 1AST170 |  | Place Concrete Slab - B1A | 1d | 2021-07-26 | 2021-07-26 | 1AST160 |  | 76d |
| 1AST180 |  | Cure SOG - B1A | 7d | 2021-07-27 | 2021-08-02 | 1AST170 |  | 121d |
| 1AST190 |  | Form Equip Pads - B1A | 3d | 2021-08-03 | 2021-08-05 | 1AST180 |  | 73d |
| 1AST200 |  | Rebar Equip Pads - B1A | 2d | 2021-08-06 | 2021-08-09 | 1AST190 |  | 73d |
| 1AST210 |  | Place Equip Pads - B1A | 1d | 2021-08-10 | 2021-08-10 | 1AST200 |  | 73d |
|  | 3 | **Plant Build-Out** |  | 2021-08-03 | 2022-03-02 |  |  |  |
| 1AFI100 |  | Rough Electrical - B1A | 5d | 2021-08-03 | 2021-08-09 | 1AST180 |  | 84d |
| 1AFI110 |  | Power & Lighting Wire - B1A | 5d | 2021-08-10 | 2021-08-16 | 1AFI100 |  | 95d |
| 1AFI170 |  | Finish Electrical - B1A | 3d | 2021-08-17 | 2021-08-20 | 1AFI110, 1AFI110 FF |  | 95d |
| 1AFI150 |  | Set Pumps & Exp Tank - B1A | 3d | 2021-08-27 | 2021-08-31 | 1AST210, 232123-12 |  | 62d |
| 1AFI120 |  | Set Air Handling Unit - B1A | 3d | 2021-09-13 | 2021-09-15 | 1AST210, 237313-12 |  | 53d |
| 1AFI130 |  | Set Chillers - B1A | 3d | 2021-09-13 | 2021-09-15 | 1AST210, 236410-12 |  | 53d |
| 1AFI140 |  | Set Boilers - B1A | 3d | 2021-10-12 | 2021-10-15 | 1AST210, 235200-12 |  | 34d |
| 1AFI180 |  | Plumbing Piping - B1A | 20d | 2021-10-22 | 2021-11-23 | 1AFI120, 1AFI130, 1AFI140, 1AFI150, 1RIE180 |  | 31d |
| 1AFI160 |  | Install VFDs - B1A | 5d | 2021-12-02 | 2021-12-09 | 1AFI150, 1AFI140, 1AFI130, 1AFI120, 262923-12 |  | 30d |
| 1AFI190 |  | Hydronic Piping - B1A | 20d | 2021-12-20 | 2022-01-26 | 1AFI120, 1AFI130, 1AFI140, 1AFI150, 1RIE270, 236426-12, 1AST110 |  | 2d |
| 1AFI200 |  | Elec Connect to Mec Unts - B1A | 5d | 2022-01-28 | 2022-02-04 | 1AFI160, 1AFI110, 1AFI180, 1AFI190, 1AFI170 |  | 5d |
| 1AFI210 |  | Insulate Hydronic Piping - B1A | 8d | 2022-01-28 | 2022-02-10 | 1AFI190 |  | 2d |
| 1AFI220 |  | Install Controls - B1A | 5d | 2022-01-28 | 2022-02-04 | 1AFI190 |  | 5d |
| 1AFI230 |  | Install Light Fixtures - B1A | 5d | 2022-02-24 | 2022-03-02 | 1AFI110, 1AFI180, 1FIE880 SS, 265400-12, 265553-12, 265553-90, 265100-90 |  | 78d |
|  | 12 | **Building 3 Water Well Pumphouse** |  | 2021-02-22 | 2022-04-11 |  |  |  |
|  | 1 | **Foundations & Slab** |  | 2021-02-22 | 2021-07-22 |  |  |  |
| 3FN200 |  | Underslab Shallow Elec - B3 | 5d | 2021-02-22 A | 2021-03-03 A | 3FN190 | 100% |  |
| 3FN100 |  | Dig Ftgs & GBs - B3 & Tanks | 2d | 2021-02-25 A | 2021-07-02 | 1SGA150 | 75% | 2d |
| 3FN120 |  | Set Anchor Bolts - B3 & Tanks | 1d | 2021-03-09 A | 2021-07-07 | 3FN110 | 75% | 61d |
| 3FN110 |  | Spread Ftg Rebar - B3 & Tanks | 2d | 2021-03-17 A | 2021-07-06 | 3FN100 | 75% | 61d |
| 3FN130 |  | Place Spread Ftgs - B3 & Tanks | 1d | 2021-03-17 A | 2021-07-08 | 3FN120 | 75% | 61d |
| 3FN140 |  | Form Grade Beams - B3 & Tanks | 3d | 2021-04-12 A | 2021-07-09 | 3FN100, 3FN130 | 75% | 61d |
| 3FN150 |  | Grade Beam Rebar - B3 & Tanks | 3d | 2021-04-13 A | 2021-07-09 | 3FN140 SS+3d, 3FN140 FF, 3FN130 | 75% | 61d |
| 3FN160 |  | Place Grade Beams - B3 & Tanks | 1d | 2021-04-19 A | 2021-07-12 | 3FN150 | 75% | 61d |
| 3FN170 |  | Cure Grade Beams - B3 & Tanks | 3d | 2021-04-19 A | 2021-07-13 | 3FN160 | 75% | 93d |
| 3FN190 |  | Grade Pad/Remove Spoils - B3 | 2d | 2021-04-23 A | 2021-04-23 A | 3FN180 | 100% |  |
| 3FN180 |  | Strip Grade Beams - B3 & Tanks | 1d | 2021-04-26 A | 2021-07-15 | 3FN170 | 75% | 60d |
| 3FN210 |  | Set 6" Base - B3 | 2d | 2021-04-27 A | 2021-04-28 A | 3FN200 | 100% |  |

| ID | WBS | Task | Duration | Start | Finish | Predecessors | Complete | Total float |
| --- | --- | --- | --- | --- | --- | --- | --- | --- |
| 3FN220 |  | Vapor Barrier - B3 | 1d | 2021-04-28 A | 2021-04-28 A | 3FN200, 3FN210 | 100% |  |
| 3FN230 |  | Slab Rebar - B3 | 2d | 2021-04-29 A | 2021-04-30 A | 3FN220 | 100% |  |
| 3FN240 |  | Place Concrete Slab - B3 | 1d | 2021-05-10 A | 2021-05-10 A | 3FN230 | 100% |  |
| 3FN250 |  | Cure Concrete Slab - B3 | 7d | 2021-05-10 A | 2021-05-14 A | 3FN240 | 100% |  |
| 3FN260 |  | Form Equip Pads - B3 | 2d | 2021-07-16 | 2021-07-19 | 3FN250 |  | 60d |
| 3FN270 |  | Rebar Equip Pads - B3 | 2d | 2021-07-20 | 2021-07-21 | 3FN260 |  | 60d |
| 3FN280 |  | Place Equip Pads - B3 | 1d | 2021-07-22 | 2021-07-22 | 3FN270 |  | 60d |
|  | 2 | **Structure & Exterior** |  | 2021-06-02 | 2022-04-11 |  |  |  |
| 3ST100 |  | Unload/Shakeout Mtl Bldg - B3 | 2d | 2021-06-02 A | 2021-06-04 A | 1STE100 | 100% |  |
| 3ST140 |  | Metal Panels/Air Barrier - B3 | 5d | 2021-06-02 A | 2021-10-26 | 3ST120, 3ST130 | 45% | 9d |
| 3ST150 |  | Trim, Gutters, Downspouts - B3 | 5d | 2021-06-02 A | 2021-11-03 | 3ST140 | 45% | 136d |
| 3ST120 |  | Erect Metal Bldg Struct - B3 | 5d | 2021-06-07 A | 2021-06-18 A | 3FN250, 1AST130, 3FN280, 1STE180, 3ST100 | 100% |  |
| 3ST130 |  | CMU Wall - B3 | 5d | 2021-10-11 | 2021-10-18 | 3ST120 |  | 9d |
| 3ST160 |  | Light Pole Bases - B3 | 3d | 2021-10-27 | 2021-10-29 | 3ST140, SIT2000 |  | 82d |
| 3ST110 |  | Set Water Tanks - B3 | 5d | 2021-11-09 | 2021-11-17 | 3FN180, 331615-12, PREP1360, 264214-02 |  | 32d |
| 3ST180 |  | FRP Door Frames - B3 | 1d | 2021-11-23 | 2021-11-23 | 3FI180, 082200-21 |  | 120d |
| 3ST190 |  | FRP Doors - B3 | 2d | 2021-11-29 | 2021-11-30 | 3ST180 |  | 120d |
| 3ST170 |  | Install Louvers - B3 | 5d | 2021-12-02 | 2021-12-09 | 3FI180, 089100-21 |  | 117d |
| 3ST200 |  | Door Hardware - B3 | 2d | 2021-12-02 | 2021-12-03 | 3ST190 |  | 120d |
| 3ST220 |  | Set Well Equip - Existing Well | 5d | 2022-01-04 | 2022-01-10 | 3ST110, 3FI250, PREP1780, PRE-1050 |  | 11d |
| 3ST210 |  | Light Poles - B3 | 2d | 2022-01-17 | 2022-01-19 | 3ST160, 265600-12, PREP1680, SIT2280 |  | 43d |
| 3ST230 |  | Connect Site Water - B3 | 5d | 2022-01-19 | 2022-01-25 | 3ST220, 3FI260, 3FI290, 3FI250 |  | 78d |
| 3ST240 |  | Fine Grade - B3 | 5d | 2022-01-26 | 2022-02-02 | 3ST230, EL1200, 3FI260, 3FI290, 3FI250 |  | 78d |
| 3ST250 |  | Concrete Paving - B3 | 5d | 2022-02-04 | 2022-02-11 | 3ST240 |  | 78d |
| 3ST260 |  | Fencing & Gates - B3 | 5d | 2022-02-14 | 2022-02-22 | 3ST240, PREP1800, 3ST250 |  | 78d |
| 3ST280 |  | Disinf/Flush Water Tanks - B3 | 5d | 2022-02-14 | 2022-02-22 | PM1200, 3ST230 |  | 68d |
| 3ST270 |  | Aggregate Base - B3 | 5d | 2022-04-05 | 2022-04-11 | 3ST260, 3ST160, PREP2080, CRR1050, 3ST240, 3ST150 |  | 52d |
|  | 3 | **Interior** |  | 2021-10-27 | 2022-03-23 |  |  |  |
| 3FI100 |  | Plumbing Rough In - B3 | 5d | 2021-10-27 | 2021-11-02 | 3ST140 |  | 13d |
| 3FI110 |  | Electrical Rough In - B3 | 8d | 2021-10-27 | 2021-11-05 | 3ST140 |  | 10d |
| 3FI120 |  | Int Fire Suppression - B3 | 5d | 2021-10-27 | 2021-11-02 | 3ST140, 3ST140 FF |  | 23d |
| 3FI130 |  | Fire Alarm Rough In - B3 | 8d | 2021-10-27 | 2021-11-05 | 3ST140 |  | 10d |
| 3FI140 |  | Security Rough In - B3 | 8d | 2021-10-27 | 2021-11-05 | 3ST140 |  | 10d |
| 3FI150 |  | Interior Insulation - B3 | 2d | 2021-11-08 | 2021-11-09 | 3FI100, 3FI110, 3FI130, 3FI140 |  | 10d |
| 3FI160 |  | Pull Fire Alarm Wiring - B3 | 5d | 2021-11-08 | 2021-11-15 | 3FI130 |  | 48d |
| 3FI170 |  | Pull Security Cable - B3 | 5d | 2021-11-08 | 2021-11-15 | 3FI140, CRS1180 |  | 114d |
| 3FI180 |  | Interior Liner Panels - B3 | 8d | 2021-11-10 | 2021-11-22 | 3FI150 |  | 10d |
| 3FI190 |  | HVAC System - B3 | 10d | 2021-11-23 | 2021-12-08 | 3FI180, 3FI120 |  | 10d |
| 3FI200 |  | Transformers & Panels - B3 | 5d | 2021-11-23 | 2021-12-01 | 3FI180, PREP1600 |  | 33d |
| 3FI210 |  | Security System - B3 | 5d | 2021-11-23 | 2021-12-01 | 3FI180, 3FI170 |  | 109d |
| 3FI220 |  | Install Fire Pump - B3 | 5d | 2021-11-24 | 2021-12-02 | 213000-12, PREP1740, 3FI180 |  | 10d |
| 3FI230 |  | Power & Lighting Wire - B3 | 5d | 2021-12-02 | 2021-12-08 | 3FI110, 3FI200 |  | 33d |
| 3FI240 |  | Pull Feeders - B3 | 5d | 2021-12-02 | 2021-12-08 | 3FI200, EL1040, EL1140, CRS1180 |  | 33d |
| 3FI250 |  | Booster System w/ Pumps - B3 | 20d | 2021-12-03 | 2022-01-03 | 3FI220 |  | 10d |
| 3FI260 |  | Water Softener Equip - B3 | 20d | 2021-12-03 | 2022-01-03 | 3FI220 |  | 20d |
| 3FI280 |  | Makeup Elec Panels - B3 | 5d | 2021-12-09 | 2021-12-15 | 3FI240, 3FI230, 3FI160 |  | 33d |
| 3FI270 |  | Light Fixtures - B3 | 5d | 2021-12-16 | 2021-12-22 | 3FI190, 3FI230, 265400-12, 265553-12, 3FI160, PREP1680, 265553-90, 265100-90 |  | 125d |
| 3FI290 |  | Water Treatment Equip - B3 | 20d | 2021-12-17 | 2022-01-17 | 3FI220, PREP1760, 432120-12, 3FI250 SS+10d |  | 10d |
| 3FI300 |  | Fire Alarm System - B3 | 10d | 2022-01-18 | 2022-01-31 | 3FI260, 3FI290, 3FI250 |  | 71d |
| 3FI310 |  | Install Controls - B3 | 5d | 2022-01-18 | 2022-01-24 | 3FI190, 3FI250, 3FI290, 3FI260 |  | 15d |
| 3FI320 |  | Elec Connections to Equip - B3 | 10d | 2022-01-18 | 2022-01-31 | 3FI260, 3FI290, 3FI250 |  | 10d |
| 3FI330 |  | Plumbing Insulation - B3 | 5d | 2022-01-18 | 2022-01-24 | 3FI260, 3FI290, 3FI250 |  | 104d |
| 3FI340 |  | Electrical Finish & Trim - B3 | 5d | 2022-02-01 | 2022-02-07 | 3FI320 |  | 94d |
| 3FI350 |  | Final Clean - B3 | 5d | 2022-02-08 | 2022-02-14 | 3FI340, 3FI270, 3ST170, 3ST200, 3FI330 |  | 94d |
| 3FI370 |  | Start Up/Flush Fire Pumps - B3 | 2d | 2022-02-14 | 2022-02-15 | PM1200, 3FI220 |  | 56d |
| 3FI360 |  | Flush Boost Pumps/Piping - B3 | 5d | 2022-02-16 | 2022-02-25 | PM1200, 3ST230, 3FI370 |  | 66d |
| 3FI380 |  | Prelim Test - Fire Pump | 5d | 2022-02-16 | 2022-02-23 | 3FI370 |  | 56d |
| 3FI390 |  | GOV Rev Fire Pump Pre Test Rpt | 7d | 2022-02-24 | 2022-03-02 | 3FI380 |  | 85d |
| 3FI410 |  | Schedule FAT w/ Gov -Fire Pump | 14d | 2022-02-24 | 2022-03-09 | 3FI380 |  | 78d |
| 3FI420 |  | Perform FAT - Fire Pumps | 5d | 2022-03-10 | 2022-03-16 | 3FI390, 3FI410 |  | 56d |
| 3FI430 |  | GOV Rev FAT Report - Fire Pump | 7d | 2022-03-17 | 2022-03-23 | 3FI420 |  | 81d |
|  | 4 | **Building 4 Vehicle Wash Facility** |  | 2021-01-06 | 2022-05-05 |  |  |  |
|  | 1 | **Foundations** |  | 2021-01-06 | 2021-11-08 |  |  |  |
| 4FN100 |  | Dig/Form Deep Ftg/Pit Slab -B4 | 6d | 2021-01-06 A | 2021-07-09 | 3FN100 | 40% | 2d |
| 4FN120 |  | Deep Ftg & Pit Slab Rebar - B4 | 2d | 2021-07-12 | 2021-07-13 | 4FN100 |  | 2d |
| 4FN140 |  | Place Deep Ftg & Pit Slab - B4 | 1d | 2021-07-15 | 2021-07-15 | 4FN120 |  | 2d |
| 4FN160 |  | Form 1 Side CIP Walls - B4 | 5d | 2021-07-16 | 2021-07-22 | 4FN140 |  | 2d |
| 4FN180 |  | CIP Wall Rebar - B4 | 5d | 2021-07-20 | 2021-07-26 | 4FN160 SS+2d |  | 2d |
| 4FN200 |  | Close CIP Wall Forms - B4 | 5d | 2021-07-27 | 2021-08-02 | 4FN180, 4FN160 |  | 2d |
| 4FN220 |  | Place CIP Wall - B4 | 1d | 2021-08-03 | 2021-08-03 | 4FN200 |  | 2d |

| ID | WBS | Task | Duration | Start | Finish | Predecessors | Total float |
| --- | --- | --- | --- | --- | --- | --- | --- |
| 4FN240 |  | Cure CIP Walls - B4 | 7d | 2021-08-04 | 2021-08-10 | 4FN220 | 2d |
| 4FN260 |  | Strip CIP Walls - B4 | 4d | 2021-08-11 | 2021-08-16 | 4FN240 | 2d |
| 4FN280 |  | Backfill CIP Walls - B4 | 4d | 2021-08-17 | 2021-08-23 | 4FN260 | 2d |
| 4FN300 |  | UG Plumbing - B4 | 7d | 2021-08-24 | 2021-09-01 | 4FN280 | 2d |
| 4FN320 |  | Deep Elec/Comm in Pad - B4 | 5d | 2021-09-02 | 2021-09-10 | 4FN300 | 2d |
| 4FN340 |  | Dig Shallow Ftgs & GBs - B4 | 3d | 2021-09-13 | 2021-09-15 | 4FN320 | 2d |
| 4FN360 |  | Form Shallow Ftgs & GBs - B4 | 4d | 2021-09-16 | 2021-09-21 | 4FN340 | 2d |
| 4FN380 |  | Shallow Ftg Rebar - B4 | 4d | 2021-09-23 | 2021-09-28 | 4FN360 | 2d |
| 4FN400 |  | Set Anchor Bolts - B4 | 1d | 2021-09-29 | 2021-09-29 | 4FN380 | 2d |
| 4FN420 |  | Place Shallow Ftg & GBs - B4 | 1d | 2021-09-30 | 2021-09-30 | 4FN400, 4FN360 | 2d |
| 4FN440 |  | Cure Grade Beams - B4 | 3d | 2021-10-01 | 2021-10-03 | 4FN360 SS, 4FN360, 4FN420 | 4d |
| 4FN460 |  | Install Bollards - B4 | 3d | 2021-10-01 | 2021-10-05 | 4FN420 | 17d |
| 4FN480 |  | Strip Grade Beams - B4 | 3d | 2021-10-04 | 2021-10-07 | 4FN440 | 3d |
| 4FN500 |  | Underslab Shallow Plumbing -B4 | 5d | 2021-10-08 | 2021-10-15 | 4FN480 | 4d |
| 4FN520 |  | Underslab Shallow Elec - B4 | 5d | 2021-10-08 | 2021-10-15 | 4FN480 | 4d |
| 4FN540 |  | Form & Pour Trench Drain - B4 | 6d | 2021-10-08 | 2021-10-18 | 4FN480 | 3d |
| 4FN560 |  | UG Elec to Vacuum/Air Equip | 5d | 2021-10-18 | 2021-10-25 | 4FN520 | 118d |
| 4FN580 |  | Set 6" Base - B4 | 2d | 2021-10-20 | 2021-10-21 | 4FN520, 4FN540, 4FN500 | 3d |
| 4FN600 |  | Install Vapor Barrier - B4 | 2d | 2021-10-22 | 2021-10-25 | 4FN580 | 3d |
| 4FN620 |  | Slab Rebar - B4 | 3d | 2021-10-26 | 2021-10-28 | 4FN600 | 3d |
| 4FN640 |  | Place Concrete Slab - B4 | 1d | 2021-10-29 | 2021-10-29 | 4FN620, 4FN460 | 3d |
| 4FN660 |  | Cure Concrete Slab - B4 | 7d | 2021-10-30 | 2021-11-05 | 4FN640 | 6d |
| 4FN680 |  | Steel Curb Form Islands - B4 | 2d | 2021-11-01 | 2021-11-03 | 4FN640 | 112d |
| 4FN700 |  | Rebar Islands for Vacuum - B4 | 2d | 2021-11-04 | 2021-11-05 | 4FN560, 4FN680 | 112d |
| 4FN720 |  | Place Islands for Vacuum - B4 | 1d | 2021-11-08 | 2021-11-08 | 4FN700 | 112d |
|  | 2 | **Structure** |  | 2021-10-01 | 2022-05-05 |  |  |
| 4ST100 |  | Unload/Shakeout Canopy - B4,4A | 3d | 2021-10-01 | 2021-10-05 | 130480-12, 4FN420 | 22d |
| 4ST120 |  | Erect Canopy Columns - B4,4A | 1d | 2021-11-08 | 2021-11-08 | 4FN660, 3ST120, 130480-12, 4ST100 | 3d |
| 4ST140 |  | Erect CMU Walls - B4 | 15d | 2021-11-09 | 2021-12-08 | 4ST120, 4ST160 FF | 3d |
| 4ST160 |  | Set HM Frame in CMU - B4 | 1d | 2021-11-09 | 2021-11-09 | 4ST120 | 17d |
| 4ST180 |  | Struct Steel at Equip Rm - B4 | 2d | 2021-12-09 | 2021-12-10 | 4ST140 | 3d |
| 4ST200 |  | Canopy Rf Stl/Mtl Deck -B4,4A | 15d | 2021-12-13 | 2022-01-11 | 4ST180 | 3d |
| 4ST220 |  | Canopy Mtl Panels/Facia -B4,4A | 10d | 2022-01-12 | 2022-01-28 | 4ST200 | 3d |
| 4ST240 |  | Mtl Stud Framing Equip Rm - B4 | 3d | 2022-01-12 | 2022-01-17 | 4ST200 | 48d |
| 4ST260 |  | Doors & HW to Equip Rm - B4 | 2d | 2022-01-19 | 2022-01-20 | 4ST240 | 52d |
| 4ST280 |  | Insulation at Equip Rm - B4 | 5d | 2022-01-31 | 2022-02-04 | 4ST240, 4ST220 | 47d |
| 4ST300 |  | HVAC System - B4 | 7d | 2022-01-31 | 2022-02-08 | 4ST220 | 4d |
| 4ST320 |  | Gutter, Dwn Spout, Trim -B4,4A | 8d | 2022-01-31 | 2022-02-11 | 4ST220, 4ST240 | 62d |
| 4ST340 |  | Elec Rough In - B4 & Canopy | 15d | 2022-01-31 | 2022-02-25 | 4ST220 | 32d |
| 4ST360 |  | Rough In Plumbing - B4 | 10d | 2022-01-31 | 2022-02-15 | 4ST220 | 35d |
| 4ST380 |  | Lightning Protection - B4,4A | 5d | 2022-02-14 | 2022-02-22 | 4ST320, EL1380 | 62d |
| 4ST400 |  | Wash Equip in Equip Rm - B4 | 15d | 2022-02-16 | 2022-03-09 | 4ST360, 4ST280, 111126-09 | 40d |
| 4ST420 |  | Power & Lighting Wire - B4,4A | 5d | 2022-02-28 | 2022-03-04 | 4ST340 | 50d |
| 4ST440 |  | Painting - B4 | 10d | 2022-02-28 | 2022-03-14 | 4ST340, 4ST260 | 32d |
| 4ST460 |  | Pull Security Cable - B4 | 5d | 2022-02-28 | 2022-03-04 | 4ST340 | 37d |
| 4ST480 |  | Light Fixtures - B4 & Canopy | 5d | 2022-03-07 | 2022-03-14 | 4ST420 | 50d |
| 4ST500 |  | Install Trench Grating - B4 | 2d | 2022-03-10 | 2022-03-11 | 4ST400 | 46d |
| 4ST520 |  | Elec Connections Equip Rm - B4 | 5d | 2022-03-10 | 2022-03-16 | 4ST420, 4ST400 | 51d |
| 4ST540 |  | Wash Equip at Wash Bays - B4 | 10d | 2022-03-15 | 2022-03-29 | 4ST400, 4ST440 | 35d |
| 4ST560 |  | Security Cameras - B4 & Canopy | 5d | 2022-03-15 | 2022-03-21 | 4ST460, 4ST440, 281005-12 | 32d |
| 4ST570 |  | Install Controls - B4 | 3d | 2022-03-17 | 2022-03-21 | 4ST520 | 65d |
| 4ST580 |  | Seal Floor - B4 | 5d | 2022-03-30 | 2022-04-05 | 4ST540, 4ST500 | 35d |
| 4ST600 |  | Vacuum Cleaner/Air Units - B4 | 5d | 2022-03-30 | 2022-04-05 | 4ST540, 4FN720 | 35d |
| 4ST620 |  | Flush & Adjust Wash Equip | 5d | 2022-04-06 | 2022-04-12 | 4ST600, PM1200, 4ST580, 4ST520, 4ST480, 4ST380, 4ST300 | 35d |
| 4ST640 |  | SUBM Cert of Comp - Wash Equip | 5d | 2022-04-13 | 2022-04-19 | 4ST620 | 37d |
| 4ST660 |  | GOV REV Cert of Comp -Wash Eqp | 7d | 2022-04-20 | 2022-04-26 | 4ST640 | 54d |
| 4ST680 |  | Start-up, Test, Cx Wash Equip | 2d | 2022-04-27 | 2022-04-28 | 4ST600, PM1200, 4ST660 | 37d |
| 4ST700 |  | Final Clean - B4 | 5d | 2022-04-29 | 2022-05-05 | 4ST680, 4ST570 | 35d |
|  | 5 | **Building 4A Vehicle Fueling Facility** |  | 2021-09-13 | 2022-05-24 |  |  |
| 4A1020 |  | UG Electrical - B4A | 8d | 2021-09-13 | 2021-09-23 | 4FN280, 4FN320 | 82d |
| 4A1000 |  | UG Fuel Piping to Generator | 10d | 2021-11-09 | 2021-11-29 | 335800-02, GRD1100, 335210-12 | 44d |
| 4A1040 |  | Dig Fuel Tank Ftgs - B4A | 2d | 2021-11-30 | 2021-12-02 | 4A1020, 4A1000 | 44d |
| 4A1060 |  | Form Fuel Tank Ftgs -B4A | 3d | 2021-12-03 | 2021-12-08 | 4A1040 | 44d |
| 4A1080 |  | Rebar Fuel Tank Ftgs - B4A | 3d | 2021-12-09 | 2021-12-13 | 4A1060 | 44d |
| 4A1100 |  | Place Fuel Tank Ftgs - B4A | 1d | 2021-12-14 | 2021-12-14 | 4A1080 | 44d |
| 4A1120 |  | Form & Pour Fuel Tank Pads | 5d | 2021-12-15 | 2021-12-21 | 4A1100, 4A1140 FF | 56d |
| 4A1140 |  | Rebar Fuel Tank Pads | 3d | 2021-12-15 | 2021-12-17 | 4A1100 | 58d |
| 4A1160 |  | Install Bollards - B4A | 5d | 2022-01-31 | 2022-02-07 | 4A1100, 4ST220, 4A1120 | 25d |
| 4A1180 |  | Grade/Base Conc Paving - B4A | 4d | 2022-02-09 | 2022-02-14 | 4A1160 | 25d |
| 4A1200 |  | Form Concrete Paving - B4A | 4d | 2022-02-15 | 2022-02-22 | 4A1180 | 25d |

| ID | WBS | Task | Duration | Start | Finish | Predecessors | Complete | Total float |
| --- | --- | --- | --- | --- | --- | --- | --- | --- |
| 4A1220 |  | Rebar Concrete Paving - B4A | 3d | 2022-02-24 | 2022-02-28 | 4A1200 |  | 25d |
| 4A1240 |  | Place Concrete Paving - B4A | 1d | 2022-03-01 | 2022-03-01 | 4A1220 |  | 25d |
| 4A1260 |  | Cure Concrete Paving - B4A | 7d | 2022-03-02 | 2022-03-08 | 4A1240 |  | 37d |
| 4A1280 |  | Transformer & Panel - B4A | 5d | 2022-03-10 | 2022-03-16 | 4A1260 |  | 44d |
| 4A1320 |  | Fuel Tanks & Equip - B4A | 35d | 2022-03-10 | 2022-04-29 | 335210-12, 335610-12, 335800-02, 4A1260 |  | 24d |
| 4A1300 |  | Pull Feeders - B4A | 5d | 2022-03-17 | 2022-03-24 | 4A1280 |  | 44d |
| 4A1340 |  | Makeup Electrical Panel - B4A | 5d | 2022-03-25 | 2022-03-31 | 4A1300 |  | 44d |
| 4A1360 |  | Test, Adjust, Flush Fuel Equip | 3d | 2022-05-02 | 2022-05-04 | 4A1340, 4A1320, PM1200 |  | 24d |
| 4A1380 |  | SUBM Cert of Comp - Fuel Equip | 1d | 2022-05-05 | 2022-05-05 | 4A1360 |  | 25d |
| 4A1400 |  | GOV Rev Cert of Comp -Fuel Eqp | 7d | 2022-05-06 | 2022-05-12 | 4A1380 |  | 38d |
| 4A1420 |  | Fill Fuel Tanks - B4A | 1d | 2022-05-06 | 2022-05-06 | 4A1380 |  | 29d |
| 4A1440 |  | Start-up, Test, Cx Fuel Equip | 2d | 2022-05-13 | 2022-05-16 | 4A1400, 4A1420 |  | 25d |
| 4A1460 |  | Final Clean - B4A | 5d | 2022-05-17 | 2022-05-24 | 4A1440 |  | 23d |
|  | 7 | **Building 5 Canine Kennel Facility** |  | 2021-06-08 | 2022-03-18 |  |  |  |
|  | 1 | **Foundations** |  | 2021-06-08 | 2021-11-25 |  |  |  |
| 5FN100 |  | UG Plumbing - B5 | 5d | 2021-06-08 A | 2021-09-02 | 4FN300 | 95% | 31d |
| 5FN120 |  | Dig Ftgs & GBs - B5 | 3d | 2021-06-18 A | 2021-06-21 A | 5FN100, 4FN420 | 100% |  |
| 5FN140 |  | Spread Ftg Rebar - B5 | 2d | 2021-10-01 | 2021-10-04 | 5FN120 |  | 14d |
| 5FN160 |  | Set Anchor Bolts - B5 | 1d | 2021-10-05 | 2021-10-05 | 5FN140 |  | 14d |
| 5FN180 |  | Place Spread Ftgs - B5 | 1d | 2021-10-07 | 2021-10-07 | 5FN160 |  | 14d |
| 5FN200 |  | Form Grade Beams - B5 | 3d | 2021-10-08 | 2021-10-12 | 5FN120, 5FN180 |  | 14d |
| 5FN220 |  | Grade Beam Rebar - B5 | 3d | 2021-10-13 | 2021-10-18 | 5FN200 SS+3d, 5FN200 FF, 5FN180 |  | 14d |
| 5FN240 |  | Place Grade Beams - B5 | 1d | 2021-10-20 | 2021-10-20 | 5FN220 |  | 14d |
| 5FN260 |  | Cure Grade Beams - B5 | 3d | 2021-10-21 | 2021-10-23 | 5FN240 |  | 22d |
| 5FN280 |  | Strip Grade Beams - B5 | 2d | 2021-10-25 | 2021-10-26 | 5FN260 |  | 13d |
| 5FN300 |  | Grade Pad/Remove Spoils - B5 | 2d | 2021-10-27 | 2021-10-28 | 5FN280 |  | 13d |
| 5FN320 |  | Underslab Shallow Elec - B5 | 5d | 2021-10-29 | 2021-11-05 | 5FN300 |  | 13d |
| 5FN340 |  | Set 6" Base - B5 | 2d | 2021-11-08 | 2021-11-09 | 5FN320 |  | 13d |
| 5FN360 |  | Vapor Barrier - B5 | 1d | 2021-11-10 | 2021-11-10 | 5FN320, 5FN340 |  | 14d |
| 5FN380 |  | Set Trench Drains - B5 | 4d | 2021-11-10 | 2021-11-17 | 5FN340 |  | 13d |
| 5FN400 |  | Slab Rebar - B5 | 2d | 2021-11-12 | 2021-11-15 | 5FN360 |  | 14d |
| 5FN420 |  | Place Concrete Slab - B5 | 1d | 2021-11-18 | 2021-11-18 | 5FN400, 5FN380 |  | 13d |
| 5FN440 |  | Cure Concrete Slab - B5 | 7d | 2021-11-19 | 2021-11-25 | 5FN420 |  | 26d |
|  | 2 | **Structure** |  | 2021-10-21 | 2022-03-18 |  |  |  |
| 5ST100 |  | Unload/Shakout Metal Bldg - B5 | 1d | 2021-10-21 | 2021-10-21 | 5FN240, 133419-59 |  | 33d |
| 5ST120 |  | Erect Metal Bldg Struct - B5 | 5d | 2021-11-29 | 2021-12-06 | 5FN440, 5ST100 |  | 13d |
| 5ST140 |  | CMU Walls - B5 | 10d | 2021-12-08 | 2021-12-27 | 5ST120 |  | 13d |
| 5ST160 |  | Ext Metal Panels - B5 | 5d | 2021-12-28 | 2022-01-06 | 5ST120, 5ST140 |  | 13d |
| 5ST180 |  | Trim, Gutter, Dwn Spouts - B5 | 5d | 2022-01-07 | 2022-01-14 | 5ST160 |  | 13d |
| 5ST200 |  | Spray Insul/Air Barrier - B5 | 3d | 2022-01-17 | 2022-01-19 | 5ST180 |  | 16d |
| 5ST220 |  | Transformer & Elec Panel - B5 | 5d | 2022-01-17 | 2022-01-24 | 5ST180 |  | 20d |
| 5ST240 |  | Metal Stud Framing - B5 | 5d | 2022-01-20 | 2022-01-26 | 5ST200 |  | 16d |
| 5ST260 |  | Plumbing Rough In - B5 | 7d | 2022-01-27 | 2022-02-04 | 5ST200, 5ST240 |  | 79d |
| 5ST280 |  | Electrical Rough In - B5 | 7d | 2022-01-27 | 2022-02-04 | 5ST200, 5ST240 |  | 16d |
| 5ST300 |  | Door & Hardware - B5 | 2d | 2022-01-27 | 2022-01-28 | 5ST240 |  | 96d |
| 5ST320 |  | Hang, Tape & Finish Gyp - B5 | 7d | 2022-02-07 | 2022-02-15 | 5ST280, 5ST260 |  | 79d |
| 5ST340 |  | Power & Lighting Wire - B5 | 5d | 2022-02-07 | 2022-02-11 | 5ST280 |  | 16d |
| 5ST360 |  | Pull Feeders - B5 | 5d | 2022-02-07 | 2022-02-11 | 5ST280, 5ST220 |  | 16d |
| 5ST380 |  | Make-up Elec Panel - B5 | 5d | 2022-02-14 | 2022-02-18 | 5ST360, 5ST340 |  | 16d |
| 5ST400 |  | Painting - B5 | 5d | 2022-02-16 | 2022-02-23 | 5ST320 |  | 79d |
| 5ST420 |  | Casework & Countertops - B5 | 5d | 2022-02-24 | 2022-03-02 | 5ST400, 5ST300 |  | 79d |
| 5ST440 |  | Chain Link Enclosure/Gates -B5 | 7d | 2022-02-24 | 2022-03-04 | 5ST400, 131931-09 |  | 86d |
| 5ST460 |  | Guillotine Doors - B5 | 5d | 2022-02-24 | 2022-03-02 | 5ST400, 131931-09 |  | 88d |
| 5ST480 |  | Split System HVAC Units - B5 | 4d | 2022-03-03 | 2022-03-08 | 5ST420 |  | 79d |
| 5ST500 |  | Plumbing Fixtures - B5 | 3d | 2022-03-03 | 2022-03-07 | 5ST420 |  | 82d |
| 5ST520 |  | Elec Finish, Trim, Fixture -B5 | 5d | 2022-03-03 | 2022-03-09 | 5ST420, 5ST340, 5ST380 |  | 80d |
| 5ST540 |  | Big Fans - B5 | 2d | 2022-03-09 | 2022-03-10 | 5ST480 |  | 79d |
| 5ST560 |  | Sealed Concrete Flooring - B5 | 3d | 2022-03-11 | 2022-03-15 | 5ST540, 5ST520, 5ST500, SIT2480 |  | 79d |
| 5ST570 |  | Install Controls - B5 | 3d | 2022-03-11 | 2022-03-15 | 5ST540 |  | 79d |
| 5ST580 |  | Final Clean Bldg 5 | 3d | 2022-03-16 | 2022-03-18 | 5ST560, 5ST440, 5ST460, 5ST570 |  | 79d |
|  | 9 | **Second Water Well** |  | 2021-08-02 | 2021-08-27 |  |  |  |
| WELL100 |  | Drill Well/Set Equip -2nd Well | 5d | 2021-08-02 | 2021-08-06 | PRE-1050, PM1090 |  | 193d |
| WELL200 |  | House Keeping Pad - 2nd Well | 5d | 2021-08-09 | 2021-08-13 | WELL100 |  | 193d |
| WELL400 |  | UG Water/Connect - 2nd Well | 10d | 2021-08-09 | 2021-08-20 | WELL100 |  | 198d |
| WELL300 |  | UG Elec/Connect - 2nd Well | 10d | 2021-08-16 | 2021-08-27 | WELL200 |  | 193d |
|  | 8 | **Site Improvements** |  | 2021-02-03 | 2022-06-23 |  |  |  |
|  | 4 | **Upper Parking Lot (Light Duty Paving)** |  | 2021-02-03 | 2022-04-01 |  |  |  |
| SIT1000 |  | UG Light/ESS Conduit -Upper PL | 10d | 2021-02-03 A | 2021-09-21 | SD1160, GRD1180, EL1320, EL1340 | 95% | 43d |
| SIT1020 |  | Curb Grade - Upper Parking | 5d | 2021-09-23 | 2021-09-29 | SD1160, GRD1240, SD1200, SIT1000, EL1240, EL1260, EL1100, EL1280, EL1300, EL1120 |  | 46d |
| SIT1040 |  | Light Pole Bases - Upper PL | 5d | 2021-09-30 | 2021-10-07 | SIT1000, SIT1020 |  | 46d |

| ID | WBS | Task | Duration | Start | Finish | Predecessors | Complete | Total float |
| --- | --- | --- | --- | --- | --- | --- | --- | --- |
| SIT1060 |  | Form/Pour C & G - Upper PL | 15d | 2021-11-03 | 2021-11-30 | SIT1020, SIT1000, SLP1160, SIT1040, SIT1070 FF+1d |  | 31d |
| SIT1070 |  | Rebar Curb & Gutter - Upper PL | 5d | 2021-11-03 | 2021-11-09 | SLP1160 |  | 40d |
| SIT1100 |  | Fine Grade & Base - Upper PL | 10d | 2021-12-02 | 2021-12-17 | SIT1060, 321123-02 |  | 102d |
| SIT1120 |  | AC Paving - Upper Parking | 5d | 2021-12-20 | 2021-12-29 | SIT1100, 321216-02, PREP1460 |  | 102d |
| SIT1110 |  | Diversion Channel - Upper PL | 10d | 2022-02-25 | 2022-03-11 | SIT1060, SIT2320 |  | 62d |
| SIT1160 |  | Stone Rip Rap - Upper PL | 10d | 2022-03-14 | 2022-03-28 | SIT1120, PREP2020, SIT1110 |  | 62d |
| SIT1180 |  | Stairs/Handrail - Parking Lot | 5d | 2022-03-28 | 2022-04-01 | SIT1120, 055100-09, 055200-09, SIT2580 |  | 58d |
|  | 2 | **Lower Parking & Access Roads (Heavy Duty Paving)** |  | 2021-02-08 | 2022-06-23 |  |  |  |
| SIT2000 |  | UG Light/ESS Conduit - Lower | 20d | 2021-02-08 A | 2021-09-24 | SIT1000, 1STE120, 1STA100 | 95% | 42d |
| SIT2020 |  | Curb Grade - Lower PL/Drives | 8d | 2021-10-27 | 2021-11-08 | SIT2000, SS1100, SD1180, WA1100 |  | 23d |
| SIT2040 |  | Dig & Form Monument Sign Ftg | 2d | 2021-11-09 | 2021-11-10 | SIT2020 |  | 125d |
| SIT2060 |  | Light Pole Bases - Lower | 5d | 2021-11-09 | 2021-11-17 | SIT2020 |  | 37d |
| SIT2080 |  | Fine Grade Around Bldgs | 5d | 2021-11-09 | 2021-11-17 | SIT2000, SIT2020, SS1100, EL1220 |  | 117d |
| SIT2100 |  | Form & Pour 6" Curb | 20d | 2021-11-09 | 2021-12-15 | SIT2020 |  | 23d |
| SIT2120 |  | Rebar Monument Sign Ftg | 2d | 2021-11-12 | 2021-11-15 | SIT2040 |  | 125d |
| SIT2140 |  | Place Monument Sign Ftg | 1d | 2021-11-17 | 2021-11-17 | SIT2120 |  | 125d |
| SIT2160 |  | Erect CMU Monument Sign | 5d | 2021-11-18 | 2021-11-29 | SIT2140 |  | 125d |
| SIT2180 |  | Rebar Curb & Gutter - Lower | 10d | 2021-12-02 | 2021-12-17 | SIT1060, SIT2060 |  | 31d |
| SIT2200 |  | Form/Pour C & G - Lower | 10d | 2021-12-17 | 2022-01-07 | SIT2060, SIT1060, SIT2180 FF+1d, SIT2100 |  | 23d |
| SIT2220 |  | Form & Pour Concrete V Gutter | 7d | 2021-12-17 | 2022-01-04 | SIT2100 |  | 26d |
| SIT2240 |  | Grade/Base for AC Pave - Lower | 10d | 2022-01-10 | 2022-01-25 | SIT2200, 321123-02, SIT2220 |  | 23d |
| SIT2260 |  | Install Site Bollards | 5d | 2022-01-10 | 2022-01-17 | SIT2200 |  | 47d |
| SIT2280 |  | Receive/Unload Exterior Lights | 5d | 2022-01-10 | 2022-01-14 | 265600-12, SIT2240 SS |  | 51d |
| SIT2300 |  | Fence Posts - Dumpster/Impound | 7d | 2022-01-11 | 2022-01-21 | SIT2200, 323113-12, 323113-22, PREP1800 |  | 33d |
| SIT2480 |  | Form/Pour Sidewalks & Stairs | 10d | 2022-01-14 | 2022-01-31 | SIT2080, 1ENT270, SIT2200, SIT2500 FF+1d |  | 89d |
| SIT2500 |  | Rebar Sidewalks & Stairs | 5d | 2022-01-14 | 2022-01-21 | SIT2080, 1ENT270, SIT2200 |  | 93d |
| SIT2320 |  | Fence Posts - Perimeter | 18d | 2022-01-24 | 2022-02-24 | SIT2300, SIT2300 FF, 323113-12, 323113-22, SLP1240 |  | 42d |
| SIT2340 |  | Form Conc Paving -E Drive Entr | 5d | 2022-01-26 | 2022-02-02 | SIT2240, 321313-02 |  | 23d |
| SIT2360 |  | Install Site Light Poles | 10d | 2022-01-26 | 2022-02-11 | SIT2240, 265600-12, 3ST210, SIT2280 |  | 39d |
| SIT2380 |  | Trench Drain at East Entrance | 2d | 2022-02-04 | 2022-02-07 | SIT2340 |  | 23d |
| SIT2400 |  | Rebar Conc Paving - E Entrance | 2d | 2022-02-04 | 2022-02-07 | SIT2340 |  | 23d |
| SIT2420 |  | Place Conc Paving - E Entrance | 1d | 2022-02-09 | 2022-02-09 | SIT2400, SIT2380 |  | 23d |
| SIT2440 |  | Form Conc Paving - Site | 7d | 2022-02-10 | 2022-02-22 | SIT2420, SIT2300 |  | 23d |
| SIT2460 |  | Site Security Cams/Pedistals | 15d | 2022-02-14 | 2022-03-10 | SIT2360 |  | 39d |
| SIT2520 |  | Rebar Conc Paving - Site | 4d | 2022-02-24 | 2022-03-01 | SIT2440 |  | 23d |
| SIT2540 |  | Place Conc Paving - Site | 2d | 2022-03-02 | 2022-03-03 | SIT2520, SIT2260 |  | 23d |
| SIT2560 |  | Cure Conc Paving - Site | 7d | 2022-03-04 | 2022-03-10 | SIT2540 |  | 35d |
| SIT2580 |  | AC Paving - Lower PL/Drives | 10d | 2022-03-11 | 2022-03-25 | SIT2560, 321216-02, 4A1000 |  | 23d |
| SIT2600 |  | Chain Link Mesh & Gates | 20d | 2022-03-28 | 2022-04-25 | SIT2580, SIT2320 |  | 23d |
| SIT2620 |  | Flagpoles at Bldg 1 Entrance | 5d | 2022-03-28 | 2022-04-01 | 1ENT270, SIT2480, SIT2580, 103500-09, PREP2160, 1ENT220 |  | 58d |
| SIT2640 |  | Install Crushed Granite | 10d | 2022-04-26 | 2022-05-09 | SIT2600 |  | 23d |
| SIT2660 |  | Pivot Gates & Operators | 10d | 2022-04-26 | 2022-05-09 | SIT2580, SIT2600, 323113-22 |  | 23d |
| SIT2680 |  | Install Guard Rail | 8d | 2022-04-26 | 2022-05-05 | SIT2580, SIT2600 |  | 25d |
| SIT2760 |  | Install Monument Signage | 2d | 2022-05-02 | 2022-05-03 | SIT2160, SIT2580, 1FN200 |  | 36d |
| SIT2780 |  | Monument Plaque (GFCI) | 1d | 2022-05-04 | 2022-05-04 | SIT2160, SIT2580, SIT2760 |  | 36d |
| SIT2700 |  | Barbed-Wire Apron on Fence | 10d | 2022-05-06 | 2022-05-20 | SIT2600, SIT2680 |  | 25d |
| SIT2720 |  | Striping/Parking Bumpers/Signs | 10d | 2022-05-10 | 2022-05-24 | SIT2640, SIT2660, SIT2600, 321613-02, PREP2380 |  | 23d |
| SIT2740 |  | Coord Veg Restoration by Gov | 30d | 2022-05-10 | 2022-06-23 | SIT2640, SD1240, SLP1280 |  | 28d |
|  | 3 | **Helipad** |  | 2021-03-08 | 2022-04-18 |  |  |  |
| HELI100 |  | UG Lighting Conduit - Helipad | 5d | 2021-03-08 A | 2021-09-30 | SIT2000 | 30% | 114d |
| HELI120 |  | Grounding at Helipad | 5d | 2021-04-15 A | 2021-10-07 | HELI100 | 25% | 114d |
| HELI140 |  | Set Base - Helipad | 5d | 2022-01-26 | 2022-02-02 | HELI120, SIT2240 |  | 55d |
| HELI180 |  | Receive Helipad Lights/Vis Nav | 2d | 2022-02-03 | 2022-02-04 | 265421-12, HELI140 |  | 70d |
| HELI160 |  | Form Conc Paving - Helipad | 5d | 2022-02-04 | 2022-02-11 | HELI120, HELI140 |  | 55d |
| HELI200 |  | Rebar Conc Paving - Helipad | 5d | 2022-02-14 | 2022-02-22 | HELI160 |  | 55d |
| HELI220 |  | Light Cans in Conc - Helipad | 5d | 2022-02-24 | 2022-03-02 | HELI200, HELI180 |  | 55d |
| HELI240 |  | Place Conc Paving - Helipad | 1d | 2022-03-03 | 2022-03-03 | HELI220 |  | 55d |
| HELI260 |  | Cure Conc Paving - Helipad | 7d | 2022-03-04 | 2022-03-10 | HELI240 |  | 83d |
| HELI280 |  | Light Cans in AC - Helipad | 5d | 2022-03-04 | 2022-03-11 | HELI240 |  | 57d |
| HELI300 |  | Strip Concrete Forms - Helipad | 3d | 2022-03-11 | 2022-03-15 | HELI260 |  | 55d |
| HELI320 |  | AC Paving - Helipad | 5d | 2022-03-28 | 2022-04-01 | HELI280, HELI300, SIT2580 |  | 48d |
| HELI340 |  | Helipad Light Fixtures/Vis Nav | 5d | 2022-04-04 | 2022-04-08 | HELI320 |  | 48d |
| HELI360 |  | Striping & Signage - Helipad | 5d | 2022-04-11 | 2022-04-18 | HELI340 |  | 48d |
|  | 5 | **Campbell Ranch Road** |  | 2022-03-04 | 2022-04-11 |  |  |  |
| CRR1000 |  | Conc Crossing/Entr Campbell RR | 10d | 2022-03-04 | 2022-03-18 | SIT2540, SIT2540 FF |  | 52d |
| CRR1050 |  | Agg Base Campbell Ranch Rd | 10d | 2022-03-21 | 2022-04-04 | GRD1180, CRR1000, SD1280, PREP2080 |  | 52d |
| CRR1100 |  | Rip Rap at Campbell Ranch Rd | 5d | 2022-04-05 | 2022-04-11 | CRR1050, CRR1050 FF |  | 52d |
|  | 6 | **Closeout / Red Zone** |  | 2021-12-23 | 2022-11-01 |  |  |  |
|  | 7 | **Red Zone** |  | 2022-02-02 | 2022-03-13 |  |  |  |
| RZ1000 |  | Red Zone Meeting | 1d | 2022-02-02 | 2022-02-02 | RZ1200 SS, 019100-72, 019100-51 |  | 3d |

| ID | WBS | Task | Duration | Start | Finish | Predecessors | Total float |
| --- | --- | --- | --- | --- | --- | --- | --- |
| RZ1010 |  | Gov Iss IP Add/Zn Dsc/Acct Inf | 30d | 2022-02-03 | 2022-03-04 | RZ1000 | 65d |
| RZ1020 |  | Gov Install IT Equipment | 30d | 2022-02-12 | 2022-03-13 | PM1200, 1LVB190, 1LVB180, 1LVB170, 1LVD200, 1LVD190, 1LVD180 | 91d |
| RZ1030 |  | Insp/Testing Generator | 5d | 2022-02-14 | 2022-02-18 | RZ1200 | 78d |
| RZ1040 |  | Insp/Testing UPS | 3d | 2022-02-14 | 2022-02-16 | RZ1200 | 80d |
|  | 4 | **Air Barrier Testing** |  | 2022-02-03 | 2022-03-17 |  |  |
| RZ1090 |  | Verify AB Test Equip Calibr | 1d | 2022-02-03 | 2022-02-03 | RZ1000 | 63d |
| RZ1100 |  | Air Barrier Testing - B1 | 2d | 2022-02-04 | 2022-02-07 | RZ1000, 070523-02, RZ1090 | 63d |
| RZ1105 |  | Air Barrier Testing - B5 | 1d | 2022-02-08 | 2022-02-08 | RZ1000, 070523-02, RZ1090, RZ1100 | 63d |
| RZ1110 |  | SUBM - Air Barrier Test Report | 5d | 2022-02-09 | 2022-02-15 | RZ1100, RZ1105 | 63d |
| RZ1120 |  | GOV APPR Air Barrier Test Rep | 30d | 2022-02-16 | 2022-03-17 | RZ1110 | 90d |
|  | 3 | **TAB / Commissioning** |  | 2022-02-02 | 2022-08-19 |  |  |
| RZ1200 |  | Pre-Power Elec Test - Energize | 8d | 2022-02-02 | 2022-02-11 | EL1460, 1ELD140, 1ELB140, 1ELE160, 3FI280, 1ELE190, 260800-02, 1LVD200, 1LVB190, EL1360, 1ELE170, EL1500, 1ELE210, 1ELE230 FF | 1d |
| RZ1220 |  | Gov Provide LPG for Testing/Cx | 5d | 2022-02-03 | 2022-02-09 | RZ1000, LP1170 | 3d |
| RZ1240 |  | Start-up Mech Equip | 20d | 2022-02-14 | 2022-03-14 | RZ1200, PM1200, RZ1000, 1MCA140, 1MCA150, 1MCD130, 1MCD140, 1MCD150, 1MCA160, 1EX130, 1AFI200, RZ1220, 1AFI220, 3FI310, 1RIC300, 1RIE320, 3FI320, 1LVD150, 1LVB150, 1AFI210, 4ST300, 5ST380 FF | 1d |
| RZ1260 |  | Flush/Fill/Treat Mech Piping | 5d | 2022-02-14 | 2022-02-18 | RZ1240 SS, 232500-02, SS1160 | 16d |
| RZ1280 |  | Ctrls Point to Point Verify | 20d | 2022-02-14 | 2022-03-14 | RZ1200, RZ1200 FF | 1d |
| RZ1300 |  | Perform TAB / Submit Reports | 20d | 2022-03-15 | 2022-04-11 | RZ1240, RZ1260, 1EX180, 230593-33, 1EX170, PM1220 | 1d |
| RZ1320 |  | SUBM Start-Up Testing Reports | 10d | 2022-03-15 | 2022-03-28 | RZ1240, RZ1280 | 1d |
| RZ1330 |  | Prefunctional Check - Mech | 5d | 2022-03-15 | 2022-03-21 | RZ1240 | 61d |
| RZ1335 |  | Prefunctional Check - Elec | 5d | 2022-03-15 | 2022-03-21 | RZ1240 | 61d |
| RZ1340 |  | GOV APPR Start-Up Test Reports | 21d | 2022-03-29 | 2022-04-18 | RZ1320 | 1d |
| RZ1360 |  | Chlorinate & BacT Test Water | 5d | 2022-04-04 | 2022-04-08 | PM1200, 1FIC770, 1FIA730, 1FIE940, 3ST280, WA1080, SS1160, WELL400, WELL300, WA1050, WA1030, 3FI360 | 45d |
| RZ1370 |  | Prefunctional Check - Plumbing | 2d | 2022-04-11 | 2022-04-12 | RZ1240, RZ1360 | 45d |
| RZ1380 |  | GOV APPR TAB Reports | 21d | 2022-04-12 | 2022-05-02 | RZ1240, RZ1300 | 1d |
| RZ1400 |  | Submit PVT Procedures | 1d | 2022-04-19 | 2022-04-19 | RZ1340 | 1d |
| RZ1420 |  | Submit Training Documentation | 20d | 2022-04-19 | 2022-05-16 | RZ1340 | 41d |
| RZ1440 |  | GOV REV PVT Procedures | 14d | 2022-04-20 | 2022-05-03 | RZ1400 | 1d |
| RZ1450 |  | TAB Verification | 1d | 2022-05-03 | 2022-05-03 | RZ1380 | 1d |
| RZ1460 |  | Execute PVT | 10d | 2022-05-04 | 2022-05-17 | RZ1440, RZ1380, RZ1450 | 1d |
| RZ1510 |  | GOV REV Training Documentation | 14d | 2022-05-17 | 2022-05-30 | RZ1420 | 59d |
| RZ1480 |  | Submit PVT Report | 14d | 2022-05-18 | 2022-05-31 | RZ1460 | 1d |
| RZ1513 |  | Prefunctional Check - Fire Spr | 2d | 2022-05-23 | 2022-05-24 | RZ1240, RZ2020 | 15d |
| RZ1516 |  | Prefunctional Check - FA | 2d | 2022-05-23 | 2022-05-24 | RZ1240, RZ2020 | 15d |
| RZ1520 |  | GOV REV PVT Report | 14d | 2022-06-01 | 2022-06-14 | RZ1480 | 1d |
| RZ1550 |  | Submit Cert of Readiness - Cx | 3d | 2022-06-15 | 2022-06-17 | RZ1520, RZ1120, RZ1360, RZ2020, RZ1330, RZ1335, RZ1370, RZ1513, RZ1516 | 1d |
| RZ1560 |  | GOV APPR Cert of Readiness -Cx | 14d | 2022-06-18 | 2022-07-01 | RZ1550 | 3d |
| RZ1580 |  | Functional Performance Testing | 10d | 2022-07-05 | 2022-07-18 | RZ1300, RZ1380, RZ1520, RZ1560, RZ2060 | 0d |
| RZ1610 |  | Final Cx Systems Testing | 5d | 2022-07-19 | 2022-07-25 | RZ1580 | 0d |
| RZ1620 |  | Perform Training | 5d | 2022-07-19 | 2022-07-25 | RZ1610 FF, RZ1510, PM1230, RZ2280 | 8d |
| RZ1630 |  | Submit Final Cx Report | 3d | 2022-07-26 | 2022-07-28 | RZ1610 | 0d |
| RZ1640 |  | GOV Rev Final Cx Report | 7d | 2022-07-29 | 2022-08-04 | RZ1630 | 0d |
| RZ1650 |  | Cx Report Review Meeting | 1d | 2022-08-19 | 2022-08-19 | RZ1640 FS+14d | 51d |
|  | 5 | **Electronic Security System Testing** |  | 2022-04-25 | 2022-07-20 |  |  |
| RZ1800 |  | Program Security System | 10d | 2022-04-25 | 2022-05-06 | PM1200, SIT2460, 1FIE1070, 1LVD170, 1LVB200, RZ1010, 1LVB210, 1FIE1080, 3FI210, 4ST560 | 10d |
| RZ1820 |  | ESS Pre-Accept Test/Correction | 15d | 2022-05-09 | 2022-05-27 | PM1200, RZ1800, 280810-02 | 10d |
| RZ1840 |  | ESS Functional Testing | 5d | 2022-05-31 | 2022-06-06 | RZ1820 | 10d |
| RZ1860 |  | ESS Burn-In Testing | 5d | 2022-06-07 | 2022-06-13 | RZ1840 | 10d |
| RZ1880 |  | Submit ESS Final Test Report | 5d | 2022-06-14 | 2022-06-20 | RZ1860 | 10d |
| RZ1900 |  | GOV APPR ESS Final Test Report | 30d | 2022-06-21 | 2022-07-20 | RZ1880 | 15d |
|  | 6 | **Fire Life Safety** |  | 2022-04-25 | 2022-06-13 |  |  |
| RZ2000 |  | Program FA Sys | 10d | 2022-04-25 | 2022-05-06 | 1FIA300, 1FIE910, PM1200, 3FI300, 1FIC250, 1ELE150, RZ1240, 1FIE1070, RZ1010, 1FIE1080 | 13d |
| RZ2020 |  | Contractor Test FA Sys | 10d | 2022-05-09 | 2022-05-20 | RZ2000 | 13d |
| RZ2030 |  | Submit Cert of Readiness - FAS | 1d | 2022-05-23 | 2022-05-23 | RZ2020 | 13d |
| RZ2040 |  | Schedule FLS Testing | 14d | 2022-05-24 | 2022-06-06 | RZ2020, 1FN110, 1FIA390, RZ1020, RZ2030, RZ1030, RZ1040, 3FI420, 3FI430 | 20d |
| RZ2060 |  | Final FLS Testing | 5d | 2022-06-07 | 2022-06-13 | RZ2040, 1LVB210, 1FIC390 | 14d |
|  | 2 | **Punch List & Closeout Documents** |  | 2022-03-21 | 2022-08-05 |  |  |
| RZ2220 |  | KTR Punchlist/Correct - B5 | 7d | 2022-03-21 | 2022-03-29 | 5ST580 | 79d |
| RZ2200 |  | KTR Punchlist/Correct - B3 | 10d | 2022-04-12 | 2022-04-25 | CRS1200, 3FI350, 3ST270 | 55d |
| RZ2280 |  | SUBM/APPR O&M Manuals | 60d | 2022-04-12 | 2022-06-10 | RZ1000, RZ1300 | 48d |
| RZ2290 |  | SUBM/APPR Record Dwgs | 45d | 2022-05-14 | 2022-06-27 | RZ1000, 1FN210 | 38d |
| RZ2295 |  | SUBM/APPR DD Form 1354 | 45d | 2022-05-14 | 2022-06-27 | RZ1000, 1FN210 | 37d |
| RZ2320 |  | KTR Punchlist/Correct - B1,1A | 15d | 2022-05-16 | 2022-06-06 | 1FN210, 1EX220, 1EX200, 1EX210, 1EX230, 1AFI230, 1EX160 | 31d |
| RZ2240 |  | KTR Punchlist/Correct - B4,4A | 10d | 2022-05-25 | 2022-06-08 | 4ST700, 4A1460 | 24d |
| RZ2260 |  | KTR Punchlist/Correct - Site | 15d | 2022-05-25 | 2022-06-15 | HW1080, SIT2620, SIT2720, SIT2700, SIT1180, SIT2780, CRR1100, SLP1280, SIT1160, SD1260, SD1240, 1ENT280, HELI360 | 24d |
| RZ2300 |  | Demobilize Site | 15d | 2022-05-25 | 2022-06-15 | RZ2260 SS, SIT2720, RZ2320 SS, RZ2200 SS, RZ2240 SS | 24d |
| RZ2340 |  | Pre-Warranty Conference | 1d | 2022-06-28 | 2022-06-28 | RZ2260, RZ2320, RZ2200, RZ2295 | 26d |
| RZ2360 |  | Gov Pre-Final Inspection | 1d | 2022-07-19 | 2022-07-19 | RZ2260, RZ1580, RZ2300, RZ9020, RZ2320, RZ2200, RZ2220, RZ2240, RZ2220 FF, 3FI430, R00003 MOD | 2d |
| RZ2380 |  | Gov Pre-Final PL Corrections | 10d | 2022-07-20 | 2022-08-02 | RZ2360 | 2d |
| RZ2400 |  | Gov Final Inspection | 1d | 2022-08-05 | 2022-08-05 | RZ2360, RZ2280, RZ2380, RZ1620, RZ1610, RZ1900, SIT2740, RZ2340, PM9910, RZ1630, RZ1640, RZ2290, RZ2295 | 0d |
|  | 1 | **As-Built Drawings** |  | 2021-12-23 | 2022-11-01 |  |  |

| ID | WBS | Task | Duration | Start | Finish | Predecessors | Complete | Total float |
| --- | --- | --- | --- | --- | --- | --- | --- | --- |
| RZ9000 |  | SUBM 50% Prelim As-Built Dwgs | 30d | 2021-12-23 | 2022-01-21 | 1FIE720 |  | 150d |
| RZ9020 |  | GOV APPR 50% As-Built Dwgs | 30d | 2022-01-22 | 2022-02-20 | RZ9000 |  | 150d |
| RZ9040 |  | SUBM 100% Prelim As-Built Dwgs | 30d | 2022-08-06 | 2022-09-04 | RZ2400, PM9900 |  | 0d |
| RZ9060 |  | GOV APPR 100% As-Built Dwgs | 30d | 2022-09-05 | 2022-10-04 | RZ9040 |  | 0d |
| RZ9080 |  | SUBM/APPR Final As-Built Dwgs | 20d | 2022-10-05 | 2022-11-01 | RZ2400, RZ9060, RZ1650 FF |  | 0d |
|  | 7 | **Modifications / Allowances** |  | 2020-09-23 | 2021-07-29 |  |  |  |
|  | 1 | **Allowances** |  | 2021-07-01 | 2021-07-29 |  |  |  |
| ALLW008 |  | Elec & Comm Wire Allowance | 20d | 2021-07-01 | 2021-07-29 | PM1050 |  | 257d |
|  | 2 | **R00001 SD004 PEMB Revised Design Parameter** |  | 2020-09-23 | 2021-03-01 |  |  |  |
| 133419-1.1 |  | COORDINATE - Mtl Bldg Dwgs | 8d | 2020-09-23 A | 2020-09-30 A | 133419-02 | 100% |  |
| RFI29-100 |  | RFI 29 Beam Depth Conflicts | 7d | 2020-10-01 A | 2020-10-07 A | 133419-1.1 | 100% |  |
| RFI42-100 |  | RFI 42 PEMB Parameters | 7d | 2020-10-09 A | 2020-10-15 A | RFI29-100 | 100% |  |
| RFI42-110 |  | Begin PEMB Redesign | 5d | 2020-10-16 A | 2020-10-20 A | RFI42-100 | 100% |  |
| RFI53-100 |  | RFI 53 Updated PEMB | 6d | 2020-10-21 A | 2020-10-26 A | RFI42-110 | 100% |  |
| RFI53-110 |  | PEMB Redesign Bldg 1 | 30d | 2020-10-27 A | 2020-12-04 A | RFI53-100, RFP02-100 FF | 100% |  |
| RFP02-100 |  | Govt Issue RFP 02 | 9d | 2020-10-27 A | 2020-11-04 A | RFI53-100 | 100% |  |
| RFI53-120 |  | QC REV PEMB Redesign Bldg 1 | 3d | 2020-12-02 A | 2020-12-04 A | RFI53-110 | 100% |  |
| M1-1 |  | PEMB Revised Design Parameter | 1d | 2021-03-01 A | 2021-03-01 A | RFI53-120 | 100% |  |
|  | 3 | **R00002 SD009 Foundation Redesign** |  | 2020-12-07 | 2021-04-23 |  |  |  |
| RFP07-100 |  | Govt Issue Early Copy of Foundation Redesign | 18d | 2020-12-07 A | 2020-12-31 A | RFI53-120, 133419-04 | 100% |  |
| RFP07-110 |  | Govt Issue RFP 07 for Foundation Redesign | 16d | 2020-12-23 A | 2021-01-15 A | RFP07-100 | 100% |  |
| RFP07-120 |  | Sub Begin Preparing Rebar Shop Drawings | 8d | 2020-12-23 A | 2021-01-05 A | RFP07-100 | 100% |  |
| RFP07-140 |  | Review RFP 07 & Generate RFIs | 4d | 2021-01-08 A | 2021-01-13 A | RFP07-110, RFP07-120 | 100% |  |
| RFP07-130 |  | RFI 103 - Pilaster at Grids A & 1 | 9d | 2021-01-12 A | 2021-01-22 A | RFP07-140 SS+2d | 100% |  |
| RFP07-150 |  | RFI 104 - Dimension for Step | 9d | 2021-01-12 A | 2021-01-22 A | RFP07-140 SS+2d | 100% |  |
| RFP07-160 |  | RFI 105 - GB5 & Wall Don't Have Same Width | 7d | 2021-01-13 A | 2021-01-21 A | RFP07-140 SS+3d | 100% |  |
| RFP07-170 |  | RFI 106 - Is F2 a Typo Error | 7d | 2021-01-13 A | 2021-01-21 A | RFP07-140 SS+3d | 100% |  |
| RFP07-180 |  | RFI 107 - Pilaster Dimensions & Beam Not Centered | 7d | 2021-01-13 A | 2021-01-21 A | RFP07-140 SS+3d | 100% |  |
| RFP07-190 |  | RFI 108 - Are the 9 #5 Verts an Add or Replace | 7d | 2021-01-13 A | 2021-01-21 A | RFP07-140 SS+3d | 100% |  |
| RFP07-200 |  | RFI 109 - Tie Conflicts with Apparent Blockout | 10d | 2021-01-13 A | 2021-01-26 A | RFP07-140 SS+3d | 100% |  |
| RFP07-210 |  | RFI 110 - Pilaster Dimensions | 7d | 2021-01-13 A | 2021-01-21 A | RFP07-140 SS+3d | 100% |  |
| RFP07-220 |  | RFI 111 - Grade Beam with 2 Labels | 7d | 2021-01-13 A | 2021-01-21 A | RFP07-140 SS+3d | 100% |  |
| RFP07-230 |  | RFI 113 - Is Pilaster Shape & Layout Accurate | 9d | 2021-01-14 A | 2021-01-26 A | RFP07-140 | 100% |  |
| RFP07-240 |  | Complete Rebar Shop Drawings - Bldg 1 | 4d | 2021-01-25 A | 2021-01-28 A | RFP07-230, RFP07-220, RFP07-210, RFP07-200, RFP07-190, RFP07-180, RFP07-170, RFP07-160, RFP07-150, RFP07-130 | 100% |  |
| RFP07-250 |  | QC Check Rebar Shop Drawings - Bldg 1 | 2d | 2021-01-29 A | 2021-02-01 A | RFP07-240 | 100% |  |
| M2-1 |  | Foundation Redesign | 1d | 2021-04-23 A | 2021-04-23 A | PM1050 | 100% |  |
|  | 4 | **R00003 DWV Underground Pipe / Utility Reroute / Shotcrete** |  | 2021-06-08 | 2021-07-07 |  |  |  |
| R00003 MOD |  | DWV Pipe/Util Reroute/Shotcrete | 5d | 2021-06-08 A | 2021-07-07 | PM1050 | 20% | 261d |

## Version 2 (data date 2021-08-01, saved 2021-08-04, file BFBPS14.xer)

Last finish 2022-11-01 → 2022-11-04 (+3d). Complete tasks 363 → 434.

Added:

| ID | Task | Duration | Start | Finish | Predecessors | Resources |
| --- | --- | --- | --- | --- | --- | --- |
| PRE-1050.1 | SUBM Plans/Specs to DDW | 3d | 2020-09-23 A | 2020-09-25 A | MOB1210, PM1050 |  |
| PRE-1050.2 | Submit Water Well Construction Permit | 1d | 2021-03-30 A | 2021-03-30 A | MOB1210 |  |
| PRE-1050.5 | Received Water Well Construction Permit | 1d | 2021-07-27 A | 2021-07-27 A | PRE-1050.2 |  |
| 5 | **R00004 MOD 6 Misc Changes** |  | 2021-07-01 | 2021-08-02 |  |  |
| MOD R00004 | MOD 6 Misc Changes | 5d | 2021-07-01 A | 2021-08-02 | PM1050 | COST [26345.8 h] |

Changed:

| ID | Task | Start | Finish | Complete | Total float | Predecessors |
| --- | --- | --- | --- | --- | --- | --- |
| MS | **Milestones** |  | 2022-08-05 → 2022-08-08 (+3d) |  |  |  |
| 1 | **Project Milestones** |  | 2022-08-05 → 2022-08-08 (+3d) |  |  |  |
| PM1100 | Project Period of Performance |  | 2022-08-05 → 2022-08-08 (+3d) |  | 0d → 2d |  |
| PM1180 | BPS Metal Bldg/Dry In Complete | 2021-10-08 → 2021-10-12 (+4d) | 2021-10-08 → 2021-10-12 (+4d) |  | 3d → 2d |  |
| PM1210 | BPS Rough In MEPs Complete | 2021-12-30 → 2022-01-12 (+13d) | 2021-12-30 → 2022-01-12 (+13d) |  | 46d → 36d |  |
| PM1200 | Permanent Power | 2022-02-11 → 2022-02-15 (+4d) | 2022-02-11 → 2022-02-15 (+4d) |  | 3d → 2d |  |
| PM1220 | Startup / TAB / Cx Start | 2022-03-15 → 2022-03-17 (+2d) | 2022-03-15 → 2022-03-17 (+2d) |  | 1d → 4d |  |
| PM1230 | Owner Training Agenda Complete | 2022-05-30 → 2022-06-01 (+2d) | 2022-05-30 → 2022-06-01 (+2d) |  | 59d → 62d |  |
| PM1400 | Commissioning Complete | 2022-07-25 → 2022-07-26 (+1d) | 2022-07-25 → 2022-07-26 (+1d) |  | 11d → 15d |  |
| PM9900 | End Project | 2022-08-05 → 2022-08-08 (+3d) | 2022-08-05 → 2022-08-08 (+3d) |  | 0d → 2d | PM1100 FF, ALLW008, RZ2400, PM1400, ENV-1100, ENV-1090, ENV-1110, M1-1, M2-1 → PM1100 FF, ALLW008, RZ2400, PM1400, ENV-1100, ENV-1090, ENV-1110, M1-1, M2-1, MOD R00004 |
| ENV-1080 | Arroyo Toad Breeding 2021 |  | 2021-07-31 A | 0% → 100% | 77d → none |  |
| PRECON | **Preconstruction** |  | 2021-12-07 → 2021-12-08 (+1d) |  |  |  |
| PRE-1050 | Obtain Pot Water Well Permit |  | 2021-07-30 → 2021-08-10 (+11d) | 0% → 50% | 174d → 166d | PM1050, MOB1210 FF → PM1050, MOB1210 FF, PRE-1050.1, PRE-1050.5 FF |
| PRE-1060 | Obtain Treatment/Septic Permit |  | 2021-12-07 → 2021-12-08 (+1d) |  | 29d → 32d |  |
| PRE-1200 | APCD Permitting for Generators |  | 2021-11-27 → 2021-11-28 (+1d) |  | 30d → 161d |  |
| SUBM | **Submittals / Procurement** |  | 2022-01-21 → 2022-02-23 (+33d) |  |  |  |
| 1 | **Outside Agencies** |  | 2021-11-27 → 2021-11-28 (+1d) |  |  |  |
| SDGE200 | PROC SDG&E Transformer |  | 2021-11-27 → 2021-11-28 (+1d) |  | 31d → 38d |  |
| 01 | **Division 01 - General Requirements** |  | 2022-01-05 → 2022-01-10 (+5d) |  |  |  |
| 019100-62 | Prep Pre-Funct & FPT Checklist | 2021-07-01 → 2021-06-16 A (-15d) | 2021-10-22 → 2021-10-25 (+3d) |  | 19d → 21d |  |
| 019100-65 | Interim Cx Plan Review Meeting | 2021-07-01 → 2021-08-02 (+32d) | 2021-07-01 → 2021-08-02 (+32d) |  | 98d → 80d |  |
| 019100-72 | Prepare Final Cx Plan | 2021-10-23 → 2021-10-26 (+3d) | 2021-11-21 → 2021-11-24 (+3d) |  | 30d → 32d |  |
| 019100-82 | GOV APPR - Final Cx Plan | 2021-11-22 → 2021-11-25 (+3d) | 2021-12-21 → 2021-12-24 (+3d) |  | 30d → 32d |  |
| 019100-85 | Final Cx Plan Review Meeting | 2021-12-06 → 2021-12-09 (+3d) | 2021-12-06 → 2021-12-09 (+3d) |  |  |  |
| 019100-50 | Schedule Cx Coord Mtg | 2021-12-22 → 2021-12-25 (+3d) | 2022-01-04 → 2022-01-07 (+3d) |  | 30d → 32d |  |
| 019100-51 | Cx Coordination Mtg | 2022-01-05 → 2022-01-10 (+5d) | 2022-01-05 → 2022-01-10 (+5d) |  |  |  |
| 04 | **Division 04 - Masonry** |  | 2021-07-29 → 2021-08-01 (+3d) |  |  |  |
| 2000 | **04 20 00 Unit Masonry** |  | 2021-07-29 → 2021-08-01 (+3d) |  |  |  |
| 042000-32 | PROC - CMU |  | 2021-07-15 → 2021-07-26 A (+11d) | 0% → 100% | 2d → none |  |
| 042000-42 | Mock-Up - CMU Walls | 2021-07-16 → 2021-07-27 A (+11d) | 2021-07-22 → 2021-07-29 A (+7d) | 0% → 100% | 2d → none |  |
| 042000-52 | GOV REV Mock-Up - CMU | 2021-07-23 → 2021-07-27 A (+4d) | 2021-07-29 → 2021-08-01 (+3d) |  | 4d → 3d |  |
| 05 | **Division 05 - Metals** |  | 2021-08-12 → 2021-08-27 (+15d) |  |  |  |
| 5100 | **05 51 00 Metal Stairs** |  | 2021-08-12 → 2021-08-27 (+15d) |  |  |  |
| 055100-09 | FABR - Metal Stairs |  | 2021-08-12 → 2021-08-27 (+15d) |  | 215d → 207d |  |
| 5200 | **05 52 00 Metal Railings** |  | 2021-08-12 → 2021-08-27 (+15d) |  |  |  |
| 055200-09 | FABR - Metal Railings |  | 2021-08-12 → 2021-08-27 (+15d) |  | 215d → 207d |  |
| 06 | **Division 06 - Wood, Plastics, and Composites** |  | 2021-12-15 → 2021-12-28 (+13d) |  |  |  |
| 1000 | **06 10 00 Rough Carpentry** | 2021-07-01 → 2021-08-02 (+32d) | 2021-10-02 → 2021-11-03 (+32d) |  |  |  |
| 061000-01 | SUBM - Rough Carpentry | 2021-07-01 → 2021-08-02 (+32d) | 2021-09-02 → 2021-10-04 (+32d) |  | 49d → 33d |  |
| 061000-02 | GOV APPR - Rough Carpentry | 2021-09-03 → 2021-10-05 (+32d) | 2021-10-02 → 2021-11-03 (+32d) |  | 73d → 46d |  |
| 2000 | **06 20 00 Finish Carpentry** |  | 2021-12-07 → 2021-12-17 (+10d) |  |  |  |
| 062000-01 | SUBM - Finish Carpentry |  | 2021-09-02 → 2021-09-13 (+11d) |  | 54d → 49d |  |
| 062000-02 | GOV APPR - Finish Carpentry | 2021-09-03 → 2021-09-14 (+11d) | 2021-10-02 → 2021-10-13 (+11d) |  | 78d → 70d |  |
| 062000-12 | SUBM SAMP - Finish Carpentry | 2021-10-04 → 2021-10-14 (+10d) | 2021-10-15 → 2021-10-27 (+12d) |  | 52d → 47d |  |
| 062000-22 | GOV APPR SAMP - Fin Carpentry | 2021-10-18 → 2021-10-28 (+10d) | 2021-11-04 → 2021-11-17 (+13d) |  | 52d → 47d |  |
| 062000-32 | PROC - Finish Carpentry | 2021-11-05 → 2021-11-18 (+13d) | 2021-12-07 → 2021-12-17 (+10d) |  | 52d → 47d |  |
| 4116 | **06 41 16 Plastic-Laminate-Clad Architectural Cabinets (FIO)** |  | 2021-11-22 → 2021-12-23 (+31d) |  |  |  |
| 064116-01 | SUBM - P-Lam Cabinets |  | 2021-08-12 → 2021-09-13 (+32d) |  | 62d → 44d |  |
| 064116-02 | QC APPR - P-Lam Cabinets | 2021-08-13 → 2021-09-14 (+32d) | 2021-09-10 → 2021-10-11 (+31d) |  | 62d → 44d |  |
| 064116-30 | Field Measure Cabinets | 2021-08-20 → 2021-09-16 (+27d) | 2021-08-20 → 2021-09-16 (+27d) |  | 95d → 80d |  |
| 064116-12 | SUBM SAMP - P-Lam Cabinets | 2021-09-13 → 2021-10-12 (+29d) | 2021-09-24 → 2021-10-25 (+31d) |  | 62d → 44d |  |
| 064116-22 | GOV APPR SAMP - P-Lam Cabinets | 2021-09-25 → 2021-10-26 (+31d) | 2021-10-08 → 2021-11-08 (+31d) |  | 94d → 66d |  |
| 064116-32 | PROC - P-Lam Cabinets | 2021-10-11 → 2021-11-09 (+29d) | 2021-11-22 → 2021-12-23 (+31d) |  | 61d → 43d |  |
| 6116 | **06 61 16 Solid Surfacing Fabrications** |  | 2021-12-15 → 2021-12-28 (+13d) |  |  |  |
| 066116-01 | SUBM - Solid Surface Fabs |  | 2021-09-02 → 2021-09-13 (+11d) |  | 47d → 43d |  |
| 066116-02 | QC APPR - Solid Surface Fabs | 2021-09-03 → 2021-09-14 (+11d) | 2021-09-17 → 2021-09-27 (+10d) |  | 47d → 43d |  |
| 066116-12 | SUBM SAMP - Solid Surface Fabs | 2021-09-20 → 2021-09-28 (+8d) | 2021-10-01 → 2021-10-11 (+10d) |  | 47d → 43d |  |
| 066116-22 | GOV APPR SAMP- Solid Surf Fabs | 2021-10-02 → 2021-10-12 (+10d) | 2021-10-31 → 2021-11-10 (+10d) |  | 71d → 64d |  |
| 066116-32 | PROC - Solid Surfacing Fabs | 2021-11-01 → 2021-11-12 (+11d) | 2021-12-15 → 2021-12-28 (+13d) |  | 46d → 41d |  |
| 07 | **Division 07 - Thermal and Moisture Protection** |  | 2021-09-22 → 2021-09-26 (+4d) |  |  |  |
| 0523 | **07 05 23 Pressure Testing an Air Barrier System** | 2021-07-01 → 2021-08-02 (+32d) | 2021-08-28 → 2021-09-26 (+29d) |  |  |  |
| 070523-01 | SUBM - Test Air Barrier Sys | 2021-07-01 → 2021-08-02 (+32d) | 2021-07-29 → 2021-08-27 (+29d) |  | 170d → 153d |  |
| 070523-02 | GOV APPR- Test Air Barrier Sys | 2021-07-30 → 2021-08-28 (+29d) | 2021-08-28 → 2021-09-26 (+29d) |  | 249d → 226d |  |
| 2710 | **07 27 10 Building Air Barrier System** |  | 2021-09-22 → 2021-09-14 (-8d) |  |  |  |
| 072710-01 | SUBM - Air Barrier Insp |  | 2021-07-10 → 2021-08-01 (+22d) |  | 7d → 19d |  |
| 072710-02 | GOV APPR - Air Barrier Insp | 2021-07-11 → 2021-08-02 (+22d) | 2021-08-09 → 2021-08-31 (+22d) |  | 7d → 19d |  |
| 072710-12 | SUBM - Air Barrier Design Rev | 2021-08-10 → 2021-08-02 (-8d) | 2021-08-23 → 2021-08-15 (-8d) |  | 7d → 19d | 072710-02 → 072710-02 SS |
| 072710-13 | GOV APPR - Air Barrier Des Rev | 2021-08-24 → 2021-08-16 (-8d) | 2021-09-22 → 2021-09-14 (-8d) |  | 7d → 19d | 072710-12 → 072710-12, 072710-02 FF |
| 08 | **Division 08 - Openings** |  | 2021-12-01 → 2022-01-05 (+35d) |  |  |  |
| 1113 | **08 11 13 Steel Doors and Frames** |  | 2021-07-29 → 2021-08-27 (+29d) |  |  |  |

| ID | Task | Start | Finish | Complete | Total float |
| --- | --- | --- | --- | --- | --- |
| 081113-21 | FABR - Steel Door Frames |  | 2021-07-29 → 2021-08-27 (+29d) |  | 47d → 31d |
| 081113-31 | FABR - Steel Doors |  | 2021-07-29 → 2021-08-27 (+29d) |  | 142d → 124d |
| 1400 | **08 14 00 Wood Doors** |  | 2021-11-15 → 2021-12-20 (+35d) |  |  |
| 081400-01 | SUBM - Wood Doors |  | 2021-07-08 → 2021-08-06 (+29d) |  | 85d → 64d |
| 081400-02 | GOV APPR - Wood Doors | 2021-07-09 → 2021-08-07 (+29d) | 2021-08-07 → 2021-09-05 (+29d) |  | 120d → 93d |
| 081400-12 | SUBM Fin Colors - Wood Doors | 2021-08-09 → 2021-09-07 (+29d) | 2021-08-20 → 2021-09-20 (+31d) |  | 81d → 63d |
| 081400-22 | GOV APPR Fin Color - Wood Door | 2021-08-21 → 2021-09-21 (+31d) | 2021-09-19 → 2021-10-20 (+31d) |  | 120d → 92d |
| 081400-23 | FABR - Wood Doors | 2021-09-20 → 2021-10-21 (+31d) | 2021-11-15 → 2021-12-20 (+35d) |  | 81d → 61d |
| 2220 | **08 22 00 Fiberglass Reinforced Plastic FRP Doors and Frames** |  | 2021-10-04 → 2021-10-18 (+14d) |  |  |
| 082200-01 | SUBM - FRP Doors & Frames |  | 2021-07-08 → 2021-07-14 A (+6d) | 0% → 100% | 135d → none |
| 082200-02 | GOV APPR - FRP Doors & Frames | 2021-07-09 → 2021-07-15 A (+6d) | 2021-08-07 → 2021-08-20 (+13d) |  | 199d → 191d |
| 082200-21 | FABR - FRP Doors & Frames | 2021-08-09 → 2021-08-23 (+14d) | 2021-10-04 → 2021-10-18 (+14d) |  | 173d → 167d |
| 3313 | **08 33 13 Coiling Counter Doors (FIO)** |  | 2021-08-12 → 2021-08-27 (+15d) |  |  |
| 083313-13 | PROC - Coiling Counter Doors |  | 2021-08-12 → 2021-08-27 (+15d) |  | 199d → 193d |
| 3323 | **08 33 23 Overhead Coiling Doors** |  | 2021-12-01 → 2021-10-22 (-40d) |  |  |
| 083323-01 | SUBM - OH Coiling Doors | 2021-07-01 A | 2021-09-02 → 2021-08-06 (-27d) |  | 139d → 168d |
| 083323-02 | GOV APPR - OH Coiling Doors | 2021-09-03 → 2021-07-15 A (-50d) | 2021-10-02 → 2021-08-26 (-37d) |  | 205d → 245d |
| 083323-21 | FABR - OH Coiling Doors | 2021-10-04 → 2021-08-27 (-38d) | 2021-12-01 → 2021-10-22 (-40d) |  | 140d → 168d |
| 3402 | **08 34 02 Bullet-Resistant Components** | 2021-07-01 → 2021-08-02 (+32d) | 2021-12-01 → 2022-01-05 (+35d) |  |  |
| 083402-01 | SUBM - Bullet-Resistant Comps | 2021-07-01 → 2021-08-02 (+32d) | 2021-09-02 → 2021-10-04 (+32d) |  | 92d → 75d |
| 083402-02 | GOV APPR - Bullet-Res Comps | 2021-09-03 → 2021-10-05 (+32d) | 2021-10-02 → 2021-11-03 (+32d) |  | 138d → 112d |
| 083402-21 | FABR - Bullet-Resistant Comps | 2021-10-04 → 2021-11-04 (+31d) | 2021-12-01 → 2022-01-05 (+35d) |  | 94d → 74d |
| 3459 | **08 34 59 Vault Doors and Day Gates** |  | 2021-11-01 → 2021-12-01 (+30d) |  |  |
| 083459-01 | SUBM - Vault Door & Day Gate |  | 2021-08-05 → 2021-09-03 (+29d) |  | 107d → 89d |
| 083459-02 | GOV APPR - Vault Dr & Day Gate | 2021-08-06 → 2021-09-04 (+29d) | 2021-09-04 → 2021-10-03 (+29d) |  | 159d → 135d |
| 083459-21 | FABR - Vault Door & Day Gate | 2021-09-07 → 2021-10-04 (+27d) | 2021-11-01 → 2021-12-01 (+30d) |  | 108d → 92d |
| 3463 | **08 34 63 Detention Hollow Metal Frames, Doors, and Door Frames** |  | 2021-08-26 → 2021-09-13 (+18d) |  |  |
| 083463-21 | FABR - Detention HM Frames |  | 2021-07-28 → 2021-07-15 A (-13d) |  | 1d → none |
| 083463-31 | FABR - Detention HM Doors |  | 2021-08-26 → 2021-09-13 (+18d) |  | 154d → 146d |
| 4113 | **08 41 13 Aluminum-Framed Entrances and Storefronts (FIO)** |  | 2021-11-15 → 2021-10-11 (-35d) |  |  |
| 084113-01 | SUBM - Alum Entr & Storefront |  | 2021-07-29 → 2021-07-19 A (-10d) | 0% → 100% | 34d → none |
| 084113-02 | QC APPR - Alum Entr & SF |  | 2021-08-12 → 2021-07-19 A (-24d) | 0% → 100% | 34d → none |
| 084113-03 | GOV FIO - Alum Entr & SF |  | 2021-08-19 → 2021-07-21 A (-29d) | 0% → 100% | 49d → none |
| 084113-21 | FABR - Alum Entr & Storefront | 2021-08-20 → 2021-07-22 A (-29d) | 2021-11-15 → 2021-10-11 (-35d) |  | 35d → 63d |
| 5663 | **08 56 63 Detention and Security Windows (FIO)** | 2021-07-01 → 2021-08-02 (+32d) | 2021-11-05 → 2021-12-09 (+34d) |  |  |
| 085663-01 | SUBM - Deten & Security Window | 2021-07-01 → 2021-08-02 (+32d) | 2021-09-02 → 2021-10-04 (+32d) |  | 138d → 122d |
| 085663-02 | QC APPR - Deten & Sec Windows | 2021-09-03 → 2021-10-05 (+32d) | 2021-10-01 → 2021-11-01 (+31d) |  | 138d → 122d |
| 085663-03 | GOV FIO - Deten & Sec Windows | 2021-10-02 → 2021-11-02 (+31d) | 2021-10-08 → 2021-11-08 (+31d) |  | 202d → 178d |
| 085663-21 | PROC - Deten & Sec Windows | 2021-10-11 → 2021-11-09 (+29d) | 2021-11-05 → 2021-12-09 (+34d) |  | 138d → 122d |
| 6200 | **08 62 00 Tubular Daylighting Device** |  | 2021-07-29 → 2021-08-06 (+8d) |  |  |
| 086200-21 | PROC - Tubular Daylight Device |  | 2021-07-29 → 2021-08-06 (+8d) |  | 51d → 48d |
| 7100 | **08 71 00 Door Hardware** |  | 2021-10-04 → 2021-11-01 (+28d) |  |  |
| 087100-01 | SUBM - Door Hardware |  | 2021-07-08 → 2021-08-06 (+29d) |  | 89d → 69d |
| 087100-02 | GOV APPR - Door Hardware |  | 2021-08-07 → 2021-09-05 (+29d) |  | 127d → 101d |
| 087100-21 | PROC - Door Hardware | 2021-08-09 → 2021-09-07 (+29d) | 2021-10-04 → 2021-11-01 (+28d) |  | 86d → 69d |
| 7163 | **08 71 63 Detention Hardware (FIO)** |  | 2021-08-26 → 2021-09-27 (+32d) |  |  |
| 087163-21 | PROC - Detention Hardware |  | 2021-08-26 → 2021-09-27 (+32d) |  | 154d → 136d |
| 8100 | **08 81 00 Glazing (FIO)** |  | 2021-07-29 → 2021-08-27 (+29d) |  |  |
| 088100-21 | PROC - Glazing | 2021-07-01 → 2021-07-13 A (+12d) | 2021-07-29 → 2021-08-27 (+29d) |  | 110d → 93d |
| 8853 | **08 88 53 Detention and Security Glazing (FIO)** |  | 2021-07-29 → 2021-08-27 (+29d) |  |  |
| 088853-21 | PROC - Deten & Security Glaz |  | 2021-07-29 → 2021-08-27 (+29d) |  | 208d → 192d |
| 9100 | **08 91 00 Metal Wall Louvers** | 2021-07-01 → 2021-08-02 (+32d) | 2021-12-01 → 2021-12-30 (+29d) |  |  |
| 089100-01 | SUBM - Metal Wall Louvers | 2021-07-01 → 2021-08-02 (+32d) | 2021-09-02 → 2021-10-04 (+32d) |  | 134d → 115d |
| 089100-02 | QC APPR - Metal Wall Louvers | 2021-09-03 → 2021-10-05 (+32d) | 2021-09-17 → 2021-10-18 (+31d) |  | 134d → 115d |
| 089100-03 | SUBM SAMP - Metal Wall Louvers | 2021-09-20 → 2021-10-19 (+29d) | 2021-10-01 → 2021-11-01 (+31d) |  | 134d → 115d |
| 089100-13 | GOV APPR SAMP - Metal Louvers | 2021-10-02 → 2021-11-02 (+31d) | 2021-10-31 → 2021-12-01 (+31d) |  | 196d → 169d |
| 089100-21 | PROC - Metal Wall Louvers | 2021-11-01 → 2021-12-02 (+31d) | 2021-12-01 → 2021-12-30 (+29d) |  | 134d → 118d |
| 09 | **Division 09 - Finishes** |  | 2021-10-22 → 2021-11-23 (+32d) |  |  |
| 2423 | **09 24 23 Cement Stucco** | 2021-07-01 → 2021-08-02 (+32d) | 2021-09-25 → 2021-10-27 (+32d) |  |  |
| 092423-01 | SUBM - Cement Stucco | 2021-07-01 → 2021-08-02 (+32d) | 2021-07-29 → 2021-08-27 (+29d) |  | 74d → 53d |
| 092423-02 | QC APPR - Cement Stucco | 2021-07-30 → 2021-08-30 (+31d) | 2021-08-12 → 2021-09-13 (+32d) |  | 74d → 53d |
| 092423-03 | SUBM SAMP Panel - Stucco | 2021-08-13 → 2021-09-14 (+32d) | 2021-08-26 → 2021-09-27 (+32d) |  | 74d → 53d |
| 092423-13 | GOV APPR SAMP Panel - Stucco | 2021-08-27 → 2021-09-28 (+32d) | 2021-09-25 → 2021-10-27 (+32d) |  | 110d → 78d |
| 3010 | **09 30 10 Tiling (FIO)** | 2021-07-01 → 2021-08-02 (+32d) | 2021-10-22 → 2021-11-23 (+32d) |  |  |
| 093010-01 | SUBM - Tiling | 2021-07-01 → 2021-08-02 (+32d) | 2021-08-26 → 2021-09-27 (+32d) |  | 106d → 90d |
| 093010-02 | QC APPR - Tiling | 2021-08-27 → 2021-09-28 (+32d) | 2021-09-17 → 2021-10-18 (+31d) |  | 106d → 90d |
| 093010-03 | GOV FIO - Tiling | 2021-09-18 → 2021-10-19 (+31d) | 2021-09-24 → 2021-10-25 (+31d) |  | 158d → 134d |
| 093010-13 | PROC - Tiling | 2021-09-27 → 2021-10-26 (+29d) | 2021-10-22 → 2021-11-23 (+32d) |  | 106d → 90d |
| 5100 | **09 51 00 Acoustical Ceilings (FIO)** |  | 2021-08-19 → 2021-09-20 (+32d) |  |  |
| 095100-01 | SUBM - Acoustical Ceilings |  | 2021-07-08 → 2021-08-06 (+29d) |  | 113d → 94d |

| ID | Task | Start | Finish | Total float |
| --- | --- | --- | --- | --- |
| 095100-02 | QC APPR - Acoustical Ceilings |  | 2021-07-15 → 2021-08-13 (+29d) | 113d → 94d |
| 095100-03 | GOV FIO - Acoustical Ceilings |  | 2021-07-22 → 2021-08-20 (+29d) | 166d → 142d |
| 095100-13 | PROC - Acoustical Ceilings | 2021-07-23 → 2021-08-23 (+31d) | 2021-08-19 → 2021-09-20 (+32d) | 112d → 94d |
| 6238 | **09 62 38 Static-Control Flooring** | 2021-07-01 → 2021-08-02 (+32d) | 2021-09-27 → 2021-10-22 (+25d) |  |
| 096238-01 | SUBM - Static-Control Flooring | 2021-07-01 → 2021-08-02 (+32d) | 2021-07-29 → 2021-08-27 (+29d) | 65d → 46d |
| 096238-02 | GOV APPR - Static-Control Flrg | 2021-07-30 → 2021-08-28 (+29d) | 2021-08-28 → 2021-09-26 (+29d) | 93d → 67d |
| 096238-12 | PROC - Static-Control Flooring | 2021-08-30 → 2021-09-27 (+28d) | 2021-09-27 → 2021-10-22 (+25d) | 62d → 46d |
| 6500 | **09 65 00 Resilient Flooring (FIO)** | 2021-07-01 → 2021-08-02 (+32d) | 2021-10-22 → 2021-11-23 (+32d) |  |
| 096500-01 | SUBM - Resilient Flooring | 2021-07-01 → 2021-08-02 (+32d) | 2021-08-26 → 2021-09-27 (+32d) | 111d → 95d |
| 096500-02 | QC APPR - Resilient Flooring | 2021-08-27 → 2021-09-28 (+32d) | 2021-09-17 → 2021-10-18 (+31d) | 111d → 95d |
| 096500-03 | GOV FIO - Resilient Flooring | 2021-09-18 → 2021-10-19 (+31d) | 2021-09-24 → 2021-10-25 (+31d) | 165d → 141d |
| 096500-13 | PROC - Resilient Flooring | 2021-09-27 → 2021-10-26 (+29d) | 2021-10-22 → 2021-11-23 (+32d) | 111d → 95d |
| 6566 | **09 65 66 Resilient Athletic Flooring (FIO)** | 2021-07-01 → 2021-08-02 (+32d) | 2021-10-22 → 2021-11-23 (+32d) |  |
| 096566-01 | SUBM - Athletic Flooring | 2021-07-01 → 2021-08-02 (+32d) | 2021-08-26 → 2021-09-27 (+32d) | 138d → 122d |
| 096566-02 | QC APPR - Athletic Flooring | 2021-08-27 → 2021-09-28 (+32d) | 2021-09-17 → 2021-10-18 (+31d) | 138d → 122d |
| 096566-03 | GOV FIO - Athletic Flooring | 2021-09-18 → 2021-10-19 (+31d) | 2021-09-24 → 2021-10-25 (+31d) | 202d → 178d |
| 096566-13 | PROC - Athletic Flooring | 2021-09-27 → 2021-10-26 (+29d) | 2021-10-22 → 2021-11-23 (+32d) | 138d → 122d |
| 6726 | **09 67 26 Quartz Flooring (FIO)** | 2021-07-01 → 2021-08-02 (+32d) | 2021-09-24 → 2021-10-25 (+31d) |  |
| 096726-01 | SUBM - Quartz Flooring | 2021-07-01 → 2021-08-02 (+32d) | 2021-08-26 → 2021-09-27 (+32d) | 105d → 87d |
| 096726-02 | QC APPR - Quartz Flooring | 2021-08-27 → 2021-09-28 (+32d) | 2021-09-17 → 2021-10-18 (+31d) | 105d → 87d |
| 096726-03 | GOV FIO - Quartz Flooring | 2021-09-18 → 2021-10-19 (+31d) | 2021-09-24 → 2021-10-25 (+31d) | 157d → 129d |
| 6800 | **09 68 00 Carpeting (FIO)** | 2021-07-01 → 2021-08-02 (+32d) | 2021-10-22 → 2021-11-23 (+32d) |  |
| 096800-01 | SUBM - Carpeting | 2021-07-01 → 2021-08-02 (+32d) | 2021-08-26 → 2021-09-27 (+32d) | 91d → 73d |
| 096800-02 | QC APPR - Carpeting | 2021-08-27 → 2021-09-28 (+32d) | 2021-09-17 → 2021-10-18 (+31d) | 91d → 73d |
| 096800-03 | GOV FIO - Carpeting | 2021-09-18 → 2021-10-19 (+31d) | 2021-09-24 → 2021-10-25 (+31d) | 136d → 108d |
| 096800-13 | PROC - Carpeting | 2021-09-27 → 2021-10-26 (+29d) | 2021-10-22 → 2021-11-23 (+32d) | 91d → 73d |
| 6919 | **09 69 19 Stringerless Access Flooring (FIO)** |  | 2021-09-17 → 2021-10-18 (+31d) |  |
| 096919-01 | SUBM - Access Flooring |  | 2021-07-15 → 2021-08-13 (+29d) | 150d → 134d |
| 096919-03 | GOV FIO - Access Flooring |  | 2021-07-22 → 2021-08-20 (+29d) | 221d → 199d |
| 096919-13 | PROC - Access Flooring | 2021-07-23 → 2021-08-23 (+31d) | 2021-09-17 → 2021-10-18 (+31d) | 150d → 134d |
| 8420 | **09 84 20 Acoustical Panels** | 2021-07-01 → 2021-08-02 (+32d) | 2021-08-28 → 2021-09-26 (+29d) |  |
| 098420-01 | SUBM - Acoustical Panels | 2021-07-01 → 2021-08-02 (+32d) | 2021-07-29 → 2021-08-27 (+29d) | 186d → 173d |
| 098420-02 | GOV APPR - Acoustical Panels | 2021-07-30 → 2021-08-28 (+29d) | 2021-08-28 → 2021-09-26 (+29d) | 271d → 252d |
| 9000 | **09 90 00 Paints and Coatings (FIO)** | 2021-07-01 → 2021-08-02 (+32d) | 2021-09-24 → 2021-10-25 (+31d) |  |
| 099000-01 | SUBM - Paints & Coatings | 2021-07-01 → 2021-08-02 (+32d) | 2021-08-26 → 2021-09-27 (+32d) | 37d → 18d |
| 099000-02 | QC APPR - Paints & Coatings | 2021-08-27 → 2021-09-28 (+32d) | 2021-09-17 → 2021-10-18 (+31d) | 37d → 18d |
| 099000-03 | GOV FIO - Paints & Coatings | 2021-09-18 → 2021-10-19 (+31d) | 2021-09-24 → 2021-10-25 (+31d) | 53d → 27d |
| 10 | **Division 10 - Specialties** |  | 2021-11-23 → 2021-12-22 (+29d) |  |
| 140010 | **10 14 00.10 Exterior Signage (FIO)** | 2021-07-01 → 2021-08-02 (+32d) | 2021-09-17 → 2021-10-18 (+31d) |  |
| 101400-01 | SUBM - Exterior Signage | 2021-07-01 → 2021-08-02 (+32d) | 2021-07-29 → 2021-08-27 (+29d) | 168d → 152d |
| 101400-02 | QC APPR - Exterior Signage | 2021-07-30 → 2021-08-30 (+31d) | 2021-08-12 → 2021-09-13 (+32d) | 168d → 152d |
| 101400-03 | GOV FIO - Exterior Signage | 2021-08-13 → 2021-09-14 (+32d) | 2021-08-19 → 2021-09-20 (+32d) | 245d → 220d |
| 101400-09 | PROC - Exterior Signage | 2021-08-20 → 2021-09-21 (+32d) | 2021-09-17 → 2021-10-18 (+31d) | 168d → 152d |
| 140020 | **10 14 00.20 Interior Signage** | 2021-07-01 → 2021-08-02 (+32d) | 2021-09-27 → 2021-10-22 (+25d) |  |
| 101400-20 | SUBM - Interior Signage | 2021-07-01 → 2021-08-02 (+32d) | 2021-07-29 → 2021-08-27 (+29d) | 161d → 145d |
| 101400-21 | GOV APPR - Interior Signage | 2021-07-30 → 2021-08-28 (+29d) | 2021-08-28 → 2021-09-26 (+29d) | 236d → 214d |
| 101400-29 | PROC - Interior Signage | 2021-08-30 → 2021-09-27 (+28d) | 2021-09-27 → 2021-10-22 (+25d) | 162d → 148d |
| 2113 | **10 21 13 Toilet Compartments** |  | 2021-09-27 → 2021-10-04 (+7d) |  |
| 101453-01 | SUBM - Toilet Compartments |  | 2021-07-29 → 2021-08-06 (+8d) | 159d → 158d |
| 101453-02 | GOV APPR - Toilet Compartments | 2021-07-30 → 2021-08-07 (+8d) | 2021-08-28 → 2021-09-05 (+8d) | 233d → 232d |
| 101453-09 | PROC - Toilet Compartments | 2021-08-30 → 2021-09-07 (+8d) | 2021-09-27 → 2021-10-04 (+7d) |  |
| 2213 | **10 22 13 Wire Mesh Partitions (FIO)** |  | 2021-07-29 → 2021-08-27 (+29d) |  |
| 102213-09 | PROC - Wire Mesh Partitions |  | 2021-07-29 → 2021-08-27 (+29d) | 225d → 207d |
| 2239 | **10 22 39 Folding Panel Partitions (FIO)** |  | 2021-09-14 → 2021-11-02 (+49d) |  |
| 102239-12 | GOV FIO - Fold Panel Partition |  | 2021-07-01 → 2021-08-21 (+51d) | 200d → 156d |
| 102239-08 | Field Measure - Fod Panel Part | 2021-07-02 → 2021-08-23 (+52d) | 2021-07-02 → 2021-08-23 (+52d) | 135d → 105d |
| 102239-09 | PROC - Fold Panel Part Tracks | 2021-07-06 → 2021-08-24 (+49d) | 2021-08-16 → 2021-10-05 (+50d) | 135d → 105d |
| 102239-10 | PROC - Fold Panel Part Panels | 2021-07-06 → 2021-08-24 (+49d) | 2021-09-14 → 2021-11-02 (+49d) | 176d → 146d |
| 2600 | **10 26 00 Wall Protection** | 2021-07-01 → 2021-08-02 (+32d) | 2021-10-11 → 2021-11-05 (+25d) |  |
| 102600-01 | SUBM - Wall Protection | 2021-07-01 → 2021-08-02 (+32d) | 2021-07-29 → 2021-08-27 (+29d) | 130d → 114d |
| 102600-02 | GOV APPR - Wall Protection | 2021-07-30 → 2021-08-28 (+29d) | 2021-08-28 → 2021-09-26 (+29d) | 192d → 170d |
| 102600-09 | PROC - Wall Protection | 2021-08-30 → 2021-09-27 (+28d) | 2021-10-11 → 2021-11-05 (+25d) | 130d → 116d |
| 2641 | **10 26 41 Bullet Resistant Panels** |  | 2021-07-29 → 2021-08-27 (+29d) |  |
| 102641-09 | PROC - Bullet Resistant Panels |  | 2021-07-29 → 2021-08-27 (+29d) | 66d → 48d |
| 2813 | **10 28 13 Toilet Accessories** |  | 2021-09-10 → 2021-09-24 (+14d) |  |
| 102813-01 | SUBM - Toilet Accessories |  | 2021-07-13 → 2021-08-06 (+24d) | 178d → 173d |
| 102813-02 | GOV APPR - Toilet Accessories | 2021-07-14 → 2021-07-15 A (+1d) | 2021-08-12 → 2021-08-26 (+14d) | 259d → 252d |
| 102813-09 | PROC - Toilet Accessories | 2021-08-13 → 2021-08-27 (+14d) | 2021-09-10 → 2021-09-24 (+14d) | 178d → 173d |
| 3500 | **10 35 00 Flagpoles (FIO)** |  | 2021-08-19 → 2021-08-27 (+8d) |  |
| 103500-09 | PROC - Flagpoles |  | 2021-08-19 → 2021-08-27 (+8d) | 107d → 106d |

| ID | Task | Start | Finish | Complete | Total float |
| --- | --- | --- | --- | --- | --- |
| 4416 | **10 44 16 Fire Extinguishers** |  | 2021-09-10 → 2021-09-29 (+19d) |  |  |
| 104416-01 | SUBM - Fire Extinguishers |  | 2021-07-13 → 2021-08-11 (+29d) |  | 178d → 170d |
| 104416-02 | GOV APPR - Fire Extinguishers | 2021-07-14 → 2021-07-15 A (+1d) | 2021-08-12 → 2021-08-31 (+19d) |  | 259d → 247d |
| 104416-09 | PROC - Fire Extinguishers | 2021-08-13 → 2021-09-01 (+19d) | 2021-09-10 → 2021-09-29 (+19d) |  | 178d → 170d |
| 5113 | **10 51 13 Metal Lockers** | 2021-07-01 → 2021-08-02 (+32d) | 2021-11-23 → 2021-12-22 (+29d) |  |  |
| 105113-01 | SUBM - Metal Lockers | 2021-07-01 → 2021-08-02 (+32d) | 2021-07-29 → 2021-08-27 (+29d) |  | 106d → 90d |
| 105113-02 | GOV APPR - Metal Lockers | 2021-07-30 → 2021-08-28 (+29d) | 2021-08-28 → 2021-09-26 (+29d) |  | 158d → 136d |
| 105113-09 | PROC - Metal Lockers | 2021-08-30 → 2021-09-27 (+28d) | 2021-11-23 → 2021-12-22 (+29d) |  | 107d → 93d |
| 5613 | **10 56 13 Shelving CFCI (FIO)** | 2021-07-01 → 2021-08-02 (+32d) | 2021-11-23 → 2021-12-22 (+29d) |  |  |
| 105613-01 | SUBM - Shelving | 2021-07-01 → 2021-08-02 (+32d) | 2021-07-29 → 2021-08-27 (+29d) |  | 116d → 101d |
| 105613-02 | GOV APPR - Shelving | 2021-07-30 → 2021-08-28 (+29d) | 2021-08-28 → 2021-09-26 (+29d) |  | 172d → 151d |
| 105613-09 | PROC - Shelving | 2021-08-30 → 2021-09-27 (+28d) | 2021-11-23 → 2021-12-22 (+29d) |  | 117d → 103d |
| 7000 | **10 70 00 Exterior Sun Control Devices** |  | 2021-10-22 → 2021-11-05 (+14d) |  |  |
| 107000-01 | SUBM - Ext Sun Ctrl Devices |  | 2021-07-13 → 2021-08-06 (+24d) |  | 161d → 154d |
| 107000-02 | GOV APPR - Ext Sun Ctrl Device |  | 2021-08-12 → 2021-08-26 (+14d) |  | 236d → 227d |
| 107000-09 | PROC - Ext Sun Ctrl Devices | 2021-08-13 → 2021-08-27 (+14d) | 2021-10-22 → 2021-11-05 (+14d) |  | 161d → 154d |
| 11 | **Division 11 - Equipment** | 2021-07-01 → 2021-08-02 (+32d) | 2022-01-21 → 2022-02-23 (+33d) |  |  |
| 9819 | **11 98 19 Detention Padding (FIO)** | 2021-07-01 → 2021-08-02 (+32d) | 2021-11-05 → 2021-12-09 (+34d) |  |  |
| 119819-01 | SUBM - Detention Padding | 2021-07-01 → 2021-08-02 (+32d) | 2021-09-02 → 2021-10-04 (+32d) |  | 138d → 122d |
| 119819-02 | QC APPR - Detention Padding | 2021-09-03 → 2021-10-05 (+32d) | 2021-10-01 → 2021-11-01 (+31d) |  | 138d → 122d |
| 119819-03 | GOV FIO - Detention Padding | 2021-10-02 → 2021-11-02 (+31d) | 2021-10-08 → 2021-11-08 (+31d) |  | 202d → 178d |
| 119819-21 | PROC - Detention Padding | 2021-10-11 → 2021-11-09 (+29d) | 2021-11-05 → 2021-12-09 (+34d) |  | 138d → 122d |
| 1126 | **11 11 26 Vehicle Washing Equipment** | 2021-07-01 → 2021-08-02 (+32d) | 2022-01-21 → 2022-02-23 (+33d) |  |  |
| 111126-01 | SUBM - Vehicle Wash Equip | 2021-07-01 → 2021-08-02 (+32d) | 2021-09-24 → 2021-10-25 (+31d) |  | 57d → 40d |
| 111126-02 | GOV APPR - Vehicle Wash Equip | 2021-09-25 → 2021-10-26 (+31d) | 2021-10-24 → 2021-11-24 (+31d) |  | 86d → 60d |
| 111126-09 | PROC - Vehicle Wash Equip | 2021-10-25 → 2021-11-29 (+35d) | 2022-01-21 → 2022-02-23 (+33d) |  | 57d → 38d |
| 12 | **Division 12 - Furnishings** |  | 2021-11-15 → 2021-12-20 (+35d) |  |  |
| 2413 | **12 24 13 Roller Window Shades** | 2021-07-01 → 2021-08-02 (+32d) | 2021-10-29 → 2021-12-06 (+38d) |  |  |
| 122413-01 | SUBM - Roller Window Shades | 2021-07-01 → 2021-08-02 (+32d) | 2021-09-02 → 2021-10-04 (+32d) |  | 139d → 123d |
| 122413-02 | GOV APPR - Roller Window Shade | 2021-09-03 → 2021-10-05 (+32d) | 2021-10-02 → 2021-11-03 (+32d) |  | 205d → 180d |
| 122413-09 | PROC - Roller Window Shades | 2021-10-04 → 2021-11-04 (+31d) | 2021-10-29 → 2021-12-06 (+38d) |  | 140d → 122d |
| 3600 | **12 36 00 Countertops** | 2021-07-01 → 2021-08-02 (+32d) | 2021-11-15 → 2021-12-20 (+35d) |  |  |
| 123600-01 | SUBM - Countertops | 2021-07-01 → 2021-08-02 (+32d) | 2021-09-02 → 2021-10-04 (+32d) |  | 72d → 53d |
| 123600-02 | GOV APPR - Countertops | 2021-09-03 → 2021-10-05 (+32d) | 2021-10-02 → 2021-11-03 (+32d) |  | 107d → 78d |
| 123600-09 | FABR - Countertops | 2021-10-04 → 2021-11-04 (+31d) | 2021-11-15 → 2021-12-20 (+35d) |  | 71d → 51d |
| 4813 | **12 48 13 Entrance Floor Mats and Frames** |  | 2021-09-10 → 2021-09-24 (+14d) |  |  |
| 124813-01 | SUBM - Entrance Floor Mats |  | 2021-07-13 → 2021-08-06 (+24d) |  | 181d → 176d |
| 124813-02 | GOV APPR - Entrance Floor Mats | 2021-07-14 → 2021-07-13 A (-1d) | 2021-08-12 → 2021-08-26 (+14d) |  | 264d → 257d |
| 124813-09 | PROC - Entrance Floor Mats | 2021-08-13 → 2021-08-27 (+14d) | 2021-09-10 → 2021-09-24 (+14d) |  | 181d → 176d |
| 13 | **Division 13 - Special Construction** |  | 2021-12-22 → 2021-12-13 (-9d) |  |  |
| 0480 | **13 04 80 Canopy** |  | 2021-09-03 → 2021-08-26 (-8d) |  |  |
| 130480-09 | Canopy Submittals Approved |  | 2021-07-01 → 2021-08-02 (+32d) |  | 44d → 73d |
| 130480-12 | FABR Canopy | 2021-07-02 → 2021-06-01 A (-31d) | 2021-09-03 → 2021-08-26 (-8d) |  | 44d → 73d |
| 1931 | **13 19 31 Vertical Lift Kennel Doors** |  | 2021-12-22 → 2021-12-13 (-9d) |  |  |
| 131931-01 | SUBM - Vert Lift Kennel Doors | 2021-07-01 A | 2021-09-24 → 2021-09-13 (-11d) |  | 126d → 138d |
| 131931-02 | GOV APPR - Vert Lift Ken Doors | 2021-09-25 → 2021-09-14 (-11d) | 2021-10-24 → 2021-10-13 (-11d) |  | 186d → 202d |
| 131931-09 | PROC - Vert Lift Kennel Doors | 2021-10-25 → 2021-10-14 (-11d) | 2021-12-22 → 2021-12-13 (-9d) |  | 128d → 138d |
| 3419 | **13 34 19 Metal Building Systems** |  | 2021-08-12 → 2021-07-29 (-14d) |  |  |
| 2 | **Building 5** |  | 2021-08-12 → 2021-07-29 (-14d) |  |  |
| 133419-59 | FABR Metal Bldgs - B5 |  | 2021-08-12 → 2021-07-29 A (-14d) | 0% → 100% | 87d → none |
| 21 | **Division 21 - Fire Suppression** |  | 2021-09-24 → 2021-10-11 (+17d) |  |  |
| 1317 | **21 13 17 Dry Pipe Sprinkler System, Fire Protection** |  | 2021-07-29 → 2021-08-13 (+15d) |  |  |
| 211317-12 | PROC - Dry Pipe Sprink Sys |  | 2021-07-29 → 2021-08-13 (+15d) |  | 36d → 42d |
| 3000 | **21 30 00 Fire Pumps** |  | 2021-09-24 → 2021-10-11 (+17d) |  |  |
| 213000-06 | GOV APPR - Fire Pumps |  | 2021-07-15 → 2021-07-07 A (-8d) | 0% → 100% | 51d → none |
| 213000-12 | PROC - Fire Pumps | 2021-07-16 → 2021-07-08 A (-8d) | 2021-09-24 → 2021-10-11 (+17d) |  | 51d → 43d |
| 22 | **Division 22 - Plumbing** |  | 2021-09-11 → 2021-09-29 (+18d) |  |  |
| 0000 | **22 00 00 Plumbing General Purpose** |  | 2021-08-27 → 2021-09-29 (+33d) |  |  |
| 220000-01 | SUBM - Plumbing Sys |  | 2021-07-01 → 2021-08-02 (+32d) |  | 170d → 154d |
| 220000-02 | GOV APPR - Plumbing Sys |  | 2021-07-16 → 2021-08-17 (+32d) |  | 250d → 225d |
| 220000-09 | PROC - Plumbing Fixtures | 2021-07-19 → 2021-08-18 (+30d) | 2021-08-27 → 2021-09-29 (+33d) |  | 171d → 154d |
| 0719 | **22 07 19 Plumbing Piping Insulation** |  | 2021-09-11 → 2021-09-12 (+1d) |  |  |
| 220719-01 | SUBM - Plumbing Insulation |  | 2021-08-12 → 2021-08-13 (+1d) |  |  |
| 220719-02 | GOV APPR - Plumbing Insulation | 2021-08-13 → 2021-08-14 (+1d) | 2021-09-11 → 2021-09-12 (+1d) |  | 23d → 25d |
| 23 | **Division 23 - HVAC** |  | 2021-12-12 → 2022-01-12 (+31d) |  |  |
| 0000 | **23 00 00 Air Supply, Distribution, Ventilation, and Exhaust Systems** |  | 2021-09-27 → 2021-08-27 (-31d) |  |  |
| 230000-01 | SUBM - HVAC Sys |  | 2021-07-15 → 2021-07-06 A (-9d) | 0% → 100% | 29d → none |
| 230000-02 | GOV APPR - HVAC Sys |  | 2021-07-30 → 2021-07-08 A (-22d) | 0% → 100% | 41d → none |
| 230000-22 | PROC - SDB - VAVs |  | 2021-09-13 → 2021-08-20 (-24d) |  | 28d → 67d |
| 230000-32 | PROC - CRAC Units |  | 2021-09-27 → 2021-08-27 (-31d) |  | 83d → 106d |

| ID | Task | Start | Finish | Complete | Total float |
| --- | --- | --- | --- | --- | --- |
| 0548 | **23 05 48 Vibration and Seismic Controls for HVAC Piping and Equipment** |  | 2021-08-28 → 2021-09-12 (+15d) |  |  |
| 230548-01 | SUBM - Vibr & Seis Ctrl - HVAC |  | 2021-07-29 → 2021-08-13 (+15d) |  | 41d → 49d |
| 230548-02 | GOV APPR - Vib & Seis Ctr HVAC | 2021-07-30 → 2021-08-14 (+15d) | 2021-08-28 → 2021-09-12 (+15d) |  | 60d → 71d |
| 0593 | **23 05 93 Testing, Adjusting, and Balancing for HVAC** | 2021-07-01 → 2021-08-01 (+31d) | 2021-12-12 → 2022-01-12 (+31d) |  |  |
| 230593-01 | SUBM - TAB Specialist | 2021-07-01 → 2021-08-01 (+31d) | 2021-08-14 → 2021-09-14 (+31d) |  | 93d → 67d |
| 230593-11 | SUBM - TAB Agency & Personnel | 2021-07-01 → 2021-08-01 (+31d) | 2021-08-14 → 2021-09-14 (+31d) |  | 93d → 67d |
| 230593-02 | GOV APPR - TAB Specialist | 2021-08-15 → 2021-09-15 (+31d) | 2021-09-13 → 2021-10-14 (+31d) |  | 93d → 67d |
| 230593-12 | GOV APPR - TAB Agency & Person | 2021-08-15 → 2021-09-15 (+31d) | 2021-09-13 → 2021-10-14 (+31d) |  | 93d → 67d |
| 230593-22 | Schedule Pre-Dalt/TAB Meeting | 2021-09-14 → 2021-10-15 (+31d) | 2021-09-20 → 2021-10-21 (+31d) |  | 119d → 91d |
| 230593-32 | SUBM - TAB Design Review | 2021-09-14 → 2021-10-15 (+31d) | 2021-11-12 → 2021-12-13 (+31d) |  | 93d → 67d |
| 230593-23 | Pre-Dalt/TAB Meeting | 2021-09-21 → 2021-10-22 (+31d) | 2021-09-21 → 2021-10-22 (+31d) |  | 80d → 60d |
| 230593-33 | GOV APPR - TAB Design Review | 2021-11-13 → 2021-12-14 (+31d) | 2021-12-12 → 2022-01-12 (+31d) |  | 93d → 67d |
| 0700 | **23 07 00 Thermal Insulation for Mechanical Systems** |  | 2021-09-25 → 2021-10-13 (+18d) |  |  |
| 230700-01 | SUBM - Insulation for Mech |  | 2021-08-26 → 2021-09-13 (+18d) |  | 85d → 79d |
| 230700-02 | GOV APPR - Insulation for Mech | 2021-08-27 → 2021-09-14 (+18d) | 2021-09-25 → 2021-10-13 (+18d) |  | 129d → 116d |
| 0900 | **23 09 00 Instrumentation and Control for HVAC** | 2021-07-01 → 2021-08-02 (+32d) | 2021-10-24 → 2021-11-24 (+31d) |  |  |
| 230900-01 | SUBM - Instrument & Ctrl HVAC | 2021-07-01 → 2021-08-02 (+32d) | 2021-09-24 → 2021-10-25 (+31d) |  | 65d → 45d |
| 230900-02 | GOV APPR - Instrmt & Ctrl HVAC | 2021-09-25 → 2021-10-26 (+31d) | 2021-10-24 → 2021-11-24 (+31d) |  | 98d → 70d |
| 1125 | **23 11 25 Facility Gas Piping** |  | 2021-08-21 → 2021-09-05 (+15d) |  |  |
| 231125-01 | SUBM - Facility Gas Piping |  | 2021-07-22 → 2021-08-06 (+15d) |  | 16d → 7d |
| 231125-02 | GOV APPR - Facility Gas Piping | 2021-07-23 → 2021-08-07 (+15d) | 2021-08-21 → 2021-09-05 (+15d) |  | 23d → 11d |
| 2123 | **23 21 23 Hydronic Pumps** |  | 2021-08-26 → 2021-09-13 (+18d) |  |  |
| 232123-12 | PROC - Hydronic Pumps |  | 2021-08-26 → 2021-09-13 (+18d) |  | 72d → 63d |
| 2500 | **23 25 00 Chemical Treatment of Water for Mechanical Systems** |  | 2021-10-10 → 2021-11-10 (+31d) |  |  |
| 232500-01 | SUBM - Water Treatment Sys |  | 2021-09-10 → 2021-10-11 (+31d) |  | 100d → 84d |
| 232500-02 | GOV APPR - Water Treatment Sys | 2021-09-11 → 2021-10-12 (+31d) | 2021-10-10 → 2021-11-10 (+31d) |  | 149d → 123d |
| 5200 | **23 52 00 Heating Boilers** |  | 2021-10-11 → 2021-11-05 (+25d) |  |  |
| 235200-01 | SUBM - Heating Boilers |  | 2021-07-15 → 2021-08-13 (+29d) |  | 40d → 21d |
| 235200-02 | GOV APPR - Heating Boilers |  | 2021-08-14 → 2021-09-12 (+29d) |  | 59d → 32d |
| 235200-12 | PROC - Heating Boilers | 2021-08-16 → 2021-09-13 (+28d) | 2021-10-11 → 2021-11-05 (+25d) |  | 41d → 24d |
| 5416 | **23 54 16 Heating System; Gas-Fired Heaters (FIO)** |  | 2021-08-26 → 2021-09-13 (+18d) |  |  |
| 235416-12 | PROC - Gas-Fired Heaters |  | 2021-08-26 → 2021-09-13 (+18d) |  | 161d → 155d |
| 6410 | **23 64 10 Water Chillers, Vapor Compression Type** |  | 2021-09-10 → 2021-09-27 (+17d) |  |  |
| 236410-12 | PROC - Water Chillers |  | 2021-09-10 → 2021-09-27 (+17d) |  | 62d → 53d |
| 6426 | **23 64 26 Chilled, Chilled-Hot, and Condenser Water Piping Systems** |  | 2021-09-13 → 2021-08-20 (-24d) |  |  |
| 236426-01 | SUBM - Hydronic Piping |  | 2021-07-15 → 2021-08-02 (+18d) |  | 55d → 43d |
| 236426-02 | GOV APPR - Hydronic Piping |  | 2021-08-14 → 2021-08-07 (-7d) |  | 79d → 60d |
| 236426-12 | PROC - Hydronic Piping | 2021-08-16 → 2021-06-14 A (-63d) | 2021-09-13 → 2021-08-20 (-24d) |  | 55d → 42d |
| 7313 | **23 73 13 Modular Indoor Central-Station Air-Handling Units** |  | 2021-09-10 → 2021-09-27 (+17d) |  |  |
| 237313-12 | PROC - Indoor AHUs |  | 2021-09-10 → 2021-09-27 (+17d) |  | 61d → 53d |
| 26 | **Division 26 - Electrical** |  | 2021-12-08 → 2022-01-17 (+40d) |  |  |
| 0500 | **26 05 00 Common Work Results for Electrical** |  | 2021-08-07 → 2021-08-12 (+5d) |  |  |
| 260000-01 | SUBM - Common Work Result Elec |  | 2021-07-08 → 2021-08-02 (+25d) | 0% → 50% | 81d → 90d |
| 260000-02 | GOV APPR - Common Wrk Res Elec | 2021-07-09 → 2021-07-06 A (-3d) | 2021-08-07 → 2021-08-12 (+5d) |  | 116d → 132d |
| 0519 | **26 05 19 Insulated Wire and Cable** |  | 2021-08-11 → 2021-07-20 (-22d) |  |  |
| 260519-01 | SUBM - Insulated Wire & Cable |  | 2021-07-12 → 2021-07-13 A (+1d) | 0% → 100% | 92d → none |
| 260519-02 | GOV APPR - Insul Wire & Cable | 2021-07-13 → 2021-07-14 A (+1d) | 2021-08-11 → 2021-07-20 A (-22d) | 0% → 100% | 131d → none |
| 0548 | **26 05 48 Seismic Protection for Electrical Equipment** |  | 2021-08-28 → 2021-09-12 (+15d) |  |  |
| 260548-01 | SUBM - Seis Protect for Elec |  | 2021-07-29 → 2021-08-13 (+15d) |  | 71d → 61d |
| 260548-02 | GOV APPR - Seis Protect Elec | 2021-07-30 → 2021-08-14 (+15d) | 2021-08-28 → 2021-09-12 (+15d) |  | 102d → 88d |
| 0571 | **26 05 71 Low Voltage Overcurrent Protective Devices** |  | 2021-08-14 → 2021-09-12 (+29d) |  |  |
| 260571-01 | SUBM - LV Overcurr Protect Dev |  | 2021-07-15 → 2021-08-13 (+29d) |  | 21d → 10d |
| 260571-02 | GOV APPR - LV Overcur Prot Dev | 2021-07-16 → 2021-08-14 (+29d) | 2021-08-14 → 2021-09-12 (+29d) |  | 29d → 15d |
| 0800 | **26 08 00 Apparatus Inspection and Testing** | 2021-07-01 → 2021-08-02 (+32d) | 2021-08-28 → 2021-09-26 (+29d) |  |  |
| 260800-01 | SUBM - Accept Test & Insp | 2021-07-01 → 2021-08-02 (+32d) | 2021-07-29 → 2021-08-27 (+29d) |  | 101d → 82d |
| 260800-02 | GOV APPR - Accept Test & Insp | 2021-07-30 → 2021-08-28 (+29d) | 2021-08-28 → 2021-09-26 (+29d) |  | 149d → 123d |
| 0923 | **26 09 23 Lighting Control Devices** |  | 2021-10-02 → 2021-09-26 (-6d) |  |  |
| 260923-01 | SUBM - Lighting Ctrl Devices |  | 2021-09-02 → 2021-08-27 (-6d) |  | 95d → 104d |
| 260923-02 | GOV APPR - Lighting Ctr Device | 2021-09-03 → 2021-08-28 (-6d) | 2021-10-02 → 2021-09-26 (-6d) |  | 143d → 154d |
| 2000 | **26 20 00 Interior Distribution System** |  | 2021-08-14 → 2021-08-07 (-7d) |  |  |
| 262000-01 | SUBM - Int Distribution System |  | 2021-07-15 → 2021-08-02 (+18d) | 0% → 95% | 16d → 24d |
| 262000-02 | GOV APPR - Int Distrib Sys |  | 2021-08-14 → 2021-08-07 (-7d) |  | 23d → 33d |
| 2300 | **26 23 00 Switchboards and Switchgear** |  | 2021-11-08 → 2021-11-22 (+14d) |  |  |
| 262300-12 | PROC - Switchboards/Switchgear |  | 2021-11-08 → 2021-11-22 (+14d) |  | 19d → 11d |
| 2413 | **26 24 13 Switchboards** |  | 2021-10-22 → 2021-11-08 (+17d) |  |  |
| 262413-12 | PROC - Main Switchboards MSB1 |  | 2021-10-22 → 2021-11-08 (+17d) |  | 28d → 18d |
| 2416 | **26 24 16 Panelboards** |  | 2021-08-26 → 2021-09-13 (+18d) |  |  |
| 262416-12 | PROC - Panelboards |  | 2021-08-26 → 2021-09-13 (+18d) |  | 53d → 45d |
| 2923 | **26 29 23 Variable Frequency Drive Systems Under 600 Volts** |  | 2021-12-01 → 2021-12-13 (+12d) |  |  |
| 262923-01 | SUBM - Variable Freq Drive Sys |  | 2021-09-02 → 2021-09-13 (+11d) |  | 35d → 34d |

| ID | Task | Start | Finish | Complete | Total float |
| --- | --- | --- | --- | --- | --- |
| 262923-02 | GOV APPR - Variable Freq Drive | 2021-09-03 → 2021-09-14 (+11d) | 2021-10-02 → 2021-10-13 (+11d) |  | 52d → 48d |
| 262923-12 | PROC - Variable Freq Drive Sys | 2021-10-04 → 2021-10-14 (+10d) | 2021-12-01 → 2021-12-13 (+12d) |  | 36d → 31d |
| 3215 | **26 32 15 Diesel-Generator Set Stationaly 100-2500 KW, With Auxiliaries** |  | 2021-10-22 → 2022-01-17 (+87d) |  |  |
| 263215-01 | SUBM - Diesel-Generator Set |  | 2021-07-01 → 2021-08-02 (+32d) |  | 41d → 77d |
| 263215-12 | PROC - Diesel-Generator Set |  | 2021-10-22 → 2022-01-17 (+87d) |  | 41d → 77d |
| 3353 | **26 33 53 Uninterruptible Power Supply UPS** |  | 2021-09-24 → 2021-10-11 (+17d) |  |  |
| 263353-12 | PROC - UPS |  | 2021-09-24 → 2021-10-11 (+17d) |  | 78d → 70d |
| 5100 | **26 51 00 Interior Lighting** |  | 2021-11-23 → 2021-12-22 (+29d) |  |  |
| 265100-01 | SUBM - Interior Lighting |  | 2021-07-29 → 2021-08-27 (+29d) |  | 55d → 39d |
| 265400-02 | GOV APPR - Interior Lighting | 2021-07-30 → 2021-08-28 (+29d) | 2021-08-28 → 2021-09-26 (+29d) |  | 80d → 56d |
| 265400-12 | PROC - Interior Lighting | 2021-08-30 → 2021-09-27 (+28d) | 2021-11-23 → 2021-12-22 (+29d) |  | 55d → 39d |
| 5200 | **26 52 00 Emergency Lighting** |  | 2021-09-24 → 2021-10-11 (+17d) |  |  |
| 265200-12 | PROC - Emergency Lighting |  | 2021-09-24 → 2021-10-11 (+17d) |  | 96d → 88d |
| 5300 | **26 53 00 Exit Signs** |  | 2021-08-12 → 2021-08-27 (+15d) |  |  |
| 265300-12 | PROC - Exit Signs |  | 2021-08-12 → 2021-08-27 (+15d) |  | 128d → 120d |
| 5421 | **26 51 21 Helipad Lighting & Visual Navigation Aids** |  | 2021-11-01 → 2021-10-25 (-7d) |  |  |
| 265421-01 | SUBM - Helipad Light/Vis Nav |  | 2021-07-08 → 2021-07-19 A (+11d) | 0% → 100% | 131d → none |
| 265421-02 | GOV APPR - Helipad Ltg/Vis Nav |  | 2021-08-07 → 2021-07-21 A (-17d) | 0% → 100% | 193d → none |
| 265421-12 | PROC - Helipad Light/Vis Nav | 2021-08-09 → 2021-07-22 A (-18d) | 2021-11-01 → 2021-10-25 (-7d) |  | 132d → 140d |
| 5553 | **26 55 53 Security Lighting** |  | 2021-12-08 → 2022-01-12 (+35d) |  |  |
| 265553-01 | SUBM - Security Lighting |  | 2021-08-12 → 2021-09-13 (+32d) |  | 45d → 29d |
| 265553-02 | GOV APPR - Security Lighting | 2021-08-13 → 2021-09-14 (+32d) | 2021-09-11 → 2021-10-13 (+32d) |  | 66d → 39d |
| 265553-12 | PROC - Security Lighting | 2021-09-13 → 2021-10-14 (+31d) | 2021-12-08 → 2022-01-12 (+35d) |  | 46d → 26d |
| 5600 | **26 56 00 Exterior Lighting** |  | 2021-12-08 → 2022-01-12 (+35d) |  |  |
| 265600-01 | SUBM - Exterior Lighting |  | 2021-08-12 → 2021-09-13 (+32d) |  | 72d → 52d |
| 265600-02 | GOV APPR - Exterior Lighting | 2021-08-13 → 2021-09-14 (+32d) | 2021-09-11 → 2021-10-13 (+32d) |  | 106d → 77d |
| 265600-12 | PROC - Exterior Lighting | 2021-09-13 → 2021-10-14 (+31d) | 2021-12-08 → 2022-01-12 (+35d) |  | 71d → 51d |
| 27 | **Division 27 - Communications** |  | 2021-10-24 → 2021-10-27 (+3d) |  |  |
| 0528 | **27 05 28 Cable Trays for Communications Systems** |  | 2021-09-13 → 2021-08-27 (-17d) |  |  |
| 270528-01 | SUBM - Cable Trays |  | 2021-07-01 → 2021-07-06 A (+5d) | 0% → 100% | 84d → none |
| 270528-02 | GOV APPR - Cable Trays | 2021-07-02 → 2021-07-07 A (+5d) | 2021-07-31 → 2021-07-08 A (-23d) | 0% → 100% | 121d → none |
| 270528-12 | PROC - Cable Trays | 2021-08-02 → 2021-07-09 A (-24d) | 2021-09-13 → 2021-08-27 (-17d) |  | 82d → 95d |
| 1000 | **27 10 00 Building Telecommunications Cabling System** |  | 2021-10-24 → 2021-10-27 (+3d) |  |  |
| 271000-01 | SUBM - Bldg Telecom Cabling |  | 2021-09-24 → 2021-09-27 (+3d) |  | 42d → 46d |
| 271000-02 | GOV APPR - Bldg Telecom Cable | 2021-09-25 → 2021-09-28 (+3d) | 2021-10-24 → 2021-10-27 (+3d) |  | 64d → 67d |
| 1323 | **27 13 23 Communications Optical Backbone Cabling** |  | 2021-10-24 → 2021-10-27 (+3d) |  |  |
| 271323-01 | SUBM - Comm Opt Backbone Cable |  | 2021-09-24 → 2021-09-27 (+3d) |  | 42d → 46d |
| 271323-02 | GOV APPR - Comm Opt Backbone | 2021-09-25 → 2021-09-28 (+3d) | 2021-10-24 → 2021-10-27 (+3d) |  | 64d → 67d |
| 2110 | **27 21 10 Fiber Optic Data Transmission System** |  | 2021-10-24 → 2021-10-27 (+3d) |  |  |
| 272100-01 | SUBM - FO Data Transmission |  | 2021-09-24 → 2021-09-27 (+3d) |  | 65d → 66d |
| 272100-02 | GOV APPR -FO Data Transmission | 2021-09-25 → 2021-09-28 (+3d) | 2021-10-24 → 2021-10-27 (+3d) |  |  |
| 5400 | **27 54 00 Community Antenna Television CATV Systems** |  | 2021-10-24 → 2021-10-27 (+3d) |  |  |
| 275400-01 | SUBM - Community Antenna CATV |  | 2021-09-24 → 2021-09-27 (+3d) |  | 65d → 66d |
| 275400-02 | GOV APPR - Community Ant CATV | 2021-09-25 → 2021-09-28 (+3d) | 2021-10-24 → 2021-10-27 (+3d) |  |  |
| 28 | **Division 28 - Electronic Safety and Security** |  | 2021-12-22 → 2022-01-12 (+21d) |  |  |
| 0526 | **28 05 26 Grounding and Bonding for Electronic Safety and Security** |  | 2021-08-05 → 2021-07-14 (-22d) |  |  |
| 280526-01 | SUBM - Grounding & Bonding ESS |  | 2021-07-06 A | 0% → 100% | 119d → none |
| 280526-02 | GOV APPR - Ground & Bond ESS | 2021-07-07 A | 2021-08-05 → 2021-07-14 A (-22d) | 0% → 100% | 174d → none |
| 0810 | **28 08 10 Electronic Security System Acceptance Testing** | 2021-07-01 → 2021-08-02 (+32d) | 2021-10-24 → 2021-11-24 (+31d) |  |  |
| 280810-01 | SUBM - ESS Test Plan | 2021-07-01 → 2021-08-02 (+32d) | 2021-09-24 → 2021-10-25 (+31d) |  | 144d → 124d |
| 280810-02 | GOV APPR - ESS Test Plan | 2021-09-25 → 2021-10-26 (+31d) | 2021-10-24 → 2021-11-24 (+31d) |  | 210d → 182d |
| 1005 | **28 10 05 Electronic Security System (ESS)** |  | 2021-12-22 → 2022-01-12 (+21d) |  |  |
| 281005-01 | SUBM - ESS |  | 2021-08-26 → 2021-09-13 (+18d) |  | 35d → 29d |
| 281005-02 | GOV APPR - ESS | 2021-08-27 → 2021-09-14 (+18d) | 2021-09-25 → 2021-10-13 (+18d) |  | 52d → 39d |
| 281005-12 | PROC - ESS | 2021-09-27 → 2021-10-14 (+17d) | 2021-12-22 → 2022-01-12 (+21d) |  | 36d → 26d |
| 3164 | **28 31 64 Fire Detection and Alarm System, Addressable** |  | 2021-10-11 → 2021-10-22 (+11d) |  |  |
| 283164-01 | SUBM - FA Sys |  | 2021-07-15 → 2021-08-06 (+22d) | 0% → 50% | 120d → 114d |
| 283164-02 | GOV APPR - FA Sys |  | 2021-08-14 → 2021-08-26 (+12d) |  | 176d → 168d |
| 283164-12 | PROC - FA Sys | 2021-08-16 → 2021-08-27 (+11d) | 2021-10-11 → 2021-10-22 (+11d) |  | 133d → 127d |
| 32 | **Division 32 - Exterior Improvements** |  | 2021-10-08 → 2021-11-03 (+26d) |  |  |
| 1123 | **32 11 23 Aggregate Base Courses** | 2021-07-01 → 2021-08-02 (+32d) | 2021-10-02 → 2021-11-03 (+32d) |  |  |
| 321123-01 | SUBM - Aggregate Base Courses | 2021-07-01 → 2021-08-02 (+32d) | 2021-09-02 → 2021-10-04 (+32d) |  | 92d → 76d |
| 321123-02 | GOV APPR - Agg Base Courses | 2021-09-03 → 2021-10-05 (+32d) | 2021-10-02 → 2021-11-03 (+32d) |  | 138d → 113d |
| 1216 | **32 12 16 Hot-Mix Asphalt (HMA) For Roads** | 2021-07-01 → 2021-08-02 (+32d) | 2021-10-02 → 2021-11-03 (+32d) |  |  |
| 321216-01 | SUBM - HMA for Roads | 2021-07-01 → 2021-08-02 (+32d) | 2021-09-02 → 2021-10-04 (+32d) |  | 131d → 113d |
| 321216-02 | GOV APPR - HMA for Roads | 2021-09-03 → 2021-10-05 (+32d) | 2021-10-02 → 2021-11-03 (+32d) |  | 194d → 167d |
| 1313 | **32 13 13 Portland Cement Concrete Pavement for Roads and Site Facilities** | 2021-07-01 → 2021-08-02 (+32d) | 2021-10-02 → 2021-11-03 (+32d) |  |  |
| 321313-01 | SUBM - Concrete Pavement | 2021-07-01 → 2021-08-02 (+32d) | 2021-09-02 → 2021-10-04 (+32d) |  | 105d → 89d |
| 321313-02 | GOV APPR - Concrete Pavement | 2021-09-03 → 2021-10-05 (+32d) | 2021-10-02 → 2021-11-03 (+32d) |  | 156d → 130d |
| 1500 | **32 15 00 Aggregate Surfacing** | 2021-07-01 → 2021-08-02 (+32d) | 2021-10-02 → 2021-11-03 (+32d) |  |  |

| ID | Task | Start | Finish | Complete | Total float |
| --- | --- | --- | --- | --- | --- |
| 321500-01 | SUBM - Aggregate Surfacing | 2021-07-01 → 2021-08-02 (+32d) | 2021-09-02 → 2021-10-04 (+32d) |  | 169d → 149d |
| 321500-02 | GOV APPR - Aggregate Surfacing | 2021-09-03 → 2021-10-05 (+32d) | 2021-10-02 → 2021-11-03 (+32d) |  | 246d → 217d |
| 1723 | **32 17 23 Pavement Markings** | 2021-07-01 → 2021-08-02 (+32d) | 2021-10-02 → 2021-11-03 (+32d) |  |  |
| 321613-01 | SUBM - Pavement Markings | 2021-07-01 → 2021-08-02 (+32d) | 2021-09-02 → 2021-10-04 (+32d) |  | 174d → 155d |
| 321613-02 | GOV APPR - Pavement Markings | 2021-09-03 → 2021-10-05 (+32d) | 2021-10-02 → 2021-11-03 (+32d) |  | 253d → 225d |
| 3113 | **32 31 13 Chain Link Fences and Gates** |  | 2021-10-08 → 2021-10-01 (-7d) |  |  |
| 323113-01 | SUBM - Chain Link Fences/Gates |  | 2021-07-13 → 2021-07-15 A (+2d) | 0% → 100% | 104d → none |
| 323113-02 | GOV APPR - Chain Link Fence/Gt |  | 2021-08-12 → 2021-08-05 (-7d) |  | 152d → 164d |
| 323113-12 | PROC - Chain Link Fences/Gates | 2021-08-13 → 2021-05-11 A (-94d) | 2021-09-10 → 2021-07-01 A (-71d) | 0% → 100% | 122d → none |
| 323113-22 | PROC - Gate Oper/Pivot Gates | 2021-08-13 → 2021-08-06 (-7d) | 2021-10-08 → 2021-10-01 (-7d) |  | 102d → 110d |
| 33 | **Division 33 - Utilities** |  | 2021-12-22 → 2021-12-01 (-21d) |  |  |
| 1615 | **33 16 15 Water Storage Steel Tanks** |  | 2021-11-08 → 2021-12-01 (+23d) |  |  |
| 331615-01 | SUBM - Water Storage Tanks |  | 2021-07-15 → 2021-08-13 (+29d) |  | 40d → 29d |
| 331615-02 | GOV APPR - Water Storage Tanks |  | 2021-08-14 → 2021-09-02 (+19d) |  | 59d → 42d |
| 331615-12 | PROC - Water Storage Tanks | 2021-08-16 → 2021-09-03 (+18d) | 2021-11-08 → 2021-12-01 (+23d) |  | 41d → 29d |
| 3000 | **33 30 00 Sanitary Sewerage (FIO)** |  | 2021-08-12 → 2021-08-24 (+12d) |  |  |
| 333000-01 | SUBM - Sanitary Sewerage |  | 2021-07-15 → 2021-08-06 (+22d) |  | 24d → 23d |
| 333000-02 | QC APPR - Sanitary Sewerage |  | 2021-07-22 → 2021-08-10 (+19d) |  | 24d → 23d |
| 333000-03 | GOV FIO - Sanitary Sewerage |  | 2021-07-29 → 2021-08-17 (+19d) |  |  |
| 333000-12 | PROC - Sanitary Sewerage | 2021-07-30 → 2020-11-06 A (-266d) | 2021-08-12 → 2021-08-24 (+12d) | 0% → 95% | 24d → 23d |
| 3213 | **33 32 13 Packaged Sewage Lift Stations, Wet Well Type (FIO)** |  | 2021-08-24 → 2021-09-03 (+10d) |  |  |
| 333213-01 | SUBM - Sewer Lift Station |  | 2021-07-13 → 2021-07-15 A (+2d) | 0% → 100% | 90d → none |
| 333213-02 | QC APPR - Sewer Lift Station | 2021-07-14 A | 2021-07-20 → 2021-07-15 A (-5d) | 0% → 100% | 90d → none |
| 333213-03 | GOV FIO - Sewer Lift Station | 2021-07-21 → 2021-07-16 A (-5d) | 2021-07-27 → 2021-08-07 (+11d) |  | 132d → 123d |
| 333213-12 | PROC - Sewer Lift Station | 2021-07-28 → 2021-08-09 (+12d) | 2021-08-24 → 2021-09-03 (+10d) |  | 90d → 84d |
| 4000 | **33 40 00 Storm Drainage Utilities (FIO)** |  | 2021-07-08 → 2021-07-29 (+21d) |  |  |
| 334000-12 | PROC - RCP Storm Drain & MHs |  | 2021-07-08 → 2021-07-29 A (+21d) | 50% → 100% | 37d → none |
| 5210 | **33 52 10 Service Piping, Fuel Systems** |  | 2021-11-08 → 2021-12-01 (+23d) |  |  |
| 335210-01 | SUBM - Service Pipe, Fuel Sys |  | 2021-07-15 → 2021-08-13 (+29d) |  | 55d → 45d |
| 335210-02 | GOV APPR - Serv Pipe, Fuel Sys |  | 2021-08-14 → 2021-09-02 (+19d) |  | 80d → 66d |
| 335210-12 | PROC - Service Pipe, Fuel Sys |  | 2021-11-08 → 2021-12-01 (+23d) |  | 56d → 45d |
| 5610 | **33 56 10 Factory-Fabricated Fuel Storage Tanks** |  | 2021-12-22 → 2021-09-27 (-86d) |  |  |
| 335610-12 | PROC - Fuel Storage Tanks |  | 2021-12-22 → 2021-09-27 (-86d) |  | 78d → 140d |
| 5800 | **33 58 00 Leak Detection for Fueling Systems** | 2021-07-01 → 2021-08-02 (+32d) | 2021-10-24 → 2021-11-24 (+31d) |  |  |
| 335800-01 | SUBM - Leak Detect Fueling Sys | 2021-07-01 → 2021-08-02 (+32d) | 2021-09-24 → 2021-10-25 (+31d) |  | 65d → 49d |
| 335800-02 | GOV APPR -Leak Detect Fuel Sys | 2021-09-25 → 2021-10-26 (+31d) | 2021-10-24 → 2021-11-24 (+31d) |  | 100d → 74d |
| 7102 | **33 71 02 Underground Electrical Distribution** |  | 2021-07-02 → 2021-08-03 (+32d) |  |  |
| 337102-01 | SUBM - UG Elec Dist |  | 2021-07-01 → 2021-08-02 (+32d) |  | 66d → 49d |
| 337102-02 | GOV APPR - UG Elec Dist |  | 2021-07-02 → 2021-08-03 (+32d) |  | 96d → 70d |
| 43 | **Division 43 - Process Gas and Liquid Handling, Purification, and Storage Equipment** | 2021-07-01 → 2021-08-02 (+32d) | 2021-09-24 → 2021-10-25 (+31d) |  |  |
| 2120 | **43 21 20 - Potable Water Treatment Equipment (FIO)** | 2021-07-01 → 2021-08-02 (+32d) | 2021-09-24 → 2021-10-25 (+31d) |  |  |
| 432120-01 | SUBM -Pot Water Treatment Eqp | 2021-07-01 → 2021-08-02 (+32d) | 2021-08-12 → 2021-09-13 (+32d) |  | 67d → 48d |
| 432120-02 | QC APPR - Pot Water Treatment | 2021-08-13 → 2021-09-14 (+32d) | 2021-08-19 → 2021-09-20 (+32d) |  | 67d → 48d |
| 432120-03 | GOV FIO - Pot Water Treatment | 2021-08-20 → 2021-09-21 (+32d) | 2021-08-26 → 2021-09-27 (+32d) |  | 98d → 71d |
| 432120-12 | PROC - Pot Water Treatment Eqp | 2021-08-27 → 2021-09-28 (+32d) | 2021-09-24 → 2021-10-25 (+31d) |  | 66d → 48d |
| 99 | **Material Deliveries / FOB Materials** |  | 2022-01-18 → 2022-01-20 (+2d) |  |  |
| 083463-90 | DELV Detention HM Frames | 2021-07-29 → 2021-07-14 A (-15d) | 2021-07-30 → 2021-07-14 A (-16d) | 0% → 100% | 1d → none |
| 081113-90 | DELV HM Frames - Area E CMU | 2021-07-30 → 2021-07-21 A (-9d) | 2021-08-02 → 2021-08-30 (+28d) | 0% → 90% | 47d → 31d |
| 103500-90 | DELV Sleeve for Flagpole Ftg | 2021-11-18 → 2021-07-22 A (-119d) | 2021-11-19 → 2021-07-22 A (-120d) | 0% → 100% | 45d → none |
| 081113-91 | DELV HM Frames - Areas A - D | 2021-08-03 → 2021-08-30 (+27d) | 2021-08-04 → 2021-08-31 (+27d) |  | 47d → 31d |
| 265300-90 | DELV Exit Signs | 2021-08-13 → 2021-08-30 (+17d) | 2021-08-17 → 2021-09-01 (+15d) |  | 128d → 120d |
| 270528-90 | DELV Cable Trays | 2021-09-14 → 2021-08-30 (-15d) | 2021-09-20 → 2021-09-03 (-17d) |  | 82d → 95d |
| 262416-90 | DELV Panelboards | 2021-08-27 → 2021-09-14 (+18d) | 2021-09-02 → 2021-09-20 (+18d) |  | 53d → 45d |
| 263353-90 | DELV UPS | 2021-09-27 → 2021-10-12 (+15d) | 2021-10-01 → 2021-10-18 (+17d) |  | 78d → 70d |
| 265200-90 | DELV Emergency Lighting | 2021-09-27 → 2021-10-12 (+15d) | 2021-10-01 → 2021-10-18 (+17d) |  | 96d → 88d |
| 283164-90 | DELV FA Sys | 2021-10-12 → 2021-10-25 (+13d) | 2021-10-14 → 2021-10-27 (+13d) |  | 133d → 127d |
| 087100-90 | DELV Storefront Hardware | 2021-11-17 → 2021-11-08 (-9d) | 2021-11-17 → 2021-11-08 (-9d) |  | 56d → 65d |
| 265100-90 | DELV Interior Lighting | 2021-11-24 → 2021-12-23 (+29d) | 2021-12-02 → 2021-12-30 (+28d) |  | 55d → 39d |
| 265553-90 | DELV Security Lighting | 2021-12-09 → 2022-01-13 (+35d) | 2021-12-15 → 2022-01-19 (+35d) |  | 46d → 26d |
| 281005-90 | DELV ESS | 2021-12-23 → 2022-01-13 (+21d) | 2021-12-30 → 2022-01-19 (+20d) |  | 74d → 64d |
| 062000-90 | DELV Finish Carpentry | 2022-01-12 → 2022-01-14 (+2d) | 2022-01-18 → 2022-01-20 (+2d) |  | 29d → 30d |
| 064116-90 | DELV P-Lam Cabinets | 2022-01-12 → 2022-01-14 (+2d) | 2022-01-18 → 2022-01-20 (+2d) |  | 29d → 30d |
| 066116-90 | DELV Solid Surfacing Fabs | 2022-01-12 → 2022-01-14 (+2d) | 2022-01-18 → 2022-01-20 (+2d) |  | 29d → 30d |
| 2 | **QC Preparatory Meetings** |  | 2022-04-26 → 2022-05-04 (+8d) |  |  |
| PREP1560 | Prep Mtg - Fire Alarm System | 2021-08-16 → 2021-07-14 A (-33d) | 2021-08-16 → 2021-07-14 A (-33d) | 0% → 100% | 119d → none |
| PREP1520 | Prep Mtg - HVAC | 2021-08-30 → 2021-07-26 A (-35d) | 2021-08-30 → 2021-07-26 A (-35d) | 0% → 100% | 42d → none |
| PREP1340 | Prep Mtg - Masonry | 2021-07-02 → 2021-08-03 (+32d) | 2021-07-02 → 2021-08-03 (+32d) |  | 20d → 1d |
| PREP1420 | Prep Mtg - Tube Daylight Dev | 2021-07-02 → 2021-08-03 (+32d) | 2021-07-02 → 2021-08-03 (+32d) |  | 69d → 51d |
| PREP1140 | Prep Mtg - Site Sewer | 2021-07-30 → 2021-08-18 (+19d) | 2021-07-30 → 2021-08-18 (+19d) |  | 35d → 27d |
| PREP1440 | Prep Mtg - Wall Insulation | 2021-08-31 → 2021-08-18 (-13d) | 2021-08-31 → 2021-08-18 (-13d) |  | 17d → 28d |

| ID | Task | Start | Finish | Complete | Total float |
| --- | --- | --- | --- | --- | --- |
| PREP1540 | Prep Mtg - Gypsum Board | 2021-08-04 → 2021-08-24 (+20d) | 2021-08-04 → 2021-08-24 (+20d) |  | 59d → 24d |
| PREP1360 | Prep Mtg - Water Storage Tanks | 2021-08-16 → 2021-09-03 (+18d) | 2021-08-16 → 2021-09-03 (+18d) |  | 100d → 88d |
| PREP1160 | Prep Mtg - Site Telecom | 2021-08-31 → 2021-09-09 (+9d) | 2021-08-31 → 2021-09-09 (+9d) |  | 28d → 26d |
| PREP1320 | Prep Mtg - Slope Protection | 2021-09-13 → 2021-09-15 (+2d) | 2021-09-13 → 2021-09-15 (+2d) |  | 58d → 59d |
| PREP1380 | Prep Mtg - Air Barrier | 2021-09-23 → 2021-09-15 (-8d) | 2021-09-23 → 2021-09-15 (-8d) |  | 5d → 13d |
| PREP1620 | Prep Mtg - Folding Panel Part | 2021-08-19 → 2021-09-15 (+27d) | 2021-08-19 → 2021-09-15 (+27d) |  | 132d → 119d |
| PREP1400 | Prep Mtg - Storefront/Glazing | 2021-09-24 → 2021-09-16 (-8d) | 2021-09-24 → 2021-09-16 (-8d) |  | 10d → 18d |
| PREP1200 | Prep Mtg - Site Water | 2021-09-13 → 2021-09-20 (+7d) | 2021-09-13 → 2021-09-20 (+7d) |  | 34d → 33d |
| PREP1640 | Prep Mtg - Bullet Resist Panel | 2021-08-30 → 2021-09-23 (+24d) | 2021-08-30 → 2021-09-23 (+24d) |  | 44d → 30d |
| PREP1600 | Prep Mtg - Set Elec Equip | 2021-10-11 → 2021-10-13 (+2d) | 2021-10-11 → 2021-10-13 (+2d) |  | 27d → 28d |
| PREP1660 | Prep Mtg - Doors & Frames | 2021-10-11 → 2021-10-13 (+2d) | 2021-10-11 → 2021-10-13 (+2d) |  | 91d → 92d |
| PREP1680 | Prep Mtg - Finish Electrical | 2021-10-18 → 2021-10-20 (+2d) | 2021-10-18 → 2021-10-20 (+2d) |  | 110d → 111d |
| PREP1280 | Prep Mtg - Facility Gas Piping | 2021-10-25 → 2021-11-01 (+7d) | 2021-10-25 → 2021-11-01 (+7d) |  | 56d → 53d |
| PREP1700 | Prep Mtg - Painting | 2021-11-01 → 2021-11-03 (+2d) | 2021-11-01 → 2021-11-03 (+2d) |  | 15d → 16d |
| PREP1720 | Prep Mtg - Mech Sys Insulation | 2021-11-01 → 2021-11-05 (+4d) | 2021-11-01 → 2021-11-05 (+4d) |  | 62d → 61d |
| PREP1740 | Prep Mtg - Fire Pumps | 2021-11-23 → 2021-11-29 (+6d) | 2021-11-23 → 2021-11-29 (+6d) |  | 10d → 11d |
| PREP1820 | Prep Mtg - HVAC Controls | 2021-11-23 → 2021-11-29 (+6d) | 2021-11-23 → 2021-11-29 (+6d) |  | 45d → 46d |
| PREP1840 | Prep Mtg - Acoustical Ceilings | 2021-11-23 → 2021-11-29 (+6d) | 2021-11-23 → 2021-11-29 (+6d) |  | 46d → 47d |
| PREP1860 | Prep Mtg - Coiling Counter Drs | 2021-11-23 → 2021-11-29 (+6d) | 2021-11-23 → 2021-11-29 (+6d) |  | 129d → 132d |
| PREP1760 | Prep Mtg - Water Treat Equip | 2021-11-24 → 2021-11-30 (+6d) | 2021-11-24 → 2021-11-30 (+6d) |  | 24d → 25d |
| PREP1940 | Prep Mtg - Ceramic Tiling | 2021-12-15 → 2021-11-30 (-15d) | 2021-12-15 → 2021-11-30 (-15d) |  | 71d → 87d |
| PREP1880 | Prep Mtg - Static Ctrl Floor | 2021-11-30 → 2021-12-02 (+2d) | 2021-11-30 → 2021-12-02 (+2d) |  | 24d → 25d |
| PREP1460 | Prep Mtg - Hot Mix Asphalt | 2021-12-02 → 2021-12-06 (+4d) | 2021-12-02 → 2021-12-06 (+4d) |  | 128d → 129d |
| PREP1780 | Prep Mtg - Water Supply Wells | 2021-12-03 → 2021-12-07 (+4d) | 2021-12-03 → 2021-12-07 (+4d) |  | 32d → 31d |
| PREP1900 | Prep Mtg - Communications Bldg | 2021-12-08 → 2021-12-10 (+2d) | 2021-12-08 → 2021-12-10 (+2d) |  | 13d → 14d |
| PREP1920 | Prep Mtg - Quartz Flooring | 2021-12-09 → 2021-12-13 (+4d) | 2021-12-09 → 2021-12-13 (+4d) |  | 55d → 56d |
| PREP1960 | Prep Mtg - ESS | 2021-12-20 → 2021-12-22 (+2d) | 2021-12-20 → 2021-12-22 (+2d) |  | 81d → 82d |
| PREP1980 | Prep Mtg - Metal Lockers | 2021-12-20 → 2021-12-22 (+2d) | 2021-12-20 → 2021-12-22 (+2d) |  | 90d → 93d |
| PREP2020 | Prep Mtg - Riprap | 2022-02-25 → 2021-12-27 (-60d) | 2022-02-25 → 2021-12-27 (-60d) |  | 75d → 121d |
| PREP2000 | Prep Mtg - UPS | 2021-12-23 → 2021-12-28 (+5d) | 2021-12-23 → 2021-12-28 (+5d) |  | 22d → 23d |
| PREP2040 | Prep Mtg - Cement Stucco | 2021-12-23 → 2021-12-28 (+5d) | 2021-12-23 → 2021-12-28 (+5d) |  | 14d → 12d |
| PREP2140 | Prep Mtg - Casework | 2022-01-12 → 2022-01-14 (+2d) | 2022-01-12 → 2022-01-14 (+2d) |  | 33d → 34d |
| PREP1800 | Prep Mtg - Chain Link Fencing | 2022-01-10 → 2022-01-18 (+8d) | 2022-01-10 → 2022-01-18 (+8d) |  | 41d → 38d |
| PREP2060 | Prep Mtg - Carpeting | 2022-01-13 → 2022-01-20 (+7d) | 2022-01-13 → 2022-01-20 (+7d) |  | 37d → 35d |
| PREP2100 | Prep Mtg - Resilient Flooring | 2022-01-14 → 2022-01-21 (+7d) | 2022-01-14 → 2022-01-21 (+7d) |  |  |
| PREP2120 | Prep Mtg - Ext Sun Ctrl Device | 2022-02-01 → 2022-01-21 (-11d) | 2022-02-01 → 2022-01-21 (-11d) |  | 94d → 104d |
| PREP2180 | Prep Mtg - Wall & Door Protect | 2022-01-26 → 2022-01-28 (+2d) | 2022-01-26 → 2022-01-28 (+2d) |  | 60d → 63d |
| PREP2200 | Prep Mtg - Finish Plumbing | 2022-01-26 → 2022-01-28 (+2d) | 2022-01-26 → 2022-01-28 (+2d) |  | 69d → 72d |
| PREP2220 | Prep Mtg - Access Flooring | 2022-01-27 → 2022-01-31 (+4d) | 2022-01-27 → 2022-01-31 (+4d) |  | 62d → 65d |
| PREP2240 | Prep Mtg - Toilet Accessories | 2022-02-10 → 2022-02-14 (+4d) | 2022-02-10 → 2022-02-14 (+4d) |  | 66d → 69d |
| PREP2300 | Prep Mtg - Exercise Equipment | 2022-02-24 → 2022-03-02 (+6d) | 2022-02-24 → 2022-03-02 (+6d) |  | 60d → 61d |
| PREP2320 | Prep Mtg - Roller Window Shade | 2022-03-03 → 2022-03-07 (+4d) | 2022-03-03 → 2022-03-07 (+4d) |  | 57d → 60d |
| PREP2080 | Prep Mtg - Aggregate Surfacing | 2022-03-04 → 2022-03-14 (+10d) | 2022-03-04 → 2022-03-14 (+10d) |  | 65d → 62d |
| PREP2400 | Prep Mtg - Shelving | 2022-03-16 → 2022-03-18 (+2d) | 2022-03-16 → 2022-03-18 (+2d) |  | 41d → 44d |
| PREP2160 | Prep Mtg - Flagpoles | 2022-03-11 → 2022-03-21 (+10d) | 2022-03-11 → 2022-03-21 (+10d) |  | 71d → 68d |
| PREP2380 | Prep Mtg - Pavement Markings | 2022-04-26 → 2022-05-04 (+8d) | 2022-04-26 → 2022-05-04 (+8d) |  | 33d → 31d |
| 5 | **Construction** |  | 2022-06-23 → 2022-07-01 (+8d) |  |  |
| 2 | **Site Development** |  | 2022-02-10 → 2022-02-24 (+14d) |  |  |
| GRD1140 | Fine Grade Bldg Pads |  | 2021-07-01 → 2021-08-02 (+32d) |  |  |
| GRD1180 | Crush & Stockpile Onsite Mtrl |  | 2021-07-19 → 2021-08-16 (+28d) |  | 85d → 68d |
| GRD1200 | Install BMP's at Slopes |  | 2021-07-06 → 2021-08-04 (+29d) |  | 75d → 58d |
| GRD1240 | Backfill Retaining Walls |  |  | 60% → 80% | 60d → 63d |
| GRD1160 | Mobilize Crusher Operation | 2021-07-01 → 2021-08-02 (+32d) | 2021-07-02 → 2021-08-03 (+32d) |  | 85d → 68d |
| 2 | **Site Utilities** |  | 2022-02-10 → 2022-02-24 (+14d) |  |  |
| 1 | **Storm Drain** |  | 2021-08-13 → 2021-08-26 (+13d) |  |  |
| SD1080 | RCP Storm Drain & MH - SD-D |  | 2021-07-15 → 2021-08-05 (+21d) |  | 35d → 29d |
| SD1020 | Receive/Unload RCP & Manholes |  | 2021-07-12 → 2021-07-29 A (+17d) | 90% → 100% | 35d → none |
| SD1060 | RCP Storm Drain & MH - SD-F |  | 2021-07-12 → 2021-08-03 (+22d) |  | 35d → 29d |
| SD1100 | RCP Storm Drain & MH -SD-B Lwr |  | 2021-07-19 → 2021-07-29 A (+10d) | 95% → 100% | 35d → none |
| SD1140 | RCP Storm Drain & MH - SD-A |  | 2021-07-21 → 2021-08-09 (+19d) |  | 35d → 29d |
| SD1160 | RCP Storm Drain & MH - SD-C |  | 2021-07-28 → 2021-08-11 (+14d) | 50% → 75% | 35d → 29d |
| SD1120 | Set Box Culvert - SD-H |  | 2021-07-08 → 2021-08-02 (+25d) | 50% → 95% | 29d → 34d |
| SD1220 | RCP Storm Drain & MH - SD-G |  | 2021-07-30 → 2021-08-12 (+13d) | 90% → 95% | 176d → 171d |
| SD1000 | Set Box Culvert to Stock Pile | 2021-07-09 → 2021-08-02 (+24d) | 2021-07-16 → 2021-08-06 (+21d) |  | 85d → 73d |
| SD1040 | Backfill Stock Pile Culvert | 2021-07-19 → 2021-08-09 (+21d) | 2021-07-20 → 2021-08-10 (+21d) |  | 85d → 73d |
| SD1180 | PVC Storm Drain to Bldgs | 2021-07-29 → 2021-08-12 (+14d) | 2021-08-04 → 2021-08-19 (+15d) |  | 75d → 68d |
| SD1240 | PVC Backdrain - BD-L | 2021-08-02 → 2021-08-12 (+10d) | 2021-08-06 → 2021-08-19 (+13d) |  | 191d → 186d |
| SD1260 | RCP Storm Drain & MH - SD-I | 2021-08-02 → 2021-08-12 (+10d) | 2021-08-06 → 2021-08-19 (+13d) |  | 176d → 171d |
| SD1280 | Replace Drain Pipe -Campbell R | 2021-08-09 → 2021-08-20 (+11d) | 2021-08-13 → 2021-08-26 (+13d) |  | 176d → 171d |
| 2 | **Sanitary Sewer** |  | 2022-02-10 → 2022-02-11 (+1d) |  |  |

| ID | Task | Start | Finish | Complete | Total float |
| --- | --- | --- | --- | --- | --- |
| SS1000 | Receive/Unload Sanitary Sewer |  | 2021-08-16 → 2021-07-02 A (-45d) | 30% → 100% | 22d → none |
| SS1040 | Sewer Main/MH -CO-29 to Septic | 2021-08-17 → 2021-08-25 (+8d) | 2021-08-24 → 2021-08-31 (+7d) |  | 22d → 21d |
| SS1060 | Sewer & MH - Bldg 4 to MH-02 | 2021-08-25 → 2021-09-01 (+7d) | 2021-08-31 → 2021-09-09 (+9d) |  | 22d → 21d |
| SS1080 | Sewer Force Main - Sec 50 & 51 | 2021-09-01 → 2021-09-10 (+9d) | 2021-09-09 → 2021-09-16 (+7d) |  | 32d → 30d |
| SS1100 | Sewer Laterals to Bldgs | 2021-10-20 → 2021-10-27 (+7d) | 2021-10-26 → 2021-11-03 (+8d) |  | 23d → 21d |
| SS1110 | Receive/Unload Sewer Lift Stn | 2021-12-08 → 2021-12-09 (+1d) | 2021-12-09 → 2021-12-10 (+1d) |  | 14d → 15d |
| SS1120 | Septic & Sewer Lift Station | 2021-12-10 → 2021-12-13 (+3d) | 2021-12-17 → 2021-12-20 (+3d) |  | 14d → 15d |
| SS1140 | Sewer Force Main -To Leach Fld | 2021-12-20 → 2021-12-22 (+2d) | 2022-01-06 → 2022-01-07 (+1d) |  | 15d → 16d |
| SS1160 | Leach Field (CU-301) | 2022-01-07 → 2022-01-10 (+3d) | 2022-02-10 → 2022-02-11 (+1d) |  | 15d → 16d |
| 4 | **Electrical** |  | 2022-01-10 → 2022-02-24 (+45d) |  |  |
| EL1180 | UG Conduits to Generator |  | 2021-09-14 → 2021-09-21 (+7d) |  | 26d → 25d |
| EL1240 | UG Teleco Conduit to Bldg 2 |  | 2021-09-10 → 2021-09-17 (+7d) |  | 31d → 29d |
| EL1260 | UG ESS Conduits to Bldg 2 |  | 2021-09-10 → 2021-09-17 (+7d) |  | 31d → 29d |
| EL1280 | UG ESS Conduits to Bldg 4 |  | 2021-09-20 → 2021-09-28 (+8d) |  | 25d → 23d |
| EL1300 | UG ESS Conduits to Bldg 4A |  | 2021-09-20 → 2021-09-28 (+8d) |  | 25d → 23d |
| EL1320 | UG Elec Conduits to Bldg 2 |  | 2021-09-10 → 2021-09-17 (+7d) |  | 28d → 27d |
| EL1340 | UG Elec Conduits to Bldg 4 |  | 2021-09-20 → 2021-09-28 (+8d) |  | 22d → 21d |
| EL1100 | UG ESS Conduits to Bldg 3 |  | 2021-09-20 → 2021-09-28 (+8d) |  | 47d → 45d |
| EL1120 | UG ESS Conduits to Bldg 5 |  | 2021-09-10 → 2021-09-17 (+7d) |  | 25d → 23d |
| EL1140 | UG Elec Conduits to Bldg 3 |  | 2021-09-20 → 2021-09-28 (+8d) |  | 22d → 21d |
| EL1160 | UG Elec Conduits to Bldg 5 |  | 2021-09-10 → 2021-09-17 (+7d) |  | 22d → 21d |
| EL1400 | SDG&E Primary Elec Duct Bank |  | 2021-10-18 → 2021-10-26 (+8d) |  | 22d → 21d |
| EL1200 | Ground - Lightning Protect -B3 |  | 2021-09-27 → 2021-10-04 (+7d) |  | 68d → 64d |
| EL1220 | Ground - Lightning Protect -B1 |  | 2021-09-15 → 2021-09-23 (+8d) |  | 74d → 70d |
| EL1060 | Ground - Lightning Prot - Site |  | 2021-09-14 → 2021-09-21 (+7d) |  | 68d → 64d |
| EL1360 | Ground - Lightning Prot - B1A |  | 2021-09-16 → 2021-09-24 (+8d) |  | 74d → 70d |
| EL1540 | New Power Pole (By SDG&E) | 2021-11-19 → 2021-07-01 A (-141d) | 2021-11-22 → 2021-07-02 A (-143d) | 0% → 100% | 33d → none |
| EL1380 | Ground - Lightning Prot -B4,4A | 2021-09-17 → 2021-09-27 (+10d) | 2021-09-24 → 2021-10-01 (+7d) |  | 139d → 137d |
| EL1420 | Set Transformer Pad | 2021-10-20 → 2021-10-27 (+7d) | 2021-10-20 → 2021-10-27 (+7d) |  | 22d → 21d |
| EL1520 | Schedule Install - SDG&E XFMR | 2021-10-21 → 2021-10-28 (+7d) | 2021-11-18 → 2021-11-29 (+11d) |  |  |
| EL1560 | Set Transformer (By SDG&E) | 2021-11-29 → 2021-11-30 (+1d) | 2021-11-29 → 2021-11-30 (+1d) |  | 16d → 18d |
| EL1580 | Primary Feeders (By SDG&E) | 2021-11-30 → 2021-12-02 (+2d) | 2021-12-02 → 2021-12-03 (+1d) |  | 31d → 32d |
| EL1480 | Power Rack - Sewer Lift Stn | 2021-12-20 → 2021-12-22 (+2d) | 2021-12-29 → 2022-01-04 (+6d) |  | 14d → 15d |
| EL1500 | Pull Wire - Sewer Lift Station | 2022-01-04 → 2022-01-05 (+1d) | 2022-01-10 → 2022-01-11 (+1d) |  | 14d → 15d |
| EL1440 | Receive/Unload Generator | 2021-10-25 → 2022-01-18 (+85d) | 2021-10-26 → 2022-01-19 (+85d) |  | 41d → 77d |
| EL1460 | Install Generators | 2021-11-30 → 2022-01-20 (+51d) | 2022-01-07 → 2022-02-24 (+48d) |  | 15d → 69d |
| 3 | **Water** | 2021-09-21 → 2021-07-02 (-81d) | 2021-10-29 → 2021-11-08 (+10d) |  |  |
| WA1000 | UG Fire Water - Site to Xing | 2021-09-21 → 2021-07-02 A (-81d) | 2021-10-05 → 2021-10-13 (+8d) | 0% → 10% | 25d → 23d |
| WA1020 | UG Dom Water - Site to Xing | 2021-10-07 → 2021-07-02 A (-97d) | 2021-10-22 → 2021-10-29 (+7d) | 0% → 10% | 40d → 37d |
| WA1060 | UG Fire Water - to Bldg 3 | 2021-10-07 → 2021-07-02 A (-97d) | 2021-10-13 → 2021-10-22 (+9d) | 0% → 10% | 25d → 23d |
| WA1080 | UG Domestic Water - to Bldg 3 | 2021-10-25 → 2021-07-02 A (-115d) | 2021-10-29 → 2021-11-08 (+10d) | 0% → 10% | 128d → 126d |
| WA1100 | Fire Hydrants | 2021-10-15 → 2021-10-25 (+10d) | 2021-10-22 → 2021-10-29 (+7d) |  | 25d → 23d |
| WA1030 | Hydrostatic Test - UG DW | 2021-10-25 → 2021-11-01 (+7d) | 2021-10-26 → 2021-11-02 (+7d) |  | 152d → 150d |
| WA1040 | UG CW Lines - to Bldg 2 | 2021-10-25 → 2021-11-01 (+7d) | 2021-10-29 → 2021-11-08 (+10d) |  | 40d → 37d |
| WA1050 | Hydrostatic Test - UG FW | 2021-10-25 → 2021-11-01 (+7d) | 2021-10-26 → 2021-11-02 (+7d) |  | 152d → 150d |
| 5 | **Propane** | 2021-11-01 → 2021-11-09 (+8d) | 2021-12-09 → 2022-01-06 (+28d) |  |  |
| LP1140 | UG Propane Lines | 2021-11-01 → 2021-11-09 (+8d) | 2021-11-08 → 2021-11-17 (+9d) |  | 40d → 37d |
| LP1160 | Set Propane Tank By USACE Vend | 2021-11-29 → 2021-12-22 (+23d) | 2021-11-30 → 2021-12-27 (+27d) |  | 31d → 20d |
| LP1170 | Install Propane Regulator | 2021-12-02 → 2021-12-28 (+26d) | 2021-12-09 → 2022-01-06 (+28d) |  | 31d → 20d |
| 3 | **Retaining Walls & Site Structures** |  | 2021-11-04 → 2021-11-05 (+1d) |  |  |
| RW2040 | Form Ret Wall - RW2,3 Pour 1 | 2021-07-09 → 2021-07-19 A (+10d) | 2021-07-21 → 2021-07-30 A (+9d) | 0% → 100% | 29d → none |
| RW2050 | Rebar Ret Wall - RW2,3 Pour 1 | 2021-07-13 → 2021-07-19 A (+6d) | 2021-07-19 → 2021-07-30 A (+11d) | 0% → 100% | 31d → none |
| RW2080 | Form Ret Wall - RW2,3 Pour 2 | 2021-07-23 → 2021-07-19 A (-4d) | 2021-08-03 → 2021-07-30 A (-4d) | 0% → 100% | 29d → none |
| RW2090 | Rebar Ret Wall - RW2,3 Pour 2 | 2021-07-27 → 2021-07-19 A (-8d) | 2021-07-30 A | 0% → 100% | 31d → none |
| RW2070 | Place Ret Wall - RW2,3 Pour 1 | 2021-07-22 → 2021-08-02 (+11d) | 2021-07-22 → 2021-08-02 (+11d) |  | 29d → 34d |
| RW2110 | Place Ret Wall - RW2,3 Pour 2 | 2021-08-04 → 2021-08-03 (-1d) | 2021-08-04 → 2021-08-03 (-1d) |  | 29d → 34d |
| RW2120 | Cure Retaining Wall - RW2,3 | 2021-08-05 → 2021-08-04 (-1d) | 2021-08-18 → 2021-08-17 (-1d) |  | 102d → 107d |
| 5 | **RCP Headwalls (SD-B, SD-D, SD-F)** | 2021-08-05 → 2021-08-06 (+1d) | 2021-11-03 → 2021-11-05 (+2d) |  |  |
| HW1000 | Dig/Form Ftgs - RCP Headwalls | 2021-08-05 → 2021-08-06 (+1d) | 2021-08-16 → 2021-08-17 (+1d) |  | 29d → 32d |
| HW1010 | Rebar Ftgs - RCP Headwalls | 2021-08-17 → 2021-08-19 (+2d) | 2021-08-20 → 2021-08-23 (+3d) |  | 29d → 32d |
| HW1020 | Place Ftgs - RCP Headwalls | 2021-08-23 → 2021-08-24 (+1d) | 2021-08-23 → 2021-08-24 (+1d) |  | 29d → 32d |
| HW1030 | Form Walls - RCP Headwalls | 2021-08-24 → 2021-08-25 (+1d) | 2021-09-02 → 2021-09-03 (+1d) |  | 29d → 32d |
| HW1040 | Rebar Walls - RCP Headwalls | 2021-08-25 → 2021-08-26 (+1d) | 2021-08-27 → 2021-08-30 (+3d) |  | 33d → 36d |
| HW1050 | Place Walls - RCP Headwalls | 2021-09-03 → 2021-09-07 (+4d) | 2021-09-03 → 2021-09-07 (+4d) |  | 29d → 32d |
| HW1060 | Cure - RCP Headwalls | 2021-09-04 → 2021-09-08 (+4d) | 2021-09-10 → 2021-09-14 (+4d) |  |  |
| HW1080 | Security Grates -RCP Headwalls | 2021-10-29 → 2021-11-03 (+5d) | 2021-11-03 → 2021-11-05 (+2d) |  | 141d → 142d |
| 4 | **Above Ground Utility Crossing (SS108, CU-206)** |  | 2021-11-04 → 2021-11-05 (+1d) |  |  |
| CRS1020 | Form Pier Caps | 2021-07-02 → 2021-07-12 A (+10d) | 2021-07-09 → 2021-07-23 A (+14d) | 0% → 100% | 61d → none |
| CRS1040 | Rebar Pier Caps | 2021-07-12 A | 2021-07-19 → 2021-07-23 A (+4d) | 0% → 100% | 61d → none |
| CRS1060 | Set Embeds for Steel Casings | 2021-07-20 → 2021-07-27 A (+7d) | 2021-07-26 → 2021-07-28 A (+2d) | 0% → 100% | 61d → none |

| ID | Task | Start | Finish | Complete | Total float |
| --- | --- | --- | --- | --- | --- |
| CRS1080 | Place Pier Caps | 2021-07-27 → 2021-07-30 A (+3d) | 2021-07-28 → 2021-07-30 A (+2d) | 0% → 100% | 61d → none |
| CRS1100 | Cure Pier Caps | 2021-07-29 → 2021-07-30 A (+1d) | 2021-08-04 → 2021-08-09 (+5d) |  | 97d → 99d |
| CRS1120 | Install Steel Casings | 2021-08-05 → 2021-08-10 (+5d) | 2021-08-10 → 2021-08-13 (+3d) |  |  |
| CRS1140 | Form Security Cap at Pier | 2021-08-11 → 2021-08-16 (+5d) | 2021-08-17 → 2021-08-23 (+6d) |  |  |
| CRS1160 | Rebar Security Cap at Pier | 2021-08-19 → 2021-08-24 (+5d) | 2021-08-23 → 2021-08-26 (+3d) |  |  |
| CRS1180 | Place Security Cap at Pier | 2021-08-24 → 2021-08-27 (+3d) | 2021-08-24 → 2021-08-27 (+3d) |  |  |
| CRS1200 | Paint Steel Casings | 2021-11-03 → 2021-11-04 (+1d) | 2021-11-04 → 2021-11-05 (+1d) |  | 140d → 142d |
| 7 | **Misc Foundations** | 2021-07-02 → 2021-08-03 (+32d) | 2021-09-28 → 2021-10-06 (+8d) |  |  |
| SFND1000 | Dig/Form Propane/Fire Tank Ftg | 2021-07-02 → 2021-08-03 (+32d) | 2021-07-06 → 2021-08-04 (+29d) |  | 102d → 85d |
| SFND1040 | Rebar Propane Tank Ftg | 2021-07-07 → 2021-08-05 (+29d) | 2021-07-08 → 2021-08-06 (+29d) |  | 102d → 85d |
| SFND1080 | Place Propane/Fire Tank Ftg | 2021-07-09 → 2021-08-09 (+31d) | 2021-07-09 → 2021-08-09 (+31d) |  | 102d → 85d |
| SFND1120 | Rebar Propane Tank Supports | 2021-07-12 → 2021-08-10 (+29d) | 2021-07-16 → 2021-08-13 (+28d) |  | 102d → 85d |
| SFND1160 | Form Propane Tank Supports | 2021-07-19 → 2021-08-16 (+28d) | 2021-07-23 → 2021-08-23 (+31d) |  | 102d → 85d |
| SFND1180 | Place Propane Tank Supports | 2021-07-26 → 2021-08-24 (+29d) | 2021-07-26 → 2021-08-24 (+29d) |  | 102d → 85d |
| SFND1200 | Cure Propane Tank Supports | 2021-07-27 → 2021-08-25 (+29d) | 2021-08-02 → 2021-08-31 (+29d) |  | 176d → 152d |
| SFND1020 | Dig/Form Generator/Chiller Ftg | 2021-09-15 → 2021-09-23 (+8d) | 2021-09-16 → 2021-09-24 (+8d) |  | 51d → 123d |
| SFND1060 | Rebar Generator Foundations | 2021-09-17 → 2021-09-27 (+10d) | 2021-09-20 → 2021-09-28 (+8d) |  | 51d → 123d |
| SFND1100 | Place Generator/Chiller Ftgs | 2021-09-21 → 2021-09-29 (+8d) | 2021-09-21 → 2021-09-29 (+8d) |  | 51d → 123d |
| SFND1140 | Cure Generator/Chiller Ftgs | 2021-09-22 → 2021-09-30 (+8d) | 2021-09-28 → 2021-10-06 (+8d) |  | 90d → 214d |
| 10 | **Slope Protection** |  | 2021-12-13 → 2021-12-15 (+2d) |  |  |
| SLP1060 | Fine Grade Slopes at Entry |  | 2021-09-13 → 2021-09-15 (+2d) |  | 151d → 152d |
| SLP1010 | Outlet Ctrl Structure - SD-E | 2021-09-13 → 2021-09-15 (+2d) | 2021-09-17 → 2021-09-21 (+4d) |  | 31d → 32d |
| SLP1050 | Form Slp Prot - Stock Pile Cul | 2021-09-14 → 2021-09-16 (+2d) | 2021-09-16 → 2021-09-20 (+4d) |  | 49d → 50d |
| SLP1070 | Rebar Slp Prot -Stock Pile Cul | 2021-09-17 → 2021-09-21 (+4d) | 2021-09-20 → 2021-09-23 (+3d) |  | 49d → 50d |
| SLP1020 | Form Slope Protect - W Basin | 2021-09-20 → 2021-09-23 (+3d) | 2021-10-04 → 2021-10-07 (+3d) |  | 31d → 32d |
| SLP1080 | Place Slp Prot -Stock Pile Cul | 2021-09-21 → 2021-09-24 (+3d) | 2021-09-21 → 2021-09-24 (+3d) |  | 49d → 50d |
| SLP1090 | Rebar Slope Protect - W Basin | 2021-10-05 → 2021-10-08 (+3d) | 2021-10-21 → 2021-10-25 (+4d) |  | 31d → 32d |
| SLP1100 | Form Slope Protect - Parking | 2021-10-05 → 2021-10-08 (+3d) | 2021-10-12 → 2021-10-15 (+3d) |  | 36d → 37d |
| SLP1120 | Place Slope Protect - W Basin | 2021-10-22 → 2021-10-26 (+4d) | 2021-10-28 → 2021-11-01 (+4d) |  | 31d → 32d |
| SLP1140 | Rebar Slope Protect - Parking | 2021-10-22 → 2021-10-26 (+4d) | 2021-10-28 → 2021-11-01 (+4d) |  | 31d → 32d |
| SLP1160 | Place Slope Protect - Parking | 2021-10-29 → 2021-11-03 (+5d) | 2021-11-01 → 2021-11-04 (+3d) |  | 31d → 32d |
| SLP1180 | Form Slope Protect - N Perim | 2021-11-03 → 2021-11-05 (+2d) | 2021-11-09 → 2021-11-12 (+3d) |  | 71d → 72d |
| SLP1200 | Rebar Slope Protect - N Perim | 2021-11-10 → 2021-11-15 (+5d) | 2021-11-18 → 2021-11-22 (+4d) |  | 71d → 72d |
| SLP1220 | Form Slope Protect - Site Entr | 2021-11-10 → 2021-11-15 (+5d) | 2021-11-22 → 2021-11-29 (+7d) |  | 115d → 116d |
| SLP1240 | Place Slope Protect - N Perim | 2021-11-19 → 2021-11-23 (+4d) | 2021-11-23 → 2021-11-30 (+7d) |  | 71d → 72d |
| SLP1260 | Rebar Slope Protect -Site Entr | 2021-11-23 → 2021-11-30 (+7d) | 2021-12-08 → 2021-12-10 (+2d) |  | 115d → 116d |
| SLP1280 | Place Slope Protect -Site Entr | 2021-12-09 → 2021-12-13 (+4d) | 2021-12-13 → 2021-12-15 (+2d) |  | 115d → 116d |
| 5 | **Slab on Grade** |  | 2021-07-02 → 2021-08-03 (+32d) |  |  |
| 1 | **Area E (1-S105)** |  | 2021-07-02 → 2021-08-03 (+32d) |  |  |
| 1SGE150 | Place Concrete Slab - B1 E |  | 2021-07-02 → 2021-08-03 (+32d) |  | 18d → 2d |
| 2 | **Area C & D (1-S103 & 1-S104)** |  | 2021-07-02 → 2021-08-03 (+32d) |  |  |
| 1SGC150 | Place Concrete Slab - B1 CD |  | 2021-07-02 → 2021-08-03 (+32d) |  | 20d → 2d |
| 4 | **Area A & B (1-S101 & 1-S102)** |  | 2021-07-02 → 2021-05-07 (-56d) |  |  |
| 1SGA150 | Place Concrete Slab - B1 AB |  | 2021-07-02 → 2021-05-03 A (-60d) | 95% → 100% | 2d → none |
| 2 | **Metal Building Structure & Exterior** |  | 2022-03-04 → 2022-03-02 (-2d) |  |  |
| 1 | **Area E** |  | 2021-10-18 → 2021-10-21 (+3d) |  |  |
| 1STE140 | Electrical in CMU Walls - B1 E |  | 2021-08-09 → 2021-09-09 (+31d) |  | 30d → 12d |
| 1STE180 | Mtl Panels/Air Barrier - B1 E |  | 2021-10-08 → 2021-10-12 (+4d) |  |  |
| 1STE130 | Plumbing in CMU Walls - B1 E |  | 2021-09-03 → 2021-09-09 (+6d) |  |  |
| 1STE120 | Erect CMU Walls - B1 E | 2021-08-02 → 2021-07-19 A (-14d) | 2021-09-23 → 2021-09-27 (+4d) | 0% → 25% |  |
| 1STE150 | Set HM Frames in CMU - B1 E | 2021-08-02 → 2021-07-20 A (-13d) | 2021-08-06 → 2021-07-30 A (-7d) | 0% → 100% | 1d → none |
| 1STE160 | Insulation at CMU Perim - B1 E | 2021-09-24 → 2021-09-28 (+4d) | 2021-09-28 → 2021-09-30 (+2d) |  |  |
| 1STE170 | Rigid Insulation - Sally Port | 2021-09-24 → 2021-09-28 (+4d) | 2021-09-28 → 2021-09-30 (+2d) |  | 153d → 154d |
| 1STE190 | Erect 4" CMU - Sally Port | 2021-10-11 → 2021-10-13 (+2d) | 2021-10-18 → 2021-10-21 (+3d) |  | 146d → 147d |
| 2 | **Areas C & D** |  | 2021-10-07 → 2021-09-30 (-7d) |  |  |
| 1STC100 | Erect Metal Bldg Steel - B1 CD |  | 2021-07-02 A | 95% → 100% | 21d → none |
| 1STC140 | Mtl Panels/Air Barrier - B1 CD |  | 2021-07-20 → 2021-08-16 (+27d) | 45% → 95% | 21d → 10d |
| 1STC110 | Air Barrier Mockup - B1 | 2021-09-24 → 2021-09-16 (-8d) | 2021-10-04 → 2021-09-27 (-7d) |  | 5d → 12d |
| 1STC120 | Set Windows in Mockup - B1 | 2021-10-01 → 2021-09-24 (-7d) | 2021-10-04 → 2021-09-27 (-7d) |  | 5d → 12d |
| 1STC130 | Test Air Barrier Mockup - B1 | 2021-10-05 → 2021-09-28 (-7d) | 2021-10-05 → 2021-09-28 (-7d) |  | 5d → 12d |
| 1STC150 | GOV APPR Air Barrier Mockup | 2021-10-06 → 2021-09-29 (-7d) | 2021-10-07 → 2021-09-30 (-7d) |  | 7d → 15d |
| 3 | **Areas A & B** |  | 2021-08-04 → 2021-08-31 (+27d) |  |  |
| 1STA110 | Mtl Panels/Air Barrier - B1 AB |  | 2021-08-04 → 2021-08-31 (+27d) | 45% → 85% | 25d → 14d |
| 4 | **All Areas** | 2021-07-30 → 2021-07-12 (-18d) | 2022-03-04 → 2022-03-02 (-2d) |  |  |
| 1EX130 | Elec Connect Rf Top Units - B1 | 2021-10-27 → 2021-07-12 A (-107d) | 2021-11-03 → 2021-11-05 (+2d) | 0% → 15% |  |
| 1EX100 | Tube Daylight Devices - B1 RF | 2021-07-30 → 2021-08-17 (+18d) | 2021-08-20 → 2021-09-09 (+20d) |  | 47d → 37d |
| 1EX110 | Roof Top Mech Units - B1 RF | 2021-10-11 → 2021-10-13 (+2d) | 2021-10-26 → 2021-10-28 (+2d) |  |  |
| 1EX120 | Gutter, Dwn Spout, Trim - B1 | 2021-10-11 → 2021-10-13 (+2d) | 2021-11-03 → 2021-11-05 (+2d) |  | 15d → 24d |
| 1EX140 | Alum Windows - B1 | 2021-11-17 → 2021-11-08 (-9d) | 2021-12-20 → 2021-12-10 (-10d) |  | 26d → 34d |
| 1EX150 | Exterior HM Doors - B1 | 2021-11-04 → 2021-11-08 (+4d) | 2021-11-17 → 2021-11-19 (+2d) |  | 58d → 59d |

| ID | Task | Start | Finish | Complete | Total float | Predecessors |
| --- | --- | --- | --- | --- | --- | --- |
| 1EX160 | Lightning Protection - B1, B1A | 2021-11-04 → 2021-11-08 (+4d) | 2021-12-02 → 2021-12-06 (+4d) |  | 30d → 29d |  |
| 1EX170 | Exterior Door Hardware - B1 | 2021-11-18 → 2021-11-22 (+4d) | 2021-11-29 → 2021-12-02 (+3d) |  | 58d → 59d |  |
| 1EX180 | Alum Storefront Entrances - B1 | 2022-01-14 → 2022-01-05 (-9d) | 2022-02-16 → 2022-02-07 (-9d) |  | 15d → 24d |  |
| 1EX190 | Exterior Painting - B1 | 2022-01-10 → 2022-01-12 (+2d) | 2022-01-17 → 2022-01-20 (+3d) |  | 98d → 99d |  |
| 1EX200 | Ext Bldg Light Fixtures - B1 | 2022-01-19 → 2022-01-21 (+2d) | 2022-01-25 → 2022-01-28 (+3d) |  | 98d → 99d |  |
| 1EX210 | Sunshades Above Windows - B1 | 2022-02-18 → 2022-02-09 (-9d) | 2022-03-04 → 2022-02-24 (-8d) |  | 76d → 85d |  |
| 2 | **Areas C & D (1-A103 & 1-A104)** |  | 2022-03-16 → 2022-03-22 (+6d) |  |  |  |
| 1 | **Rough In** |  | 2022-01-14 → 2022-02-02 (+19d) |  |  |  |
| 1RIC100 | Electrical Rough In OH - B1 CD |  | 2021-08-25 → 2021-08-16 (-9d) | 35% → 90% | 79d → 90d |  |
| 1RIC110 | Fire Alarm Rough In OH - B1 CD |  | 2021-07-07 → 2021-08-04 (+28d) | 85% → 90% | 114d → 98d |  |
| 1RIC160 | Waste & Vent Rough In - B1 CD |  | 2021-08-03 → 2021-08-27 (+24d) | 3% → 10% | 48d → 33d |  |
| 1RIC120 | Layout Framing - B1 CD |  | 2021-07-21 A | 90% → 100% | 22d → none |  |
| 1RIC130 | Fire Sprink Rough In - B1 CD |  | 2021-07-27 → 2021-08-18 (+22d) | 50% → 75% | 33d → 37d |  |
| 1RIC270 | Power & Lighting Wire - B1 CD | 2021-11-01 → 2021-07-12 A (-112d) | 2021-11-15 → 2021-11-16 (+1d) | 0% → 10% | 33d → 35d |  |
| 1RIC140 | Frame Walls - B1 CD | 2021-07-22 → 2021-07-19 A (-3d) | 2021-08-04 → 2021-08-24 (+20d) | 0% → 60% | 22d → 11d |  |
| 1RIC280 | Hydronic Piping - B1 CD | 2021-11-02 → 2021-07-26 A (-99d) | 2021-11-23 → 2021-09-23 (-61d) | 0% → 15% | 41d → 53d | 1RIC250, 230515-02, 236426-12 → 230515-02, 236426-12, 1RIC200 |
| 1RIC190 | Elec Rough In Walls - B1 CD | 2021-08-16 → 2021-07-29 A (-18d) | 2021-09-13 → 2021-09-20 (+7d) | 0% → 5% | 15d → 13d |  |
| 1RIC220 | FA Rough In Walls - B1 CD | 2021-08-16 → 2021-07-29 A (-18d) | 2021-09-13 → 2021-09-20 (+7d) | 0% → 5% | 15d → 13d |  |
| 1RIC200 | Top Down Drywall - B1 CD | 2021-08-05 → 2021-08-25 (+20d) | 2021-08-16 → 2021-09-03 (+18d) |  | 59d → 24d |  |
| 1RIC230 | Tel/Data Rough In Wall - B1 CD | 2021-08-16 → 2021-08-25 (+9d) | 2021-09-13 → 2021-09-22 (+9d) |  | 15d → 11d |  |
| 1RIC240 | ESS Rough In Walls - B1 CD | 2021-08-16 → 2021-08-25 (+9d) | 2021-09-13 → 2021-09-22 (+9d) |  | 15d → 11d |  |
| 1RIC210 | Set Interior HM Frames - B1 CD | 2021-08-05 → 2021-09-01 (+27d) | 2021-08-11 → 2021-09-08 (+28d) |  | 47d → 31d |  |
| 1RIC180 | Water & Gas Rough In - B1 CD | 2021-08-23 → 2021-09-07 (+15d) | 2021-09-13 → 2021-09-27 (+14d) |  | 15d → 8d |  |
| 1RIC150 | HVAC Hangers - B1 CD | 2021-08-31 → 2021-09-13 (+13d) | 2021-09-07 → 2021-09-17 (+10d) |  | 42d → 50d |  |
| 1RIC170 | OH Mech Units - B1 CD | 2021-09-14 → 2021-09-20 (+6d) | 2021-09-20 → 2021-09-24 (+4d) |  | 41d → 52d |  |
| 1RIC250 | Ductwork & Accessories - B1 CD | 2021-09-21 → 2021-09-27 (+6d) | 2021-11-01 → 2021-11-05 (+4d) |  | 41d → 52d | 1RIC200, 1RIC170 → 1RIC200, 1RIC170, 1RIC280 |
| 1RIC260 | Insulate Plumbing - B1 CD | 2021-09-14 → 2021-09-28 (+14d) | 2021-09-20 → 2021-10-04 (+14d) |  | 15d → 8d |  |
| 1RIC283 | Perform DALT - B1 CD | 2021-11-02 → 2021-11-08 (+6d) | 2021-11-03 → 2021-11-09 (+6d) |  | 53d → 52d |  |
| 1RIC320 | Insulate Hydronic Pipe - B1 CD | 2021-11-24 → 2021-11-08 (-16d) | 2021-12-02 → 2021-11-15 (-17d) |  | 50d → 64d |  |
| 1RIC330 | Condensate to OH Units - B1 CD | 2021-11-24 → 2021-11-08 (-16d) | 2021-12-02 → 2021-11-15 (-17d) |  | 41d → 55d | 1RIC280 → 1RIC280, 1RIC250 |
| 1RIC286 | Submit DALT Report - B1 CD | 2021-11-04 → 2021-11-10 (+6d) | 2021-11-05 → 2021-11-12 (+7d) |  | 53d → 52d |  |
| 1RIC288 | GOV APPR Dalt Report - B1 CD | 2021-11-08 → 2021-11-15 (+7d) | 2021-11-15 → 2021-11-19 (+4d) |  | 53d → 52d |  |
| 1RIC340 | Frame Hardlids - B1 D | 2021-12-03 → 2021-11-16 (-17d) | 2021-12-07 → 2021-11-18 (-19d) |  | 69d → 85d |  |
| 1RIC300 | Elec Connect OH Units - B1 CD | 2021-11-16 → 2021-11-17 (+1d) | 2021-11-22 → 2021-11-23 (+1d) |  | 56d → 58d |  |
| 1RIC290 | Insulate Ductwork - B1 CD | 2021-11-16 → 2021-11-22 (+6d) | 2021-11-29 → 2021-12-03 (+4d) |  | 53d → 52d |  |
| 1RIC310 | Pull Fire Alarm Cable - B1 CD | 2021-11-23 → 2021-11-29 (+6d) | 2021-12-01 → 2021-12-03 (+2d) |  | 51d → 52d |  |
| 1RIC350 | Cable Trays - B1 CD | 2021-12-09 → 2021-12-13 (+4d) | 2021-12-20 → 2021-12-22 (+2d) |  | 28d → 29d |  |
| 1RIC360 | Communication Cable - B1 CD | 2021-12-21 → 2021-12-23 (+2d) | 2022-01-05 → 2022-01-07 (+2d) |  | 28d → 29d |  |
| 1RIC370 | Pull Security Cable - B1 CD | 2022-01-03 → 2022-01-20 (+17d) | 2022-01-14 → 2022-02-02 (+19d) |  | 74d → 64d |  |
| 2 | **Finishes** | 2021-10-11 → 2021-10-13 (+2d) | 2022-03-16 → 2022-03-22 (+6d) |  |  |  |
| 1FIC100 | Insulation & Firestop - B1 CD | 2021-10-11 → 2021-10-13 (+2d) | 2021-10-15 → 2021-10-19 (+4d) |  | 1d → 2d |  |
| 1FIC110 | Hang Drywall - B1 CD | 2021-10-18 → 2021-10-20 (+2d) | 2021-10-29 → 2021-11-02 (+4d) |  | 1d → 2d |  |
| 1FIC120 | Tape & Finish Drywall - B1 CD | 2021-11-01 → 2021-11-03 (+2d) | 2021-11-22 → 2021-11-24 (+2d) |  | 1d → 2d |  |
| 1FIC190 | Hang/Tape Gyp Hardlids - B1 D | 2021-12-08 → 2021-11-19 (-19d) | 2021-12-14 → 2021-11-29 (-15d) |  | 69d → 85d |  |
| 1FIC130 | Prime & 1st Coat Walls - B1 CD | 2021-11-23 → 2021-11-29 (+6d) | 2021-12-08 → 2021-12-10 (+2d) |  | 1d → 2d |  |
| 1FIC200 | Paint Hardlids - B1 D | 2021-12-15 → 2021-11-30 (-15d) | 2021-12-17 → 2021-12-02 (-15d) |  | 69d → 85d |  |
| 1FIC140 | Paint Exposed Struct - B1 CD | 2021-12-09 → 2021-12-13 (+4d) | 2021-12-22 → 2021-12-27 (+5d) |  | 51d → 52d |  |
| 1FIC150 | Install Controls - B1 CD | 2021-12-09 → 2021-12-13 (+4d) | 2021-12-20 → 2021-12-22 (+2d) |  | 105d → 108d |  |
| 1FIC160 | Coil Counter Drs - Issue Area | 2021-12-09 → 2021-12-13 (+4d) | 2021-12-13 → 2021-12-15 (+2d) |  | 120d → 123d |  |
| 1FIC170 | Elec Finish & Trim - B1 CD | 2021-12-09 → 2021-12-13 (+4d) | 2021-12-30 → 2022-01-04 (+5d) |  | 83d → 86d |  |
| 1FIC180 | Ceiling Grid - Rooms - B1 CD | 2021-12-09 → 2021-12-13 (+4d) | 2021-12-17 → 2021-12-21 (+4d) |  | 37d → 38d |  |
| 1FIC210 | Ceiling Grid Corridors - B1 CD | 2022-01-06 → 2022-01-10 (+4d) | 2022-01-12 → 2022-01-14 (+2d) |  | 28d → 29d |  |
| 1FIC220 | Cut Fire Sprink Drops - B1 CD | 2022-01-06 → 2022-01-10 (+4d) | 2022-01-10 → 2022-01-12 (+2d) |  | 92d → 95d |  |
| 1FIC240 | HVAC Registers/Grilles - B1 CD | 2022-01-13 → 2022-01-17 (+4d) | 2022-01-19 → 2022-01-21 (+2d) |  | 85d → 88d |  |
| 1FIC250 | Fire Alarm Devices - B1 CD | 2022-01-13 → 2022-01-17 (+4d) | 2022-01-26 → 2022-01-28 (+2d) |  | 74d → 75d |  |
| 1FIC230 | Install Light Fixtures - B1 CD | 2022-01-13 → 2022-01-20 (+7d) | 2022-01-26 → 2022-02-02 (+7d) |  | 28d → 26d |  |
| 1FIC260 | Casework & Countertops - B1 CD | 2022-01-19 → 2022-01-21 (+2d) | 2022-01-25 → 2022-01-27 (+2d) |  | 29d → 30d |  |
| 1FIC290 | Vinyl Tile Flooring - B1 CD | 2022-01-26 → 2022-01-28 (+2d) | 2022-02-08 → 2022-02-10 (+2d) |  | 51d → 54d |  |
| 1FIC300 | Tile Backsplash Brkrm - B1 D | 2022-01-26 → 2022-01-28 (+2d) | 2022-02-01 → 2022-02-03 (+2d) |  | 61d → 64d |  |
| 1FIC310 | Telecom Finish & Trim - B1 CD | 2022-01-26 → 2022-01-28 (+2d) | 2022-02-01 → 2022-02-03 (+2d) |  | 61d → 64d |  |
| 1FIC270 | Carpet Tile - Bldg 1 - Area C | 2022-01-27 → 2022-02-03 (+7d) | 2022-02-02 → 2022-02-09 (+7d) |  | 28d → 26d |  |
| 1FIC280 | Rubber Floor (Fitness) - B1 D | 2022-02-17 → 2022-02-08 (-9d) | 2022-02-24 → 2022-02-14 (-10d) |  | 60d → 72d |  |
| 1FIC320 | Int Doors & Hardware - B1 CD | 2022-02-03 → 2022-02-10 (+7d) | 2022-02-14 → 2022-02-22 (+8d) |  | 28d → 26d |  |
| 1FIC350 | Wall/Corner Protection - B1 CD | 2022-02-09 → 2022-02-11 (+2d) | 2022-02-15 → 2022-02-17 (+2d) |  | 51d → 54d |  |
| 1FIC360 | Seismic Joint Covers - B1 CD | 2022-02-09 → 2022-02-11 (+2d) | 2022-02-15 → 2022-02-17 (+2d) |  | 76d → 79d |  |
| 1FIC370 | Drop Ceiling Tiles - B1 CD | 2022-02-09 → 2022-02-11 (+2d) | 2022-02-15 → 2022-02-17 (+2d) |  | 71d → 74d |  |
| 1FIC330 | Seal Concrete Floors - B1 D | 2022-02-14 → 2022-02-16 (+2d) | 2022-02-16 → 2022-02-18 (+2d) |  | 67d → 70d |  |
| 1FIC390 | Finish Fire Sprinklers - B1 CD | 2022-02-16 → 2022-02-18 (+2d) | 2022-02-23 → 2022-02-25 (+2d) |  | 71d → 74d |  |
| 1FIC340 | Access Ctrl / ESS Trim - B1 CD | 2022-02-15 → 2022-02-23 (+8d) | 2022-03-01 → 2022-03-08 (+7d) |  | 28d → 26d |  |
| 1FIC380 | Final Paint - B1 CD | 2022-02-16 → 2022-02-23 (+7d) | 2022-02-23 → 2022-03-01 (+6d) |  | 51d → 52d |  |

| ID | Task | Start | Finish | Complete | Total float | Predecessors |
| --- | --- | --- | --- | --- | --- | --- |
| 1FIC400 | Resilient Base - B1 CD | 2022-02-24 → 2022-03-02 (+6d) | 2022-03-02 → 2022-03-08 (+6d) |  | 51d → 52d |  |
| 1FIC410 | Fitness Equipment - B1 D | 2022-03-03 → 2022-03-09 (+6d) | 2022-03-09 → 2022-03-15 (+6d) |  | 56d → 57d |  |
| 1FIC420 | Fitness Mirrors - B1 D | 2022-03-10 → 2022-03-16 (+6d) | 2022-03-16 → 2022-03-22 (+6d) |  | 56d → 57d |  |
| 1 | **Restrooms & Locker Rooms** | 2021-12-20 → 2021-12-13 (-7d) | 2022-03-11 → 2022-03-15 (+4d) |  |  |  |
| 1FIC710 | Float/Waterprf Showers - B1 D | 2021-12-20 → 2021-12-13 (-7d) | 2021-12-27 → 2021-12-17 (-10d) |  | 69d → 79d |  |
| 1FIC720 | Porcelain Wall Tile - B1 D | 2021-12-28 → 2021-12-20 (-8d) | 2022-01-11 → 2022-01-04 (-7d) |  | 69d → 79d |  |
| 1FIC700 | Quarts Floor Locker Rms - B1 D | 2021-12-20 → 2021-12-22 (+2d) | 2022-01-04 → 2022-01-06 (+2d) |  | 49d → 50d |  |
| 1FIC740 | Porcelain Floor Tile - B1 D | 2022-01-12 → 2022-01-05 (-7d) | 2022-01-25 → 2022-01-18 (-7d) |  | 69d → 79d |  |
| 1FIC730 | Install Lockers - B1 D | 2022-01-05 → 2022-01-07 (+2d) | 2022-01-25 → 2022-01-27 (+2d) |  | 81d → 84d |  |
| 1FIC750 | Elec Finish at Lockers - B1 D | 2022-01-26 → 2022-01-28 (+2d) | 2022-02-08 → 2022-02-10 (+2d) |  | 81d → 84d |  |
| 1FIC760 | Countertop - Restrooms - B1 CD | 2022-02-09 → 2022-02-11 (+2d) | 2022-02-09 → 2022-02-11 (+2d) |  | 59d → 62d |  |
| 1FIC770 | Plumbing Fixtures - B1 CD | 2022-02-10 → 2022-02-14 (+4d) | 2022-02-22 → 2022-02-24 (+2d) |  | 59d → 62d |  |
| 1FIC780 | Toilet Partitions - B1 CD | 2022-02-23 → 2022-02-25 (+2d) | 2022-03-04 → 2022-03-08 (+4d) |  | 59d → 62d |  |
| 1FIC790 | Toilet Accessories - B1 CD | 2022-03-07 → 2022-03-09 (+2d) | 2022-03-11 → 2022-03-15 (+4d) |  | 59d → 62d |  |
| 4 | **Electrical Room** | 2021-11-08 → 2021-11-10 (+2d) | 2022-01-25 → 2022-01-27 (+2d) |  |  |  |
| 1ELD100 | Paint Electrical Rooms - B1 D | 2021-11-08 → 2021-11-10 (+2d) | 2021-11-09 → 2021-11-12 (+3d) |  | 6d → 7d |  |
| 1ELD110 | Set Electrical Panels - B1 D | 2021-11-10 → 2021-11-15 (+5d) | 2021-12-10 → 2021-12-14 (+4d) |  | 6d → 7d |  |
| 1ELD120 | Set Transformers - B1 Rm 1161 | 2021-12-13 → 2021-12-15 (+2d) | 2021-12-17 → 2021-12-21 (+4d) |  | 6d → 7d |  |
| 1ELD130 | Pull Feeders - B1 - Rm 1184 | 2021-12-20 → 2021-12-22 (+2d) | 2021-12-27 → 2021-12-29 (+2d) |  | 6d → 7d |  |
| 1ELD140 | Make Up Elec Panels - B1 D | 2021-12-28 → 2021-12-30 (+2d) | 2022-01-25 → 2022-01-27 (+2d) |  | 6d → 7d |  |
| 6 | **LV Rooms (Telecom / Security)** | 2021-11-23 → 2021-11-29 (+6d) | 2022-01-21 → 2022-02-09 (+19d) |  |  |  |
| 1LVD100 | Plywood Walls - LV Rms - B1 D | 2021-11-23 → 2021-11-29 (+6d) | 2021-11-29 → 2021-12-01 (+2d) |  | 17d → 18d |  |
| 1LVD110 | Paint Plywood - LV Rms - B1 D | 2021-11-30 → 2021-12-02 (+2d) | 2021-12-02 → 2021-12-06 (+4d) |  | 17d → 18d |  |
| 1LVD120 | Anti-Static Flooring - B1 D | 2021-12-03 → 2021-12-07 (+4d) | 2021-12-09 → 2021-12-13 (+4d) |  | 22d → 23d |  |
| 1LVD130 | Cable Tray/Ladder LV Rm - B1 D | 2021-12-09 → 2021-12-13 (+4d) | 2021-12-22 → 2021-12-27 (+5d) |  | 13d → 14d |  |
| 1LVD140 | Set CRAC Units - LV Rms - B1 D | 2021-12-10 → 2021-12-14 (+4d) | 2021-12-13 → 2021-12-15 (+2d) |  | 33d → 34d |  |
| 1LVD150 | Build Out CRAC Units - B1 D | 2021-12-14 → 2021-12-16 (+2d) | 2021-12-28 → 2021-12-30 (+2d) |  | 33d → 34d |  |
| 1LVD160 | Racks/Cabinets - LV Rms - B1 D | 2021-12-23 → 2021-12-28 (+5d) | 2022-01-07 → 2022-01-11 (+4d) |  | 13d → 14d |  |
| 1LVD180 | UPS Equipment - LV Rms - B1 D | 2022-01-10 → 2022-01-12 (+2d) | 2022-01-14 → 2022-01-18 (+4d) |  | 13d → 14d |  |
| 1LVD190 | Patch Panel/Termination - B1 D | 2022-01-10 → 2022-01-12 (+2d) | 2022-01-21 → 2022-01-25 (+4d) |  | 63d → 66d |  |
| 1LVD200 | Grounding - LV Rms - B1 D | 2022-01-10 → 2022-01-12 (+2d) | 2022-01-14 → 2022-01-18 (+4d) |  | 13d → 14d |  |
| 1LVD170 | ESS Panel Wiring/Makeup - B1 D | 2022-01-17 → 2022-02-03 (+17d) | 2022-01-21 → 2022-02-09 (+19d) |  | 74d → 64d |  |
| 3 | **Mechanical Room (1167)** | 2021-12-09 → 2021-12-13 (+4d) | 2022-02-11 → 2022-02-15 (+4d) |  |  |  |
| 1MCD100 | Build-Out AHU - B1 - Rm 1167 | 2021-12-09 → 2021-12-13 (+4d) | 2021-12-15 → 2021-12-17 (+2d) |  | 1d → 2d |  |
| 1MCD110 | Duct & Mech Piping - RM 1167 | 2021-12-16 → 2021-12-20 (+4d) | 2022-01-14 → 2022-01-18 (+4d) |  | 1d → 2d |  |
| 1MCD120 | Install VFDs - B1 - Rm 1167 | 2022-01-17 → 2022-01-19 (+2d) | 2022-01-21 → 2022-01-25 (+4d) |  | 6d → 7d |  |
| 1MCD130 | Insulate Duct/Piping - Rm 1167 | 2022-01-17 → 2022-01-19 (+2d) | 2022-01-28 → 2022-02-01 (+4d) |  | 1d → 2d |  |
| 1MCD140 | Elec Connect Mec Units-Rm 1167 | 2022-01-24 → 2022-01-26 (+2d) | 2022-02-04 → 2022-02-08 (+4d) |  | 6d → 7d |  |
| 1MCD150 | Install Controls - Rm 1167 | 2022-01-31 → 2022-02-02 (+2d) | 2022-02-11 → 2022-02-15 (+4d) |  | 1d → 2d |  |
| 3 | **Areas A & B (1-A101 & 1-A102)** |  | 2022-03-16 → 2022-03-22 (+6d) |  |  |  |
| 1 | **Rough In** |  | 2022-01-26 → 2022-01-28 (+2d) |  |  |  |
| 1RIA100 | Electrical Rough In OH - B1 AB |  | 2021-08-25 → 2021-08-18 (-7d) | 35% → 90% | 79d → 89d |  |
| 1RIA110 | Fire Alarm Rough In OH - B1 AB |  | 2021-07-23 → 2021-08-18 (+26d) | 85% → 90% | 102d → 89d |  |
| 1RIA120 | Layout Framing - B1 AB |  | 2021-08-05 → 2021-07-23 A (-13d) | 95% → 100% | 27d → none |  |
| 1RIA130 | Fire Sprink Rough In - B1 AB |  | 2021-08-11 → 2021-09-02 (+22d) | 50% → 75% | 27d → 28d |  |
| 1RIA300 | Power & Lighting Wire - B1 AB | 2021-11-16 → 2021-07-12 A (-127d) |  | 0% → 20% | 23d → 26d |  |
| 1RIA160 | Waste & Vent Rough In - B1 AB | 2021-08-13 → 2021-07-26 A (-18d) | 2021-08-26 → 2021-09-17 (+22d) | 0% → 5% | 46d → 34d |  |
| 1RIA280 | Hydronic Piping - B1 AB | 2021-10-27 → 2021-07-26 A (-93d) | 2021-11-17 → 2021-10-18 (-30d) | 0% → 10% | 42d → 17d | 1RIA230, 230515-02, 236426-12 → 230515-02, 236426-12, 1RIA190 |
| 1RIA140 | Frame Walls - B1 AB | 2021-08-06 → 2021-07-28 A (-9d) | 2021-08-19 → 2021-09-15 (+27d) | 0% → 40% | 31d → 16d |  |
| 1RIA180 | Water & Gas Rough In - B1 AB | 2021-08-23 → 2021-09-16 (+24d) | 2021-09-13 → 2021-10-06 (+23d) |  | 30d → 16d |  |
| 1RIA190 | Top Down Drywall - B1 AB | 2021-08-20 → 2021-09-16 (+27d) | 2021-08-31 → 2021-09-27 (+27d) |  | 56d → 17d |  |
| 1RIA200 | Set Interior HM Frames - B1 AB | 2021-08-20 → 2021-09-16 (+27d) | 2021-08-26 → 2021-09-22 (+27d) |  | 51d → 36d |  |
| 1RIA150 | HVAC Hangers - B1 AB | 2021-09-08 → 2021-09-20 (+12d) | 2021-09-14 → 2021-09-24 (+10d) |  | 42d → 50d |  |
| 1RIA220 | Elec Rough In Walls - B1 AB | 2021-09-14 → 2021-09-21 (+7d) | 2021-10-11 → 2021-10-18 (+7d) |  | 15d → 13d |  |
| 1RIA240 | FA Rough In Walls - B1 AB | 2021-09-14 → 2021-09-21 (+7d) | 2021-10-11 → 2021-10-18 (+7d) |  | 15d → 13d |  |
| 1RIA250 | Tel/Data Rough In Wall - B1 AB | 2021-09-14 → 2021-09-23 (+9d) | 2021-10-11 → 2021-10-20 (+9d) |  | 15d → 11d |  |
| 1RIA260 | ESS Rough In Walls - B1 AB | 2021-09-14 → 2021-09-23 (+9d) | 2021-10-11 → 2021-10-20 (+9d) |  | 15d → 11d |  |
| 1RIA170 | OH Mech Units - B1 AB | 2021-09-15 → 2021-09-27 (+12d) | 2021-09-21 → 2021-10-01 (+10d) |  | 42d → 50d |  |
| 1RIA210 | Folding Partition Track - B1 B | 2021-08-20 → 2021-10-06 (+47d) | 2021-08-24 → 2021-10-08 (+45d) |  | 132d → 105d |  |
| 1RIA270 | Insulate Plumbing - B1 AB | 2021-09-14 → 2021-10-07 (+23d) | 2021-09-20 → 2021-10-13 (+23d) |  | 30d → 16d |  |
| 1RIA230 | Ductwork & Accessories - B1 AB | 2021-09-22 → 2021-10-19 (+27d) | 2021-10-26 → 2021-11-23 (+28d) |  | 42d → 39d | 1RIA190, 1RIA170 → 1RIA190, 1RIA170, 1RIA280 |
| 1RIA310 | Insulate Hydronic Pipe - B1 AB | 2021-11-18 → 2021-10-19 (-30d) | 2021-12-03 → 2021-11-01 (-32d) |  | 42d → 66d |  |
| 1RIA330 | Frame Hardlids - B1 AB | 2021-12-06 → 2021-11-02 (-34d) | 2021-12-08 → 2021-11-04 (-34d) |  | 63d → 89d |  |
| 1RIA283 | Perform DALT - B1 AB | 2021-10-27 → 2021-11-24 (+28d) | 2021-10-28 → 2021-11-29 (+32d) |  | 55d → 39d |  |
| 1RIA350 | Condensate to OH Units - B1 AB | 2021-12-06 → 2021-11-24 (-12d) | 2021-12-10 → 2021-12-02 (-8d) |  | 42d → 51d | 1RIA310 → 1RIA310, 1RIA230 |
| 1RIA286 | Submit DALT Report - B1 AB | 2021-10-29 → 2021-11-30 (+32d) | 2021-11-01 → 2021-12-01 (+30d) |  | 55d → 39d |  |
| 1RIA288 | GOV APPR Dalt Report - B1 AB | 2021-11-02 → 2021-12-02 (+30d) | 2021-11-08 → 2021-12-08 (+30d) |  | 55d → 39d |  |
| 1RIA290 | Insulate Ductwork - B1 AB | 2021-11-09 → 2021-12-09 (+30d) | 2021-11-23 → 2021-12-22 (+29d) |  | 55d → 39d |  |
| 1RIA340 | Pull Fire Alarm Wiring - B1 AB | 2021-12-16 → 2021-12-20 (+4d) | 2021-12-22 → 2021-12-27 (+5d) |  | 51d → 52d |  |
| 1RIA360 | Cable Trays - B1 AB | 2022-01-03 → 2022-01-05 (+2d) | 2022-01-12 → 2022-01-14 (+2d) |  | 28d → 29d |  |

| ID | Task | Start | Finish | Total float |
| --- | --- | --- | --- | --- |
| 1RIA370 | Communication Cable - B1 AB | 2022-01-13 → 2022-01-17 (+4d) | 2022-01-26 → 2022-01-28 (+2d) | 28d → 29d |
| 1RIA380 | Security Cable - B1 AB | 2022-01-13 → 2022-01-17 (+4d) | 2022-01-26 → 2022-01-28 (+2d) | 61d → 62d |
| 2 | **Finishes** | 2021-09-14 → 2021-10-07 (+23d) | 2022-03-16 → 2022-03-22 (+6d) |  |
| 1FIA100 | Bullet Resist Panels - Lobby | 2021-09-14 → 2021-10-07 (+23d) | 2021-09-20 → 2021-10-13 (+23d) | 35d → 21d |
| 1FIA110 | Insulation & Firestop - B1 AB | 2021-10-12 → 2021-10-21 (+9d) | 2021-10-18 → 2021-10-27 (+9d) | 15d → 11d |
| 1FIA120 | Hang Drywall - B1 AB | 2021-11-01 → 2021-11-03 (+2d) | 2021-11-15 → 2021-11-17 (+2d) | 6d → 7d |
| 1FIA150 | Hang/Tape Gyp Hardlids - B1 AB | 2021-12-09 → 2021-11-05 (-34d) | 2021-12-15 → 2021-11-12 (-33d) | 63d → 89d |
| 1FIA160 | Paint Hardlids - B1 AB | 2021-12-16 → 2021-11-15 (-31d) | 2021-12-20 → 2021-11-17 (-33d) | 63d → 89d |
| 1FIA130 | Tape & Finish Drywall - B1 AB | 2021-11-23 → 2021-11-29 (+6d) | 2021-12-15 → 2021-12-17 (+2d) | 1d → 2d |
| 1FIA140 | Prime & 1st Coat Walls - B1 AB | 2021-12-16 → 2021-12-20 (+4d) | 2021-12-30 → 2022-01-04 (+5d) | 28d → 29d |
| 1FIA170 | Paint Exposed Struct - B1 AB | 2022-01-03 → 2022-01-05 (+2d) | 2022-01-14 → 2022-01-18 (+4d) | 36d → 37d |
| 1FIA180 | Install Controls - B1 AB | 2022-01-03 → 2022-01-05 (+2d) | 2022-01-14 → 2022-01-18 (+4d) | 93d → 94d |
| 1FIA190 | Ceiling Grid - Rooms - B1 AB | 2022-01-03 → 2022-01-05 (+2d) | 2022-01-11 → 2022-01-13 (+2d) | 29d → 30d |
| 1FIA200 | Elec Finish & Trim - B1 AB | 2022-01-12 → 2022-01-14 (+2d) | 2022-01-25 → 2022-01-27 (+2d) | 66d → 69d |
| 1FIA210 | Casework & Countertops - B1 AB | 2022-01-26 → 2022-01-28 (+2d) | 2022-02-01 → 2022-02-03 (+2d) | 29d → 30d |
| 1FIA220 | Ceiling Grid Corridors - B1 AB | 2022-01-27 → 2022-01-31 (+4d) | 2022-02-04 → 2022-02-08 (+4d) | 28d → 29d |
| 1FIA230 | Cut Fire Sprink Drops - B1 AB | 2022-01-27 → 2022-01-31 (+4d) | 2022-01-31 → 2022-02-02 (+2d) | 82d → 83d |
| 1FIA240 | Install Light Fixtures - B1 AB | 2022-01-27 → 2022-01-31 (+4d) | 2022-02-09 → 2022-02-11 (+2d) | 28d → 29d |
| 1FIA250 | Tile Backsplash Brkrm - B1 AB | 2022-02-02 → 2022-02-04 (+2d) | 2022-02-08 → 2022-02-10 (+2d) | 56d → 59d |
| 1FIA260 | Telecom Finish & Trim - B1 AB | 2022-02-02 → 2022-02-04 (+2d) | 2022-02-11 → 2022-02-15 (+4d) | 53d → 56d |
| 1FIA270 | Acoustical Wall Panels - B1 B | 2022-02-02 → 2022-02-04 (+2d) | 2022-02-08 → 2022-02-10 (+2d) | 81d → 84d |
| 1FIA280 | Vinyl Tile Flooring - B1 AB | 2022-02-07 → 2022-02-09 (+2d) | 2022-02-18 → 2022-02-23 (+5d) | 41d → 44d |
| 1FIA290 | HVAC Registers/Grilles - B1 AB | 2022-02-07 → 2022-02-09 (+2d) | 2022-02-16 → 2022-02-18 (+2d) | 70d → 71d |
| 1FIA300 | Fire Alarm Devices - B1 AB | 2022-02-07 → 2022-02-09 (+2d) | 2022-02-18 → 2022-02-23 (+5d) | 57d → 58d |
| 1FIA310 | Access Floor Cmd & Ctrl - B1 B | 2022-02-07 → 2022-02-09 (+2d) | 2022-02-11 → 2022-02-15 (+4d) | 73d → 74d |
| 1FIA320 | Porcelain Tile at Lobby - B1 A | 2022-02-17 → 2022-02-11 (-6d) | 2022-02-28 → 2022-02-22 (-6d) | 43d → 52d |
| 1FIA330 | Carpet Tile - B1 AB | 2022-02-10 → 2022-02-14 (+4d) | 2022-02-16 → 2022-02-18 (+2d) | 28d → 29d |
| 1FIA340 | Seal Concrete Floors - B1 AB | 2022-02-17 → 2022-02-22 (+5d) | 2022-02-24 → 2022-02-28 (+4d) | 67d → 70d |
| 1FIA350 | Int Doors & Hardware - B1 AB | 2022-02-17 → 2022-02-22 (+5d) | 2022-03-01 → 2022-03-03 (+2d) | 28d → 29d |
| 1FIA360 | Wall/Corner Protection - B1 AB | 2022-02-22 → 2022-02-24 (+2d) | 2022-03-02 → 2022-03-04 (+2d) | 41d → 44d |
| 1FIA370 | Drop Ceiling Tiles - B1 AB | 2022-02-22 → 2022-02-24 (+2d) | 2022-02-28 → 2022-03-02 (+2d) | 68d → 69d |
| 1FIA380 | Folding Panel Partition - B1 B | 2022-02-22 → 2022-02-24 (+2d) | 2022-02-28 → 2022-03-02 (+2d) | 68d → 71d |
| 1FIA390 | Finish Fire Sprinklers - B1 AB | 2022-03-01 → 2022-03-03 (+2d) | 2022-03-07 → 2022-03-09 (+2d) | 68d → 69d |
| 1FIA410 | Final Paint - B1 AB | 2022-03-03 → 2022-03-07 (+4d) | 2022-03-09 → 2022-03-11 (+2d) | 41d → 44d |
| 1FIA400 | Access Ctrl / ESS Trim - B1 AB | 2022-03-02 → 2022-03-09 (+7d) | 2022-03-15 → 2022-03-22 (+7d) | 28d → 26d |
| 1FIA420 | Resilient Base - B1 AB | 2022-03-10 → 2022-03-14 (+4d) | 2022-03-16 → 2022-03-18 (+2d) | 41d → 44d |
| 1 | **Restrooms** | 2022-01-12 → 2022-01-14 (+2d) | 2022-03-07 → 2022-03-09 (+2d) |  |
| 1FIA700 | Wall Tile - Restrooms - B1 AB | 2022-01-12 → 2022-01-14 (+2d) | 2022-01-25 → 2022-01-27 (+2d) | 49d → 52d |
| 1FIA710 | Flr Tile - Restrooms - B1 AB | 2022-01-26 → 2022-01-28 (+2d) | 2022-02-08 → 2022-02-10 (+2d) | 49d → 52d |
| 1FIA720 | Countertop - Restrooms - B1 AB | 2022-02-10 → 2022-02-14 (+4d) | 2022-02-10 → 2022-02-14 (+4d) | 63d → 66d |
| 1FIA730 | Plumbing Fixtures - B1 AB | 2022-02-11 → 2022-02-15 (+4d) | 2022-02-17 → 2022-02-22 (+5d) | 63d → 66d |
| 1FIA740 | Toilet Partitions - B1 AB | 2022-02-18 → 2022-02-23 (+5d) | 2022-03-02 → 2022-03-04 (+2d) | 63d → 66d |
| 1FIA750 | Toilet Accessories - B1 AB | 2022-03-03 → 2022-03-07 (+4d) | 2022-03-07 → 2022-03-09 (+2d) | 63d → 66d |
| 5 | **Electrical Room** | 2021-12-02 → 2021-12-06 (+4d) | 2022-02-01 → 2022-02-03 (+2d) |  |
| 1ELB100 | Paint - Elec Rooms - B1 B | 2021-12-02 → 2021-12-06 (+4d) | 2021-12-03 → 2021-12-07 (+4d) | 1d → 2d |
| 1ELB110 | Set Electrical Panels - B1 B | 2021-12-06 → 2021-12-08 (+2d) | 2022-01-04 → 2022-01-06 (+2d) | 1d → 2d |
| 1ELB120 | Set Transformers - B1 B | 2021-12-06 → 2021-12-08 (+2d) | 2022-01-04 → 2022-01-06 (+2d) | 1d → 2d |
| 1ELB130 | Pull Feeders - B1 - Rm 1161 | 2022-01-05 → 2022-01-07 (+2d) | 2022-01-11 → 2022-01-13 (+2d) | 1d → 2d |
| 1ELB140 | Make Up Elec Panels - B1 B | 2022-01-05 → 2022-01-07 (+2d) | 2022-02-01 → 2022-02-03 (+2d) | 1d → 2d |
| 3 | **LV Rooms (Telecom / LAN / Security)** | 2021-12-02 → 2021-12-06 (+4d) | 2022-02-25 → 2022-03-01 (+4d) |  |
| 1LVB100 | Plywood Walls - LV Rms - B1 B | 2021-12-02 → 2021-12-06 (+4d) | 2021-12-03 → 2021-12-07 (+4d) | 9d → 10d |
| 1LVB110 | Paint - LV Rms - B1 B | 2021-12-06 → 2021-12-08 (+2d) | 2021-12-07 → 2021-12-09 (+2d) | 9d → 10d |
| 1LVB120 | Cable Tray/Ladder LV Rm - B1 B | 2021-12-08 → 2021-12-10 (+2d) | 2021-12-21 → 2021-12-23 (+2d) | 9d → 10d |
| 1LVB130 | Anti-Static Flooring - B1 B | 2021-12-08 → 2021-12-10 (+2d) | 2021-12-14 → 2021-12-16 (+2d) | 14d → 15d |
| 1LVB140 | Set CRAC Units - LV Rms - B1 B | 2021-12-15 → 2021-12-17 (+2d) | 2021-12-16 → 2021-12-20 (+4d) | 30d → 31d |
| 1LVB150 | Build Out CRAC Units - B1 B | 2021-12-17 → 2021-12-21 (+4d) | 2022-01-03 → 2022-01-05 (+2d) | 30d → 31d |
| 1LVB160 | Racks/Cabinets - LV Rms - B1 B | 2021-12-22 → 2021-12-27 (+5d) | 2022-01-13 → 2022-01-17 (+4d) | 9d → 10d |
| 1LVB170 | UPS Equipment - LV Rms - B1 B | 2022-01-14 → 2022-01-18 (+4d) | 2022-01-20 → 2022-01-24 (+4d) | 9d → 10d |
| 1LVB180 | Patch Panel/Termination - B1 B | 2022-01-14 → 2022-01-18 (+4d) | 2022-01-27 → 2022-01-31 (+4d) | 50d → 51d |
| 1LVB190 | Grounding - LV Rms - B1 B | 2022-01-14 → 2022-01-18 (+4d) | 2022-01-20 → 2022-01-24 (+4d) | 9d → 10d |
| 1LVB200 | ESS Panel Wiring/Makeup - B1 B | 2022-01-27 → 2022-01-31 (+4d) | 2022-02-09 → 2022-02-11 (+2d) | 61d → 62d |
| 1LVB210 | AT&T Install FO Lines & Equip | 2022-01-28 → 2022-02-01 (+4d) | 2022-02-25 → 2022-03-01 (+4d) | 50d → 51d |
| 4 | **Mechanical Room (1125)** | 2021-11-30 → 2021-12-02 (+2d) | 2022-01-25 → 2022-01-27 (+2d) |  |
| 1MCA100 | Paint Mech Rm 1125 - B1 A | 2021-11-30 → 2021-12-02 (+2d) | 2021-12-01 → 2021-12-03 (+2d) | 14d → 15d |
| 1MCA110 | AHUs in Mech Rm 1125 - B1 A | 2021-12-02 → 2021-12-06 (+4d) | 2021-12-08 → 2021-12-10 (+2d) | 14d → 15d |
| 1MCA120 | Duct & Mech Piping - Rm 1125 | 2021-12-09 → 2021-12-13 (+4d) | 2021-12-30 → 2022-01-04 (+5d) | 14d → 15d |
| 1MCA130 | Install VFDs - B1 - Rm 1125 | 2022-01-03 → 2022-01-05 (+2d) | 2022-01-05 → 2022-01-07 (+2d) | 21d → 22d |
| 1MCA140 | Insulate Duct/Piping - Rm 1125 | 2022-01-03 → 2022-01-05 (+2d) | 2022-01-11 → 2022-01-13 (+2d) | 14d → 15d |
| 1MCA150 | Elec Connect Mec Units-Rm 1125 | 2022-01-06 → 2022-01-10 (+4d) | 2022-01-14 → 2022-01-18 (+4d) | 21d → 22d |
| 1MCA160 | Install Controls - Rm 1125 | 2022-01-12 → 2022-01-14 (+2d) | 2022-01-25 → 2022-01-27 (+2d) | 14d → 15d |

| ID | Task | Start | Finish | Complete | Total float | Predecessors |
| --- | --- | --- | --- | --- | --- | --- |
| 1 | **Rough In** |  | 2022-02-02 → 2022-02-04 (+2d) |  |  |  |
| 1RIE100 | Electrical Rough In OH - B1 E |  | 2021-08-25 → 2021-08-19 (-6d) | 35% → 75% | 88d → 93d |  |
| 1RIE110 | Fire Alarm Rough In OH - B1 E |  | 2021-07-08 → 2021-08-04 (+27d) | 80% → 90% | 122d → 104d |  |
| 1RIE290 | Power & Lighting Wire - B1 E | 2021-12-02 → 2021-07-06 A (-149d) | 2021-12-15 → 2021-12-16 (+1d) | 0% → 15% | 36d → 38d |  |
| 1RIE140 | Fire Sprinkler Rough In - B1 E | 2021-08-12 → 2021-07-12 A (-31d) | 2021-08-25 → 2021-09-07 (+13d) | 0% → 75% | 27d → 28d |  |
| 1RIE170 | Dry Pipe Sprink - Sally Port | 2021-08-26 → 2021-09-08 (+13d) | 2021-09-07 → 2021-09-17 (+10d) |  | 162d → 159d |  |
| 1RIE160 | Frame Top of CMU Walls - B1 E | 2021-09-24 → 2021-09-28 (+4d) | 2021-10-07 → 2021-10-11 (+4d) |  | 7d → 14d |  |
| 1RIE180 | Water & Gas Rough In - B1 E | 2021-10-08 → 2021-10-12 (+4d) | 2021-10-21 → 2021-10-25 (+4d) |  | 21d → 20d |  |
| 1RIE190 | Top Down Drywall - B1 E | 2021-10-08 → 2021-10-12 (+4d) | 2021-10-19 → 2021-10-21 (+2d) |  | 7d → 14d |  |
| 1RIE120 | Waste & Vent Rough In - B1 E | 2021-10-11 → 2021-10-13 (+2d) | 2021-10-22 → 2021-10-26 (+4d) |  | 25d → 24d |  |
| 1RIE130 | HVAC Hangers - B1 E | 2021-10-11 → 2021-10-13 (+2d) | 2021-10-15 → 2021-10-19 (+4d) |  | 4d → 26d |  |
| 1RIE220 | Elec Rough In Walls - B1 E | 2021-10-12 → 2021-10-19 (+7d) | 2021-10-25 → 2021-11-01 (+7d) |  | 24d → 20d |  |
| 1RIE230 | FA Rough In Walls - B1 E | 2021-10-12 → 2021-10-19 (+7d) | 2021-10-25 → 2021-11-01 (+7d) |  | 24d → 20d |  |
| 1RIE150 | OH Mech Units - B1 E | 2021-10-18 → 2021-10-20 (+2d) | 2021-10-22 → 2021-10-26 (+4d) |  | 4d → 26d |  |
| 1RIE240 | Tel/Data Rough In Walls - B1 E | 2021-10-12 → 2021-10-21 (+9d) | 2021-10-25 → 2021-11-03 (+9d) |  | 24d → 18d |  |
| 1RIE250 | ESS Rough In Walls - B1 E | 2021-10-12 → 2021-10-21 (+9d) | 2021-10-25 → 2021-11-03 (+9d) |  | 24d → 18d |  |
| 1RIE260 | Intercom Rough In - B1 E | 2021-10-12 → 2021-10-21 (+9d) | 2021-10-25 → 2021-11-03 (+9d) |  | 24d → 18d |  |
| 1RIE270 | Hydronic Piping - B1 E | 2021-11-29 → 2021-10-22 (-38d) | 2021-12-17 → 2021-11-12 (-35d) |  | 4d → 14d | 1RIE200, 230515-02, 236426-12 → 230515-02, 236426-12, 1RIA280, 1STE120, 1RIE190 |
| 1RIE210 | Insulate Plumbing Lines - B1 E | 2021-10-22 → 2021-10-26 (+4d) | 2021-10-28 → 2021-11-01 (+4d) |  | 21d → 20d |  |
| 1RIE200 | Ductwork & Accessories - B1 E | 2021-10-25 → 2021-11-15 (+21d) | 2021-11-24 → 2021-12-16 (+22d) |  | 4d → 14d | 1RIE190, 1RIE150 → 1RIE190, 1RIE150, 1RIE270 |
| 1RIE300 | Insulate Hydronic Pipe - B1 E | 2021-12-20 → 2021-11-15 (-35d) | 2021-12-30 → 2021-11-24 (-36d) |  | 10d → 33d |  |
| 1RIE273 | Perform DALT - B1 E | 2021-11-29 → 2021-12-17 (+18d) | 2021-11-30 → 2021-12-20 (+20d) |  | 37d → 26d |  |
| 1RIE310 | Condensate to OH Units - B1 E | 2021-12-20 → 2021-12-17 (-3d) | 2021-12-27 → 2021-12-23 (-4d) |  | 13d → 14d | 1RIE270 → 1RIE270, 1RIE200 |
| 1RIE320 | Elec Connect OH Units - B1 E | 2021-12-16 → 2021-12-17 (+1d) | 2021-12-22 → 2021-12-23 (+1d) |  | 36d → 38d |  |
| 1RIE276 | Submit DALT Report - B1 E | 2021-12-01 → 2021-12-21 (+20d) | 2021-12-02 → 2021-12-22 (+20d) |  | 37d → 26d |  |
| 1RIE278 | GOV APPR Dalt Report | 2021-12-03 → 2021-12-23 (+20d) | 2021-12-09 → 2021-12-30 (+21d) |  | 37d → 26d |  |
| 1RIE330 | Pull Fire Alarm Wiring - B1 E | 2021-12-23 → 2021-12-28 (+5d) | 2022-01-07 → 2022-01-11 (+4d) |  | 36d → 37d |  |
| 1RIE280 | Insulate Ductwork - B1 E | 2021-12-10 → 2022-01-03 (+24d) | 2021-12-21 → 2022-01-12 (+22d) |  | 37d → 26d |  |
| 1RIE340 | Cable Trays - B1 E | 2022-01-10 → 2022-01-12 (+2d) | 2022-01-19 → 2022-01-21 (+2d) |  | 18d → 19d |  |
| 1RIE350 | Unit Heaters - Fire Riser Rms | 2022-01-17 → 2022-01-19 (+2d) | 2022-01-18 → 2022-01-20 (+2d) |  | 66d → 69d |  |
| 1RIE360 | Communication Cable - B1 E | 2022-01-20 → 2022-01-24 (+4d) | 2022-02-02 → 2022-02-04 (+2d) |  | 18d → 19d |  |
| 1RIE370 | Pull Security Cable - B1 E | 2022-01-20 → 2022-01-24 (+4d) | 2022-02-02 → 2022-02-04 (+2d) |  | 18d → 19d |  |
| 2 | **Finishes** | 2021-10-29 → 2021-11-04 (+6d) |  |  |  |  |
| 1FIE700 | Insulation & Firestop - B1 E | 2021-10-29 → 2021-11-04 (+6d) | 2021-11-02 → 2021-11-08 (+6d) |  | 21d → 18d |  |
| 1FIE710 | Hang Secur Mesh & Gyp - B1 E | 2021-11-16 → 2021-11-18 (+2d) | 2021-12-01 → 2021-12-03 (+2d) |  | 13d → 12d |  |
| 1FIE720 | Tape & Finish Drywall - B1 E | 2021-12-02 → 2021-12-06 (+4d) | 2021-12-22 → 2021-12-27 (+5d) |  | 14d → 12d |  |
| 1FIE730 | Prime & 1st Coat Walls - B1 E | 2021-12-23 → 2021-12-28 (+5d) | 2022-01-07 → 2022-01-11 (+4d) |  | 14d → 12d |  |
| 1FIE740 | Support for Plaster Clg - B1 E | 2022-01-03 → 2021-12-29 (-5d) | 2022-01-12 → 2022-01-10 (-2d) |  | 10d → 12d |  |
| 1FIE750 | Lath Ceilings - B1 E | 2022-01-13 → 2022-01-11 (-2d) | 2022-01-19 → 2022-01-17 (-2d) |  | 10d → 12d |  |
| 1FIE760 | Paint Exposed Struct - B1 E | 2022-01-10 → 2022-01-12 (+2d) | 2022-01-14 → 2022-01-18 (+4d) |  | 36d → 37d |  |
| 1FIE770 | Scratch Coat Ceilings - B1 E | 2022-01-20 → 2022-01-18 (-2d) | 2022-01-21 → 2022-01-19 (-2d) |  | 10d → 12d |  |
| 1FIE780 | Cure Scratch Coat - B1 E | 2022-01-22 → 2022-01-20 (-2d) | 2022-01-23 → 2022-01-21 (-2d) |  | 15d → 18d |  |
| 1FIE790 | Install Controls - B1 E | 2022-01-19 → 2022-01-21 (+2d) | 2022-01-28 → 2022-02-01 (+4d) |  | 66d → 69d |  |
| 1FIE870 | Seal Concrete Floors - B1 E | 2022-02-25 → 2022-03-01 (+4d) | 2022-03-01 → 2022-03-03 (+2d) |  | 67d → 70d |  |
| 3 | **Electrical Room** | 2021-11-16 → 2021-11-18 (+2d) | 2022-01-18 → 2022-01-19 (+1d) |  |  |  |
| 1ELE100 | Paint - Bldg 1 - Rm 1214 | 2021-11-16 → 2021-11-18 (+2d) | 2021-11-17 → 2021-11-19 (+2d) |  | 13d → 12d |  |
| 1ELE110 | Receive Main Switchboard MSB1 | 2021-11-16 → 2021-11-18 (+2d) | 2021-11-17 → 2021-11-19 (+2d) |  | 13d → 12d |  |
| 1ELE120 | Set Switch Gear - B1 - Rm 1214 | 2021-11-18 → 2021-11-23 (+5d) | 2021-11-24 → 2021-12-01 (+7d) |  | 13d → 11d |  |
| 1ELE130 | Receive All Other Switchboards | 2021-11-18 → 2021-11-23 (+5d) | 2021-11-24 → 2021-12-01 (+7d) |  | 43d → 41d |  |
| 1ELE140 | Build Switch Gear - B1 Rm 1214 | 2021-11-29 → 2021-12-02 (+3d) | 2022-01-11 → 2022-01-14 (+3d) |  | 13d → 11d |  |
| 1ELE150 | FA Control Panel - B1 Rm 1214 | 2021-11-29 → 2021-12-02 (+3d) | 2021-12-03 → 2021-12-08 (+5d) |  |  |  |
| 1ELE160 | Pull Feeders - B1 - Rm 1214 | 2021-11-30 → 2021-12-02 (+2d) | 2021-12-13 → 2021-12-15 (+2d) |  | 23d → 24d |  |
| 1ELE200 | Test UG Elec Distribution | 2021-12-01 → 2021-12-03 (+2d) | 2021-12-01 → 2021-12-03 (+2d) |  | 31d → 32d |  |
| 1ELE210 | GOV APPR UG Elect Test Report | 2021-12-02 → 2021-12-04 (+2d) | 2021-12-15 → 2021-12-17 (+2d) |  | 49d → 52d |  |
| 1ELE170 | Makeup Switchgear - B1 Rm 1214 | 2021-12-14 → 2021-12-16 (+2d) | 2021-12-20 → 2021-12-22 (+2d) |  | 23d → 24d |  |
| 1ELE220 | Apparatus Insp & Testing | 2021-12-21 → 2021-12-23 (+2d) | 2021-12-28 → 2021-12-30 (+2d) |  | 23d → 24d |  |
| 1ELE230 | GOV APPR Apparatus Test | 2021-12-29 → 2021-12-31 (+2d) | 2022-01-11 → 2022-01-13 (+2d) |  | 34d → 35d |  |
| 1ELE180 | Schedule SDG&E Inspection | 2022-01-12 → 2022-01-15 (+3d) | 2022-01-14 → 2022-01-17 (+3d) |  |  |  |
| 1ELE190 | SDG&E Inspection & Set Meter | 2022-01-17 → 2022-01-18 (+1d) | 2022-01-18 → 2022-01-19 (+1d) |  | 11d → 13d |  |
| 4 | **All Areas** | 2021-09-24 → 2021-09-28 (+4d) |  |  |  |  |
| 1FN100 | Layout Access Floor - B1 | 2021-09-24 → 2021-09-28 (+4d) | 2021-09-24 → 2021-09-28 (+4d) |  | 146d → 149d |  |
| 1FN110 | Build Out Fire Risers - B1 | 2022-01-03 → 2022-01-05 (+2d) | 2022-01-14 → 2022-01-18 (+4d) |  | 103d → 104d |  |
| 1FN130 | FRP in Janitors Closets - B1 | 2022-01-10 → 2022-01-12 (+2d) | 2022-01-21 → 2022-01-25 (+4d) |  | 93d → 96d |  |
| 1FN120 | Tube Daylight Diffuser - B1 AC | 2022-01-12 → 2022-01-14 (+2d) | 2022-01-20 → 2022-01-24 (+4d) |  | 89d → 90d |  |
| 1FN140 | AV System & Equip - B1 | 2022-01-28 → 2022-02-01 (+4d) | 2022-03-11 → 2022-03-15 (+4d) |  | 59d → 62d |  |
| 1FN150 | Walk-Off Mats - B1 | 2022-02-22 → 2022-02-24 (+2d) | 2022-02-23 → 2022-02-25 (+2d) |  | 71d → 74d |  |
| 1FN160 | Window Coverings - B1 | 2022-03-10 → 2022-03-14 (+4d) | 2022-03-21 → 2022-03-23 (+2d) |  | 53d → 56d |  |
| 6 | **BPS Entry Stairs & Ramp** |  | 2022-01-21 → 2022-01-11 (-10d) |  |  |  |
| 1ENT120 | Place Ftg Conc - B1 Entry RW |  | 2021-11-04 → 2021-06-14 A (-143d) | 95% → 100% | 15d → none |  |
| 1ENT160 | Place Wall Concr - B1 Entry RW |  | 2021-11-04 → 2021-11-08 (+4d) |  | 15d → 24d |  |

| ID | Task | Start | Finish | Complete | Total float |
| --- | --- | --- | --- | --- | --- |
| 1ENT170 | Cure Walls - B1 Entry RW |  | 2021-11-11 → 2021-07-06 A (-128d) | 0% → 100% | 31d → none |
| 1ENT180 | Strip Walls - B1 Entry RW | 2021-11-12 → 2021-07-12 A (-123d) | 2021-11-15 → 2021-07-12 A (-126d) | 0% → 100% | 15d → none |
| 1ENT190 | Waterproofing - B1 Entry RW | 2021-11-17 → 2021-07-28 A (-112d) | 2021-11-17 → 2021-07-29 A (-111d) | 0% → 100% | 15d → none |
| 1ENT200 | Backfill & Grade - B1 Entry | 2021-11-18 → 2021-11-08 (-10d) | 2021-11-29 → 2021-11-15 (-14d) |  | 15d → 24d |
| 1ENT210 | Form Entrance Ramps - B1 Entry | 2021-11-30 → 2021-11-17 (-13d) | 2021-12-13 → 2021-12-02 (-11d) |  | 15d → 24d |
| 1ENT220 | Flagpole Ftgs - B1 Entry | 2021-11-30 → 2021-11-17 (-13d) | 2021-12-08 → 2021-11-23 (-15d) |  | 31d → 40d |
| 1ENT230 | Rebar Ramps - B1 Entry | 2021-12-14 → 2021-12-03 (-11d) | 2021-12-22 → 2021-12-10 (-12d) |  | 21d → 30d |
| 1ENT240 | Form Stairs & Slab - B1 Entry | 2021-12-14 → 2021-12-03 (-11d) | 2021-12-29 → 2021-12-15 (-14d) |  | 15d → 24d |
| 1ENT250 | Place Ramp Concrete - B1 Entry | 2021-12-27 → 2021-12-13 (-14d) | 2021-12-28 → 2021-12-14 (-14d) |  | 21d → 30d |
| 1ENT260 | Rebar Stairs & Slab - B1 Entry | 2022-01-04 → 2021-12-17 (-18d) | 2022-01-10 → 2021-12-28 (-13d) |  | 15d → 24d |
| 1ENT270 | Place Stairs & Slab - B1 Entry | 2022-01-11 → 2021-12-29 (-13d) | 2022-01-12 → 2022-01-04 (-8d) |  | 15d → 24d |
| 1ENT280 | Set Handrails - B1 Entry | 2022-01-14 → 2022-01-05 (-9d) | 2022-01-21 → 2022-01-11 (-10d) |  | 100d → 109d |
| 2 | **Structure** |  | 2021-08-10 → 2021-09-10 (+31d) |  |  |
| 1AST100 | Underslab Plumbing - B1A |  | 2021-07-02 → 2021-08-03 (+32d) |  | 69d → 52d |
| 1AST130 | Erect Metal Bldg - B1A |  | 2021-07-16 → 2021-08-13 (+28d) |  | 64d → 47d |
| 1AST110 | Underslab Mech Piping - B1A |  | 2021-07-26 → 2021-08-24 (+29d) |  | 104d → 85d |
| 1AST140 | Set 6" Base - B1A | 2021-07-19 → 2021-08-16 (+28d) | 2021-07-20 → 2021-08-17 (+28d) |  | 76d → 56d |
| 1AST150 | Install Vapor Barrier - B1A | 2021-07-21 → 2021-08-19 (+29d) | 2021-07-21 → 2021-08-19 (+29d) |  | 76d → 56d |
| 1AST160 | Slab Rebar - B1A | 2021-07-22 → 2021-08-20 (+29d) | 2021-07-23 → 2021-08-23 (+31d) |  | 76d → 56d |
| 1AST170 | Place Concrete Slab - B1A | 2021-07-26 → 2021-08-24 (+29d) | 2021-07-26 → 2021-08-24 (+29d) |  | 76d → 56d |
| 1AST180 | Cure SOG - B1A | 2021-07-27 → 2021-08-25 (+29d) | 2021-08-02 → 2021-08-31 (+29d) |  | 121d → 96d |
| 1AST190 | Form Equip Pads - B1A | 2021-08-03 → 2021-09-01 (+29d) | 2021-08-05 → 2021-09-03 (+29d) |  | 73d → 55d |
| 1AST200 | Rebar Equip Pads - B1A | 2021-08-06 → 2021-09-07 (+32d) | 2021-08-09 → 2021-09-09 (+31d) |  | 73d → 55d |
| 1AST210 | Place Equip Pads - B1A | 2021-08-10 → 2021-09-10 (+31d) | 2021-08-10 → 2021-09-10 (+31d) |  | 73d → 55d |
| 3 | **Plant Build-Out** | 2021-08-03 → 2021-09-01 (+29d) |  |  |  |
| 1AFI100 | Rough Electrical - B1A | 2021-08-03 → 2021-09-01 (+29d) | 2021-08-09 → 2021-09-09 (+31d) |  | 84d → 65d |
| 1AFI110 | Power & Lighting Wire - B1A | 2021-08-10 → 2021-09-10 (+31d) | 2021-08-16 → 2021-09-16 (+31d) |  | 95d → 77d |
| 1AFI150 | Set Pumps & Exp Tank - B1A | 2021-08-27 → 2021-09-14 (+18d) | 2021-08-31 → 2021-09-16 (+16d) |  | 62d → 54d |
| 1AFI170 | Finish Electrical - B1A | 2021-08-17 → 2021-09-17 (+31d) | 2021-08-20 → 2021-09-21 (+32d) |  | 95d → 77d |
| 1AFI120 | Set Air Handling Unit - B1A | 2021-09-13 → 2021-09-28 (+15d) | 2021-09-15 → 2021-09-30 (+15d) |  | 53d → 45d |
| 1AFI130 | Set Chillers - B1A | 2021-09-13 → 2021-09-28 (+15d) | 2021-09-15 → 2021-09-30 (+15d) |  | 53d → 45d |
| 1AFI140 | Set Boilers - B1A | 2021-10-12 → 2021-11-08 (+27d) | 2021-10-15 → 2021-11-10 (+26d) |  | 34d → 20d |
| 1AFI180 | Plumbing Piping - B1A | 2021-10-22 → 2021-11-12 (+21d) | 2021-11-23 → 2021-12-20 (+27d) |  | 31d → 20d |
| 1AFI190 | Hydronic Piping - B1A | 2021-12-20 → 2021-11-15 (-35d) | 2022-01-26 → 2021-12-22 (-35d) |  | 2d → 22d |
| 1AFI160 | Install VFDs - B1A | 2021-12-02 → 2021-12-14 (+12d) | 2021-12-09 → 2021-12-22 (+13d) |  | 30d → 25d |
| 1AFI200 | Elec Connect to Mec Unts - B1A | 2022-01-28 → 2021-12-27 (-32d) | 2022-02-04 → 2022-01-05 (-30d) |  | 5d → 25d |
| 1AFI210 | Insulate Hydronic Piping - B1A | 2022-01-28 → 2021-12-27 (-32d) | 2022-02-10 → 2022-01-10 (-31d) |  | 2d → 22d |
| 1AFI220 | Install Controls - B1A | 2022-01-28 → 2021-12-27 (-32d) | 2022-02-04 → 2022-01-05 (-30d) |  | 5d → 25d |
| 12 | **Building 3 Water Well Pumphouse** |  | 2022-04-11 → 2022-04-19 (+8d) |  |  |
| 1 | **Foundations & Slab** |  | 2021-07-22 → 2021-08-20 (+29d) |  |  |
| 3FN100 | Dig Ftgs & GBs - B3 & Tanks |  | 2021-07-02 → 2021-08-03 (+32d) |  | 2d → 9d |
| 3FN120 | Set Anchor Bolts - B3 & Tanks |  | 2021-07-07 → 2021-08-05 (+29d) |  | 61d → 43d |
| 3FN110 | Spread Ftg Rebar - B3 & Tanks |  | 2021-07-06 → 2021-08-04 (+29d) |  | 61d → 43d |
| 3FN130 | Place Spread Ftgs - B3 & Tanks |  | 2021-07-08 → 2021-08-06 (+29d) |  | 61d → 43d |
| 3FN140 | Form Grade Beams - B3 & Tanks |  | 2021-07-09 → 2021-08-09 (+31d) |  | 61d → 43d |
| 3FN150 | Grade Beam Rebar - B3 & Tanks |  | 2021-07-09 → 2021-08-09 (+31d) |  | 61d → 43d |
| 3FN160 | Place Grade Beams - B3 & Tanks |  | 2021-07-12 → 2021-08-10 (+29d) |  | 61d → 43d |
| 3FN170 | Cure Grade Beams - B3 & Tanks |  | 2021-07-13 → 2021-08-11 (+29d) |  | 93d → 70d |
| 3FN180 | Strip Grade Beams - B3 & Tanks |  | 2021-07-15 → 2021-08-12 (+28d) |  | 60d → 43d |
| 3FN260 | Form Equip Pads - B3 | 2021-07-16 → 2021-08-13 (+28d) | 2021-07-19 → 2021-08-16 (+28d) |  | 60d → 43d |
| 3FN270 | Rebar Equip Pads - B3 | 2021-07-20 → 2021-08-17 (+28d) | 2021-07-21 → 2021-08-19 (+29d) |  | 60d → 43d |
| 3FN280 | Place Equip Pads - B3 | 2021-07-22 → 2021-08-20 (+29d) | 2021-07-22 → 2021-08-20 (+29d) |  | 60d → 43d |
| 2 | **Structure & Exterior** |  | 2022-04-11 → 2022-04-19 (+8d) |  |  |
| 3ST140 | Metal Panels/Air Barrier - B3 |  | 2021-10-26 → 2021-10-28 (+2d) |  | 9d → 10d |
| 3ST150 | Trim, Gutters, Downspouts - B3 |  | 2021-11-03 → 2021-11-05 (+2d) |  | 136d → 137d |
| 3ST130 | CMU Wall - B3 | 2021-10-11 → 2021-10-13 (+2d) | 2021-10-18 → 2021-10-21 (+3d) |  | 9d → 10d |
| 3ST160 | Light Pole Bases - B3 | 2021-10-27 → 2021-10-29 (+2d) | 2021-10-29 → 2021-11-03 (+5d) |  | 82d → 83d |
| 3ST180 | FRP Door Frames - B3 | 2021-11-23 → 2021-11-29 (+6d) | 2021-11-23 → 2021-11-29 (+6d) |  | 120d → 122d |
| 3ST190 | FRP Doors - B3 | 2021-11-29 → 2021-11-30 (+1d) | 2021-11-30 → 2021-12-02 (+2d) |  | 120d → 122d |
| 3ST110 | Set Water Tanks - B3 | 2021-11-09 → 2021-12-02 (+23d) | 2021-11-17 → 2021-12-09 (+22d) |  | 32d → 22d |
| 3ST200 | Door Hardware - B3 | 2021-12-02 → 2021-12-03 (+1d) | 2021-12-03 → 2021-12-06 (+3d) |  | 120d → 122d |
| 3ST170 | Install Louvers - B3 | 2021-12-02 → 2022-01-04 (+33d) | 2021-12-09 → 2022-01-10 (+32d) |  | 117d → 105d |
| 3ST220 | Set Well Equip - Existing Well | 2022-01-04 → 2022-01-06 (+2d) | 2022-01-10 → 2022-01-12 (+2d) |  | 11d → 10d |
| 3ST230 | Connect Site Water - B3 | 2022-01-19 → 2022-01-20 (+1d) | 2022-01-25 → 2022-01-26 (+1d) |  | 78d → 80d |
| 3ST210 | Light Poles - B3 | 2022-01-17 → 2022-01-26 (+9d) | 2022-01-19 → 2022-01-28 (+9d) |  | 43d → 40d |
| 3ST240 | Fine Grade - B3 | 2022-01-26 → 2022-01-28 (+2d) | 2022-02-02 → 2022-02-04 (+2d) |  | 78d → 80d |
| 3ST250 | Concrete Paving - B3 | 2022-02-04 → 2022-02-07 (+3d) | 2022-02-11 → 2022-02-14 (+3d) |  | 78d → 80d |
| 3ST260 | Fencing & Gates - B3 | 2022-02-14 → 2022-02-15 (+1d) | 2022-02-22 → 2022-02-24 (+2d) |  | 78d → 80d |
| 3ST280 | Disinf/Flush Water Tanks - B3 | 2022-02-14 → 2022-02-16 (+2d) | 2022-02-22 → 2022-02-25 (+3d) |  | 68d → 69d |
| 3ST270 | Aggregate Base - B3 | 2022-04-05 → 2022-04-12 (+7d) | 2022-04-11 → 2022-04-19 (+8d) |  | 52d → 50d |

| ID | Task | Start | Finish | Complete | Total float | Predecessors |
| --- | --- | --- | --- | --- | --- | --- |
| 3 | **Interior** | 2021-10-27 → 2021-10-29 (+2d) | 2022-03-23 → 2022-03-25 (+2d) |  |  |  |
| 3FI100 | Plumbing Rough In - B3 | 2021-10-27 → 2021-10-29 (+2d) | 2021-11-02 → 2021-11-04 (+2d) |  | 13d → 14d |  |
| 3FI110 | Electrical Rough In - B3 | 2021-10-27 → 2021-10-29 (+2d) | 2021-11-05 → 2021-11-09 (+4d) |  | 10d → 11d |  |
| 3FI120 | Int Fire Suppression - B3 | 2021-10-27 → 2021-10-29 (+2d) | 2021-11-02 → 2021-11-04 (+2d) |  | 23d → 24d |  |
| 3FI130 | Fire Alarm Rough In - B3 | 2021-10-27 → 2021-10-29 (+2d) | 2021-11-05 → 2021-11-09 (+4d) |  | 10d → 11d |  |
| 3FI140 | Security Rough In - B3 | 2021-10-27 → 2021-10-29 (+2d) | 2021-11-05 → 2021-11-09 (+4d) |  | 10d → 11d |  |
| 3FI150 | Interior Insulation - B3 | 2021-11-08 → 2021-11-10 (+2d) | 2021-11-09 → 2021-11-12 (+3d) |  | 10d → 11d |  |
| 3FI160 | Pull Fire Alarm Wiring - B3 | 2021-11-08 → 2021-11-10 (+2d) | 2021-11-15 → 2021-11-17 (+2d) |  | 48d → 49d |  |
| 3FI170 | Pull Security Cable - B3 | 2021-11-08 → 2021-11-10 (+2d) | 2021-11-15 → 2021-11-17 (+2d) |  | 114d → 115d |  |
| 3FI180 | Interior Liner Panels - B3 | 2021-11-10 → 2021-11-15 (+5d) | 2021-11-22 → 2021-11-24 (+2d) |  | 10d → 11d |  |
| 3FI190 | HVAC System - B3 | 2021-11-23 → 2021-11-29 (+6d) | 2021-12-08 → 2021-12-10 (+2d) |  | 10d → 11d |  |
| 3FI200 | Transformers & Panels - B3 | 2021-11-23 → 2021-11-29 (+6d) | 2021-12-01 → 2021-12-03 (+2d) |  | 33d → 34d |  |
| 3FI210 | Security System - B3 | 2021-11-23 → 2021-11-29 (+6d) | 2021-12-01 → 2021-12-03 (+2d) |  | 109d → 110d |  |
| 3FI220 | Install Fire Pump - B3 | 2021-11-24 → 2021-11-30 (+6d) | 2021-12-02 → 2021-12-06 (+4d) |  | 10d → 11d |  |
| 3FI230 | Power & Lighting Wire - B3 | 2021-12-02 → 2021-12-06 (+4d) | 2021-12-08 → 2021-12-10 (+2d) |  | 33d → 34d |  |
| 3FI240 | Pull Feeders - B3 | 2021-12-02 → 2021-12-06 (+4d) | 2021-12-08 → 2021-12-10 (+2d) |  | 33d → 34d |  |
| 3FI250 | Booster System w/ Pumps - B3 | 2021-12-03 → 2021-12-07 (+4d) | 2022-01-03 → 2022-01-05 (+2d) |  | 10d → 11d |  |
| 3FI260 | Water Softener Equip - B3 | 2021-12-03 → 2021-12-07 (+4d) | 2022-01-03 → 2022-01-05 (+2d) |  | 20d → 21d |  |
| 3FI280 | Makeup Elec Panels - B3 | 2021-12-09 → 2021-12-13 (+4d) | 2021-12-15 → 2021-12-17 (+2d) |  | 33d → 34d |  |
| 3FI290 | Water Treatment Equip - B3 | 2021-12-17 → 2021-12-21 (+4d) | 2022-01-17 → 2022-01-19 (+2d) |  | 10d → 11d |  |
| 3FI270 | Light Fixtures - B3 | 2021-12-16 → 2022-01-20 (+35d) | 2021-12-22 → 2022-01-26 (+35d) |  | 125d → 105d |  |
| 3FI300 | Fire Alarm System - B3 | 2022-01-18 → 2022-01-20 (+2d) | 2022-01-31 → 2022-02-02 (+2d) |  | 71d → 72d |  |
| 3FI310 | Install Controls - B3 | 2022-01-18 → 2022-01-20 (+2d) | 2022-01-24 → 2022-01-26 (+2d) |  | 15d → 16d |  |
| 3FI320 | Elec Connections to Equip - B3 | 2022-01-18 → 2022-01-20 (+2d) | 2022-01-31 → 2022-02-02 (+2d) |  | 10d → 11d |  |
| 3FI330 | Plumbing Insulation - B3 | 2022-01-18 → 2022-01-20 (+2d) | 2022-01-24 → 2022-01-26 (+2d) |  | 104d → 105d |  |
| 3FI340 | Electrical Finish & Trim - B3 | 2022-02-01 → 2022-02-03 (+2d) | 2022-02-07 → 2022-02-09 (+2d) |  | 94d → 95d |  |
| 3FI350 | Final Clean - B3 | 2022-02-08 → 2022-02-10 (+2d) | 2022-02-14 → 2022-02-16 (+2d) |  | 94d → 95d |  |
| 3FI370 | Start Up/Flush Fire Pumps - B3 | 2022-02-14 → 2022-02-16 (+2d) | 2022-02-15 → 2022-02-17 (+2d) |  | 56d → 58d |  |
| 3FI360 | Flush Boost Pumps/Piping - B3 | 2022-02-16 → 2022-02-18 (+2d) | 2022-02-25 → 2022-02-28 (+3d) |  | 66d → 68d |  |
| 3FI380 | Prelim Test - Fire Pump | 2022-02-16 → 2022-02-18 (+2d) | 2022-02-23 → 2022-02-25 (+2d) |  | 56d → 58d |  |
| 3FI390 | GOV Rev Fire Pump Pre Test Rpt | 2022-02-24 → 2022-02-26 (+2d) | 2022-03-02 → 2022-03-04 (+2d) |  | 85d → 89d |  |
| 3FI410 | Schedule FAT w/ Gov -Fire Pump | 2022-02-24 → 2022-02-26 (+2d) | 2022-03-09 → 2022-03-11 (+2d) |  | 78d → 82d |  |
| 3FI420 | Perform FAT - Fire Pumps | 2022-03-10 → 2022-03-14 (+4d) | 2022-03-16 → 2022-03-18 (+2d) |  | 56d → 57d |  |
| 3FI430 | GOV Rev FAT Report - Fire Pump | 2022-03-17 → 2022-03-19 (+2d) | 2022-03-23 → 2022-03-25 (+2d) |  | 81d → 82d |  |
| 4 | **Building 4 Vehicle Wash Facility** |  | 2022-05-05 → 2022-05-27 (+22d) |  |  |  |
| 1 | **Foundations** |  | 2021-11-08 → 2021-12-09 (+31d) |  |  |  |
| 4FN100 | Dig/Form Deep Ftg/Pit Slab -B4 |  | 2021-07-09 → 2021-08-04 (+26d) | 40% → 80% | 2d → 9d |  |
| 4FN180 | CIP Wall Rebar - B4 | 2021-07-20 → 2021-07-19 A (-1d) | 2021-07-26 → 2021-08-13 (+18d) | 0% → 40% | 2d → 9d |  |
| 4FN120 | Deep Ftg & Pit Slab Rebar - B4 | 2021-07-12 → 2021-07-26 A (+14d) | 2021-07-13 → 2021-07-28 A (+15d) | 0% → 100% | 2d → none |  |
| 4FN140 | Place Deep Ftg & Pit Slab - B4 | 2021-07-15 → 2021-07-30 A (+15d) | 2021-07-15 → 2021-07-30 A (+15d) | 0% → 100% | 2d → none |  |
| 4FN160 | Form 1 Side CIP Walls - B4 | 2021-07-16 → 2021-08-05 (+20d) | 2021-07-22 → 2021-08-11 (+20d) |  | 2d → 9d |  |
| 4FN200 | Close CIP Wall Forms - B4 | 2021-07-27 → 2021-08-16 (+20d) | 2021-08-02 → 2021-08-23 (+21d) |  | 2d → 9d |  |
| 4FN220 | Place CIP Wall - B4 | 2021-08-03 → 2021-08-24 (+21d) | 2021-08-03 → 2021-08-24 (+21d) |  | 2d → 9d |  |
| 4FN240 | Cure CIP Walls - B4 | 2021-08-04 → 2021-08-25 (+21d) | 2021-08-10 → 2021-08-31 (+21d) |  | 2d → 14d |  |
| 4FN260 | Strip CIP Walls - B4 | 2021-08-11 → 2021-09-01 (+21d) | 2021-08-16 → 2021-09-07 (+22d) |  | 2d → 8d |  |
| 4FN280 | Backfill CIP Walls - B4 | 2021-08-17 → 2021-09-09 (+23d) | 2021-08-23 → 2021-09-14 (+22d) |  | 2d → 8d |  |
| 4FN300 | UG Plumbing - B4 | 2021-08-24 → 2021-09-15 (+22d) | 2021-09-01 → 2021-09-24 (+23d) |  | 2d → 8d |  |
| 4FN320 | Deep Elec/Comm in Pad - B4 | 2021-09-02 → 2021-09-27 (+25d) | 2021-09-10 → 2021-10-01 (+21d) |  | 2d → 8d |  |
| 4FN340 | Dig Shallow Ftgs & GBs - B4 | 2021-09-13 → 2021-10-04 (+21d) | 2021-09-15 → 2021-10-07 (+22d) |  | 2d → 8d |  |
| 4FN360 | Form Shallow Ftgs & GBs - B4 | 2021-09-16 → 2021-10-08 (+22d) | 2021-09-21 → 2021-10-13 (+22d) |  | 2d → 8d |  |
| 4FN380 | Shallow Ftg Rebar - B4 | 2021-09-23 → 2021-10-15 (+22d) | 2021-09-28 → 2021-10-21 (+23d) |  | 2d → 8d |  |
| 4FN400 | Set Anchor Bolts - B4 | 2021-09-29 → 2021-10-22 (+23d) | 2021-09-29 → 2021-10-22 (+23d) |  | 2d → 8d |  |
| 4FN420 | Place Shallow Ftg & GBs - B4 | 2021-09-30 → 2021-10-25 (+25d) | 2021-09-30 → 2021-10-25 (+25d) |  | 2d → 8d |  |
| 4FN440 | Cure Grade Beams - B4 | 2021-10-01 → 2021-10-26 (+25d) | 2021-10-03 → 2021-10-28 (+25d) |  | 4d → 11d |  |
| 4FN460 | Install Bollards - B4 | 2021-10-01 → 2021-10-26 (+25d) | 2021-10-05 → 2021-10-28 (+23d) |  | 17d → 22d |  |
| 4FN480 | Strip Grade Beams - B4 | 2021-10-04 → 2021-10-29 (+25d) | 2021-10-07 → 2021-11-03 (+27d) |  | 3d → 6d |  |
| 4FN500 | Underslab Shallow Plumbing -B4 | 2021-10-08 → 2021-11-04 (+27d) | 2021-10-15 → 2021-11-10 (+26d) |  | 4d → 7d |  |
| 4FN520 | Underslab Shallow Elec - B4 | 2021-10-08 → 2021-11-04 (+27d) | 2021-10-15 → 2021-11-10 (+26d) |  | 4d → 7d |  |
| 4FN540 | Form & Pour Trench Drain - B4 | 2021-10-08 → 2021-11-04 (+27d) | 2021-10-18 → 2021-11-12 (+25d) |  | 3d → 6d |  |
| 4FN560 | UG Elec to Vacuum/Air Equip | 2021-10-18 → 2021-11-12 (+25d) | 2021-10-25 → 2021-11-19 (+25d) |  | 118d → 105d |  |
| 4FN580 | Set 6" Base - B4 | 2021-10-20 → 2021-11-15 (+26d) | 2021-10-21 → 2021-11-17 (+27d) |  | 3d → 6d |  |
| 4FN600 | Install Vapor Barrier - B4 | 2021-10-22 → 2021-11-18 (+27d) | 2021-10-25 → 2021-11-19 (+25d) |  | 3d → 6d |  |
| 4FN620 | Slab Rebar - B4 | 2021-10-26 → 2021-11-22 (+27d) | 2021-10-28 → 2021-11-29 (+32d) |  | 3d → 6d |  |
| 4FN640 | Place Concrete Slab - B4 | 2021-10-29 → 2021-11-30 (+32d) | 2021-10-29 → 2021-11-30 (+32d) |  | 3d → 6d |  |
| 4FN660 | Cure Concrete Slab - B4 | 2021-10-30 → 2021-12-01 (+32d) | 2021-11-05 → 2021-12-07 (+32d) |  | 6d → 12d |  |
| 4FN680 | Steel Curb Form Islands - B4 | 2021-11-01 → 2021-12-02 (+31d) | 2021-11-03 → 2021-12-03 (+30d) |  | 112d → 99d |  |
| 4FN700 | Rebar Islands for Vacuum - B4 | 2021-11-04 → 2021-12-06 (+32d) | 2021-11-05 → 2021-12-08 (+33d) |  | 112d → 99d |  |
| 4FN720 | Place Islands for Vacuum - B4 | 2021-11-08 → 2021-12-09 (+31d) | 2021-11-08 → 2021-12-09 (+31d) |  | 112d → 99d |  |
| 2 | **Structure** | 2021-10-01 → 2021-07-30 (-63d) | 2022-05-05 → 2022-05-27 (+22d) |  |  |  |
| 4ST100 | Unload/Shakeout Canopy - B4,4A | 2021-10-01 → 2021-07-30 A (-63d) | 2021-10-05 → 2021-08-31 (-35d) | 0% → 15% | 22d → 63d | 130480-12, 4FN420 → 130480-12 |

| ID | Task | Start | Finish | Complete | Total float | Predecessors |
| --- | --- | --- | --- | --- | --- | --- |
| 4ST120 | Erect Canopy Columns - B4,4A | 2021-11-08 → 2021-12-08 (+30d) | 2021-11-08 → 2021-12-08 (+30d) |  | 3d → 7d |  |
| 4ST140 | Erect CMU Walls - B4 | 2021-11-09 → 2021-12-09 (+30d) | 2021-12-08 → 2022-01-07 (+30d) |  | 3d → 7d |  |
| 4ST160 | Set HM Frame in CMU - B4 | 2021-11-09 → 2021-12-09 (+30d) | 2021-11-09 → 2021-12-09 (+30d) |  | 17d → 21d |  |
| 4ST180 | Struct Steel at Equip Rm - B4 | 2021-12-09 → 2022-01-10 (+32d) | 2021-12-10 → 2022-01-11 (+32d) |  | 3d → 7d |  |
| 4ST200 | Canopy Rf Stl/Mtl Deck -B4,4A | 2021-12-13 → 2022-01-12 (+30d) | 2022-01-11 → 2022-02-07 (+27d) |  | 3d → 7d |  |
| 4ST220 | Canopy Mtl Panels/Facia -B4,4A | 2022-01-12 → 2022-02-09 (+28d) | 2022-01-28 → 2022-02-25 (+28d) |  | 3d → 7d |  |
| 4ST240 | Mtl Stud Framing Equip Rm - B4 | 2022-01-12 → 2022-02-09 (+28d) | 2022-01-17 → 2022-02-11 (+25d) |  | 48d → 36d |  |
| 4ST260 | Doors & HW to Equip Rm - B4 | 2022-01-19 → 2022-02-14 (+26d) | 2022-01-20 → 2022-02-15 (+26d) |  | 52d → 40d |  |
| 4ST280 | Insulation at Equip Rm - B4 | 2022-01-31 → 2022-02-28 (+28d) | 2022-02-04 → 2022-03-04 (+28d) |  | 47d → 31d |  |
| 4ST300 | HVAC System - B4 | 2022-01-31 → 2022-02-28 (+28d) | 2022-02-08 → 2022-03-08 (+28d) |  | 4d → 8d |  |
| 4ST320 | Gutter, Dwn Spout, Trim -B4,4A | 2022-01-31 → 2022-02-28 (+28d) | 2022-02-11 → 2022-03-10 (+27d) |  | 62d → 50d |  |
| 4ST340 | Elec Rough In - B4 & Canopy | 2022-01-31 → 2022-02-28 (+28d) | 2022-02-25 → 2022-03-21 (+24d) |  | 32d → 20d |  |
| 4ST360 | Rough In Plumbing - B4 | 2022-01-31 → 2022-02-28 (+28d) | 2022-02-15 → 2022-03-14 (+27d) |  | 35d → 23d |  |
| 4ST380 | Lightning Protection - B4,4A | 2022-02-14 → 2022-03-11 (+25d) | 2022-02-22 → 2022-03-17 (+23d) |  | 62d → 50d |  |
| 4ST400 | Wash Equip in Equip Rm - B4 | 2022-02-16 → 2022-03-15 (+27d) | 2022-03-09 → 2022-04-04 (+26d) |  | 40d → 25d |  |
| 4ST420 | Power & Lighting Wire - B4,4A | 2022-02-28 → 2022-03-22 (+22d) | 2022-03-04 → 2022-03-29 (+25d) |  | 50d → 38d |  |
| 4ST440 | Painting - B4 | 2022-02-28 → 2022-03-22 (+22d) | 2022-03-14 → 2022-04-05 (+22d) |  | 32d → 20d |  |
| 4ST460 | Pull Security Cable - B4 | 2022-02-28 → 2022-03-22 (+22d) | 2022-03-04 → 2022-03-29 (+25d) |  | 37d → 25d |  |
| 4ST480 | Light Fixtures - B4 & Canopy | 2022-03-07 → 2022-03-30 (+23d) | 2022-03-14 → 2022-04-05 (+22d) |  | 50d → 38d |  |
| 4ST500 | Install Trench Grating - B4 | 2022-03-10 → 2022-04-05 (+26d) | 2022-03-11 → 2022-04-06 (+26d) |  | 46d → 32d |  |
| 4ST520 | Elec Connections Equip Rm - B4 | 2022-03-10 → 2022-04-05 (+26d) | 2022-03-16 → 2022-04-11 (+26d) |  | 51d → 36d |  |
| 4ST540 | Wash Equip at Wash Bays - B4 | 2022-03-15 → 2022-04-06 (+22d) | 2022-03-29 → 2022-04-20 (+22d) |  | 35d → 23d |  |
| 4ST560 | Security Cameras - B4 & Canopy | 2022-03-15 → 2022-04-06 (+22d) | 2022-03-21 → 2022-04-12 (+22d) |  | 32d → 20d |  |
| 4ST570 | Install Controls - B4 | 2022-03-17 → 2022-04-12 (+26d) | 2022-03-21 → 2022-04-14 (+24d) |  | 65d → 50d |  |
| 4ST580 | Seal Floor - B4 | 2022-03-30 → 2022-04-21 (+22d) | 2022-04-05 → 2022-04-27 (+22d) |  | 35d → 23d |  |
| 4ST600 | Vacuum Cleaner/Air Units - B4 | 2022-03-30 → 2022-04-21 (+22d) | 2022-04-05 → 2022-04-27 (+22d) |  | 35d → 23d |  |
| 4ST620 | Flush & Adjust Wash Equip | 2022-04-06 → 2022-04-28 (+22d) | 2022-04-12 → 2022-05-04 (+22d) |  | 35d → 23d |  |
| 4ST640 | SUBM Cert of Comp - Wash Equip | 2022-04-13 → 2022-05-05 (+22d) | 2022-04-19 → 2022-05-11 (+22d) |  | 37d → 24d |  |
| 4ST660 | GOV REV Cert of Comp -Wash Eqp | 2022-04-20 → 2022-05-12 (+22d) | 2022-04-26 → 2022-05-18 (+22d) |  | 54d → 35d |  |
| 4ST680 | Start-up, Test, Cx Wash Equip | 2022-04-27 → 2022-05-19 (+22d) | 2022-04-28 → 2022-05-20 (+22d) |  | 37d → 24d |  |
| 4ST700 | Final Clean - B4 | 2022-04-29 → 2022-05-23 (+24d) | 2022-05-05 → 2022-05-27 (+22d) |  | 35d → 23d |  |
| 5 | **Building 4A Vehicle Fueling Facility** | 2021-09-13 → 2021-10-04 (+21d) | 2022-05-24 → 2022-06-14 (+21d) |  |  |  |
| 4A1020 | UG Electrical - B4A | 2021-09-13 → 2021-10-04 (+21d) | 2021-09-23 → 2021-10-15 (+22d) |  | 82d → 70d |  |
| 4A1000 | UG Fuel Piping to Generator | 2021-11-09 → 2021-12-02 (+23d) | 2021-11-29 → 2021-12-17 (+18d) |  | 44d → 35d |  |
| 4A1040 | Dig Fuel Tank Ftgs - B4A | 2021-11-30 → 2021-12-20 (+20d) | 2021-12-02 → 2021-12-22 (+20d) |  | 44d → 35d |  |
| 4A1060 | Form Fuel Tank Ftgs -B4A | 2021-12-03 → 2021-12-27 (+24d) | 2021-12-08 → 2021-12-29 (+21d) |  | 44d → 35d |  |
| 4A1080 | Rebar Fuel Tank Ftgs - B4A | 2021-12-09 → 2022-01-04 (+26d) | 2021-12-13 → 2022-01-06 (+24d) |  | 44d → 35d |  |
| 4A1100 | Place Fuel Tank Ftgs - B4A | 2021-12-14 → 2022-01-07 (+24d) | 2021-12-14 → 2022-01-07 (+24d) |  | 44d → 35d |  |
| 4A1120 | Form & Pour Fuel Tank Pads | 2021-12-15 → 2022-01-10 (+26d) | 2021-12-21 → 2022-01-14 (+24d) |  | 56d → 43d |  |
| 4A1140 | Rebar Fuel Tank Pads | 2021-12-15 → 2022-01-10 (+26d) | 2021-12-17 → 2022-01-12 (+26d) |  | 58d → 45d |  |
| 4A1160 | Install Bollards - B4A | 2022-01-31 → 2022-02-28 (+28d) | 2022-02-07 → 2022-03-04 (+25d) |  | 25d → 13d |  |
| 4A1180 | Grade/Base Conc Paving - B4A | 2022-02-09 → 2022-03-07 (+26d) | 2022-02-14 → 2022-03-11 (+25d) |  | 25d → 13d |  |
| 4A1200 | Form Concrete Paving - B4A | 2022-02-15 → 2022-03-14 (+27d) | 2022-02-22 → 2022-03-17 (+23d) |  | 25d → 13d |  |
| 4A1220 | Rebar Concrete Paving - B4A | 2022-02-24 → 2022-03-18 (+22d) | 2022-02-28 → 2022-03-22 (+22d) |  | 25d → 13d |  |
| 4A1240 | Place Concrete Paving - B4A | 2022-03-01 → 2022-03-24 (+23d) | 2022-03-01 → 2022-03-24 (+23d) |  | 25d → 13d |  |
| 4A1260 | Cure Concrete Paving - B4A | 2022-03-02 → 2022-03-25 (+23d) | 2022-03-08 → 2022-03-31 (+23d) |  | 37d → 19d |  |
| 4A1280 | Transformer & Panel - B4A | 2022-03-10 → 2022-04-01 (+22d) | 2022-03-16 → 2022-04-07 (+22d) |  | 44d → 32d |  |
| 4A1320 | Fuel Tanks & Equip - B4A | 2022-03-10 → 2022-04-01 (+22d) | 2022-04-29 → 2022-05-23 (+24d) |  | 24d → 12d |  |
| 4A1300 | Pull Feeders - B4A | 2022-03-17 → 2022-04-08 (+22d) | 2022-03-24 → 2022-04-15 (+22d) |  | 44d → 32d |  |
| 4A1340 | Makeup Electrical Panel - B4A | 2022-03-25 → 2022-04-18 (+24d) | 2022-03-31 → 2022-04-22 (+22d) |  | 44d → 32d |  |
| 4A1360 | Test, Adjust, Flush Fuel Equip | 2022-05-02 → 2022-05-24 (+22d) | 2022-05-04 → 2022-05-26 (+22d) |  | 24d → 12d |  |
| 4A1380 | SUBM Cert of Comp - Fuel Equip | 2022-05-05 → 2022-05-27 (+22d) | 2022-05-05 → 2022-05-27 (+22d) |  | 25d → 12d |  |
| 4A1400 | GOV Rev Cert of Comp -Fuel Eqp | 2022-05-06 → 2022-05-28 (+22d) | 2022-05-12 → 2022-06-03 (+22d) |  | 38d → 19d |  |
| 4A1420 | Fill Fuel Tanks - B4A | 2022-05-06 → 2022-05-31 (+25d) | 2022-05-06 → 2022-05-31 (+25d) |  | 29d → 16d |  |
| 4A1440 | Start-up, Test, Cx Fuel Equip | 2022-05-13 → 2022-06-06 (+24d) | 2022-05-16 → 2022-06-07 (+22d) |  | 25d → 13d |  |
| 4A1460 | Final Clean - B4A | 2022-05-17 → 2022-06-08 (+22d) | 2022-05-24 → 2022-06-14 (+21d) |  | 23d → 12d |  |
| 7 | **Building 5 Canine Kennel Facility** |  | 2022-03-18 → 2022-02-10 (-36d) |  |  |  |
| 1 | **Foundations** |  | 2021-11-25 → 2021-08-03 (-114d) |  |  |  |
| 5FN100 | UG Plumbing - B5 |  | 2021-09-02 → 2021-07-06 A (-58d) | 95% → 100% | 31d → none | 4FN300 → 1STE110 |
| 5FN120 | Dig Ftgs & GBs - B5 |  |  |  |  | 5FN100, 4FN420 → 5FN100 |
| 5FN300 | Grade Pad/Remove Spoils - B5 | 2021-10-27 → 2021-07-06 A (-113d) | 2021-10-28 → 2021-07-07 A (-113d) | 0% → 100% | 13d → none |  |
| 5FN320 | Underslab Shallow Elec - B5 | 2021-10-29 → 2021-07-06 A (-115d) | 2021-11-05 → 2021-07-08 A (-120d) | 0% → 100% | 13d → none |  |
| 5FN360 | Vapor Barrier - B5 | 2021-11-10 → 2021-07-06 A (-127d) | 2021-11-10 → 2021-07-06 A (-127d) | 0% → 100% | 14d → none |  |
| 5FN340 | Set 6" Base - B5 | 2021-11-08 → 2021-07-08 A (-123d) | 2021-11-09 → 2021-07-09 A (-123d) | 0% → 100% | 13d → none |  |
| 5FN140 | Spread Ftg Rebar - B5 | 2021-10-01 → 2021-07-12 A (-81d) | 2021-10-04 → 2021-07-14 A (-82d) | 0% → 100% | 14d → none |  |
| 5FN220 | Grade Beam Rebar - B5 | 2021-10-13 → 2021-07-13 A (-92d) | 2021-10-18 → 2021-07-14 A (-96d) | 0% → 100% | 14d → none |  |
| 5FN200 | Form Grade Beams - B5 | 2021-10-08 → 2021-07-14 A (-86d) | 2021-10-12 → 2021-07-14 A (-90d) | 0% → 100% | 14d → none |  |
| 5FN400 | Slab Rebar - B5 | 2021-11-12 → 2021-07-20 A (-115d) | 2021-11-15 → 2021-07-23 A (-115d) | 0% → 100% | 14d → none |  |
| 5FN380 | Set Trench Drains - B5 | 2021-11-10 → 2021-07-22 A (-111d) | 2021-11-17 → 2021-07-23 A (-117d) | 0% → 100% | 13d → none |  |
| 5FN160 | Set Anchor Bolts - B5 | 2021-10-05 → 2021-07-23 A (-74d) | 2021-10-05 → 2021-07-23 A (-74d) | 0% → 100% | 14d → none |  |

| ID | Task | Start | Finish | Complete | Total float | Predecessors |
| --- | --- | --- | --- | --- | --- | --- |
| 5FN280 | Strip Grade Beams - B5 | 2021-10-25 → 2021-07-23 A (-94d) | 2021-10-26 → 2021-07-26 A (-92d) | 0% → 100% | 13d → none |  |
| 5FN260 | Cure Grade Beams - B5 | 2021-10-21 → 2021-07-26 A (-87d) | 2021-10-23 → 2021-07-30 A (-85d) | 0% → 100% | 22d → none |  |
| 5FN440 | Cure Concrete Slab - B5 | 2021-11-19 → 2021-07-26 A (-116d) | 2021-11-25 → 2021-07-30 A (-118d) | 0% → 100% | 26d → none |  |
| 5FN180 | Place Spread Ftgs - B5 | 2021-10-07 → 2021-07-26 A (-73d) | 2021-10-07 → 2021-07-26 A (-73d) | 0% → 100% | 14d → none |  |
| 5FN240 | Place Grade Beams - B5 | 2021-10-20 → 2021-07-26 A (-86d) | 2021-10-20 → 2021-07-26 A (-86d) | 0% → 100% | 14d → none |  |
| 5FN420 | Place Concrete Slab - B5 | 2021-11-18 → 2021-07-26 A (-115d) | 2021-11-18 → 2021-08-03 (-107d) | 0% → 80% | 13d → 86d |  |
| 2 | **Structure** | 2021-10-21 → 2021-07-28 (-85d) | 2022-03-18 → 2022-02-10 (-36d) |  |  |  |
| 5ST140 | CMU Walls - B5 | 2021-12-08 → 2021-07-28 A (-133d) | 2021-12-27 → 2021-10-12 (-76d) | 0% → 20% | 13d → 55d | 5ST120 → 5ST120, 1STE120 |
| 5ST100 | Unload/Shakout Metal Bldg - B5 | 2021-10-21 → 2021-07-30 A (-83d) | 2021-10-21 → 2021-07-30 A (-83d) | 0% → 100% | 33d → none |  |
| 5ST120 | Erect Metal Bldg Struct - B5 | 2021-11-29 → 2021-08-03 (-118d) | 2021-12-06 → 2021-08-09 (-119d) |  | 13d → 86d |  |
| 5ST160 | Ext Metal Panels - B5 | 2021-12-28 → 2021-10-13 (-76d) | 2022-01-06 → 2021-10-21 (-77d) |  | 13d → 55d |  |
| 5ST180 | Trim, Gutter, Dwn Spouts - B5 | 2022-01-07 → 2021-10-22 (-77d) | 2022-01-14 → 2021-10-28 (-78d) |  | 13d → 55d |  |
| 5ST200 | Spray Insul/Air Barrier - B5 | 2022-01-17 → 2021-10-29 (-80d) | 2022-01-19 → 2021-11-02 (-78d) |  | 16d → 70d |  |
| 5ST220 | Transformer & Elec Panel - B5 | 2022-01-17 → 2021-10-29 (-80d) | 2022-01-24 → 2021-11-05 (-80d) |  | 20d → 63d |  |
| 5ST240 | Metal Stud Framing - B5 | 2022-01-20 → 2021-11-03 (-78d) | 2022-01-26 → 2021-11-09 (-78d) |  | 16d → 70d |  |
| 5ST260 | Plumbing Rough In - B5 | 2022-01-27 → 2021-11-10 (-78d) | 2022-02-04 → 2021-11-19 (-77d) |  | 79d → 133d |  |
| 5ST280 | Electrical Rough In - B5 | 2022-01-27 → 2021-11-10 (-78d) | 2022-02-04 → 2021-11-19 (-77d) |  | 16d → 70d |  |
| 5ST300 | Door & Hardware - B5 | 2022-01-27 → 2021-11-10 (-78d) | 2022-01-28 → 2021-11-12 (-77d) |  | 96d → 150d |  |
| 5ST320 | Hang, Tape & Finish Gyp - B5 | 2022-02-07 → 2021-11-22 (-77d) | 2022-02-15 → 2021-12-02 (-75d) |  | 79d → 133d |  |
| 5ST340 | Power & Lighting Wire - B5 | 2022-02-07 → 2021-11-22 (-77d) | 2022-02-11 → 2021-11-30 (-73d) |  | 16d → 70d |  |
| 5ST360 | Pull Feeders - B5 | 2022-02-07 → 2021-11-22 (-77d) | 2022-02-11 → 2021-11-30 (-73d) |  | 16d → 70d |  |
| 5ST380 | Make-up Elec Panel - B5 | 2022-02-14 → 2021-12-01 (-75d) | 2022-02-18 → 2021-12-07 (-73d) |  | 16d → 70d |  |
| 5ST400 | Painting - B5 | 2022-02-16 → 2021-12-03 (-75d) | 2022-02-23 → 2021-12-09 (-76d) |  | 79d → 133d |  |
| 5ST420 | Casework & Countertops - B5 | 2022-02-24 → 2021-12-10 (-76d) | 2022-03-02 → 2021-12-16 (-76d) |  | 79d → 133d |  |
| 5ST440 | Chain Link Enclosure/Gates -B5 | 2022-02-24 → 2021-12-14 (-72d) | 2022-03-04 → 2021-12-22 (-72d) |  | 86d → 138d |  |
| 5ST460 | Guillotine Doors - B5 | 2022-02-24 → 2021-12-14 (-72d) | 2022-03-02 → 2021-12-20 (-72d) |  | 88d → 140d |  |
| 5ST480 | Split System HVAC Units - B5 | 2022-03-03 → 2021-12-17 (-76d) | 2022-03-08 → 2021-12-22 (-76d) |  | 79d → 133d |  |
| 5ST500 | Plumbing Fixtures - B5 | 2022-03-03 → 2021-12-17 (-76d) | 2022-03-07 → 2021-12-21 (-76d) |  | 82d → 136d |  |
| 5ST520 | Elec Finish, Trim, Fixture -B5 | 2022-03-03 → 2021-12-17 (-76d) | 2022-03-09 → 2021-12-23 (-76d) |  | 80d → 134d |  |
| 5ST540 | Big Fans - B5 | 2022-03-09 → 2021-12-23 (-76d) | 2022-03-10 → 2021-12-27 (-73d) |  | 79d → 133d |  |
| 5ST570 | Install Controls - B5 | 2022-03-11 → 2021-12-28 (-73d) | 2022-03-15 → 2021-12-30 (-75d) |  | 79d → 133d |  |
| 5ST560 | Sealed Concrete Flooring - B5 | 2022-03-11 → 2022-02-03 (-36d) | 2022-03-15 → 2022-02-07 (-36d) |  | 79d → 107d |  |
| 5ST580 | Final Clean Bldg 5 | 2022-03-16 → 2022-02-08 (-36d) | 2022-03-18 → 2022-02-10 (-36d) |  | 79d → 107d |  |
| 9 | **Second Water Well** | 2021-08-02 → 2021-08-11 (+9d) | 2021-08-27 → 2021-09-08 (+12d) |  |  |  |
| WELL100 | Drill Well/Set Equip -2nd Well | 2021-08-02 → 2021-08-11 (+9d) | 2021-08-06 → 2021-08-17 (+11d) |  | 193d → 189d |  |
| WELL200 | House Keeping Pad - 2nd Well | 2021-08-09 → 2021-08-18 (+9d) | 2021-08-13 → 2021-08-24 (+11d) |  | 193d → 189d |  |
| WELL400 | UG Water/Connect - 2nd Well | 2021-08-09 → 2021-08-18 (+9d) | 2021-08-20 → 2021-08-31 (+11d) |  | 198d → 194d |  |
| WELL300 | UG Elec/Connect - 2nd Well | 2021-08-16 → 2021-08-25 (+9d) | 2021-08-27 → 2021-09-08 (+12d) |  | 193d → 189d |  |
| 8 | **Site Improvements** |  | 2022-06-23 → 2022-07-01 (+8d) |  |  |  |
| 4 | **Upper Parking Lot (Light Duty Paving)** |  | 2022-04-01 → 2022-04-11 (+10d) |  |  |  |
| SIT1000 | UG Light/ESS Conduit -Upper PL |  | 2021-09-21 → 2021-09-29 (+8d) |  | 43d → 41d |  |
| SIT1110 | Diversion Channel - Upper PL | 2022-02-25 → 2021-08-12 (-197d) | 2022-03-11 → 2021-08-26 (-197d) |  | 62d → 65d | SIT1060, SIT2320 → RW2110, SD1200 |
| SIT1020 | Curb Grade - Upper Parking | 2021-09-23 → 2021-09-30 (+7d) | 2021-09-29 → 2021-10-07 (+8d) |  | 46d → 44d | SD1160, GRD1240, SD1200, SIT1000, EL1240, EL1260, EL1100, EL1280, EL1300, EL1120 → SD1160, GRD1240, SD1200, SIT1000, EL1240, EL1260, EL1100, EL1280, EL1300, EL1120, SIT1110 |
| SIT1040 | Light Pole Bases - Upper PL | 2021-09-30 → 2021-10-08 (+8d) | 2021-10-07 → 2021-10-15 (+8d) |  | 46d → 44d |  |
| SIT1060 | Form/Pour C & G - Upper PL | 2021-11-03 → 2021-11-05 (+2d) | 2021-11-30 → 2021-12-03 (+3d) |  | 31d → 32d |  |
| SIT1070 | Rebar Curb & Gutter - Upper PL | 2021-11-03 → 2021-11-05 (+2d) | 2021-11-09 → 2021-11-12 (+3d) |  | 40d → 41d |  |
| SIT1100 | Fine Grade & Base - Upper PL | 2021-12-02 → 2021-12-06 (+4d) | 2021-12-17 → 2021-12-22 (+5d) |  | 102d → 103d |  |
| SIT1120 | AC Paving - Upper Parking | 2021-12-20 → 2021-12-27 (+7d) | 2021-12-29 → 2022-01-05 (+7d) |  | 102d → 103d |  |
| SIT1160 | Stone Rip Rap - Upper PL | 2022-03-14 → 2022-01-06 (-67d) | 2022-03-28 → 2022-01-21 (-66d) |  | 62d → 103d |  |
| SIT1180 | Stairs/Handrail - Parking Lot | 2022-03-28 → 2022-04-05 (+8d) | 2022-04-01 → 2022-04-11 (+10d) |  | 58d → 55d |  |
| 2 | **Lower Parking & Access Roads (Heavy Duty Paving)** |  | 2022-06-23 → 2022-07-01 (+8d) |  |  |  |
| SIT2000 | UG Light/ESS Conduit - Lower |  | 2021-09-24 → 2021-09-30 (+6d) |  | 42d → 41d |  |
| SIT2320 | Fence Posts - Perimeter | 2022-01-24 → 2021-07-01 A (-207d) | 2022-02-24 → 2022-03-02 (+6d) | 0% → 50% | 42d → 41d |  |
| SIT2600 | Chain Link Mesh & Gates | 2022-03-28 → 2021-07-01 A (-270d) | 2022-04-25 → 2022-05-03 (+8d) | 0% → 50% | 23d → 20d |  |
| SIT2020 | Curb Grade - Lower PL/Drives | 2021-10-27 → 2021-11-04 (+8d) | 2021-11-08 → 2021-11-17 (+9d) |  | 23d → 21d |  |
| SIT2040 | Dig & Form Monument Sign Ftg | 2021-11-09 → 2021-11-18 (+9d) | 2021-11-10 → 2021-11-19 (+9d) |  | 125d → 123d |  |
| SIT2060 | Light Pole Bases - Lower | 2021-11-09 → 2021-11-18 (+9d) | 2021-11-17 → 2021-11-29 (+12d) |  | 37d → 35d |  |
| SIT2080 | Fine Grade Around Bldgs | 2021-11-09 → 2021-11-18 (+9d) | 2021-11-17 → 2021-11-29 (+12d) |  | 117d → 115d |  |
| SIT2100 | Form & Pour 6" Curb | 2021-11-09 → 2021-11-18 (+9d) | 2021-12-15 → 2021-12-28 (+13d) |  | 23d → 21d |  |
| SIT2120 | Rebar Monument Sign Ftg | 2021-11-12 → 2021-11-22 (+10d) | 2021-11-15 → 2021-11-23 (+8d) |  | 125d → 123d |  |
| SIT2140 | Place Monument Sign Ftg | 2021-11-17 → 2021-11-29 (+12d) | 2021-11-17 → 2021-11-29 (+12d) |  | 125d → 123d |  |
| SIT2160 | Erect CMU Monument Sign | 2021-11-18 → 2021-11-30 (+12d) | 2021-11-29 → 2021-12-08 (+9d) |  | 125d → 123d |  |
| SIT2180 | Rebar Curb & Gutter - Lower | 2021-12-02 → 2021-12-06 (+4d) | 2021-12-17 → 2021-12-22 (+5d) |  | 31d → 32d |  |
| SIT2200 | Form/Pour C & G - Lower | 2021-12-17 → 2021-12-29 (+12d) | 2022-01-07 → 2022-01-17 (+10d) |  | 23d → 21d |  |
| SIT2220 | Form & Pour Concrete V Gutter | 2021-12-17 → 2021-12-29 (+12d) | 2022-01-04 → 2022-01-11 (+7d) |  | 26d → 24d |  |
| SIT2240 | Grade/Base for AC Pave - Lower | 2022-01-10 → 2022-01-19 (+9d) | 2022-01-25 → 2022-02-02 (+8d) |  | 23d → 21d |  |
| SIT2260 | Install Site Bollards | 2022-01-10 → 2022-01-19 (+9d) | 2022-01-17 → 2022-01-25 (+8d) |  | 47d → 45d |  |
| SIT2280 | Receive/Unload Exterior Lights | 2022-01-10 → 2022-01-19 (+9d) | 2022-01-14 → 2022-01-25 (+11d) |  | 51d → 47d |  |
| SIT2300 | Fence Posts - Dumpster/Impound | 2022-01-11 → 2022-01-19 (+8d) | 2022-01-21 → 2022-01-28 (+7d) |  | 33d → 32d |  |
| SIT2480 | Form/Pour Sidewalks & Stairs | 2022-01-14 → 2022-01-19 (+5d) | 2022-01-31 → 2022-02-02 (+2d) |  | 89d → 90d |  |

| ID | Task | Start | Finish | Total float | Predecessors |
| --- | --- | --- | --- | --- | --- |
| SIT2500 | Rebar Sidewalks & Stairs | 2022-01-14 → 2022-01-19 (+5d) | 2022-01-21 → 2022-01-25 (+4d) | 93d → 94d |  |
| SIT2340 | Form Conc Paving -E Drive Entr | 2022-01-26 → 2022-02-04 (+9d) | 2022-02-02 → 2022-02-11 (+9d) | 23d → 21d |  |
| SIT2360 | Install Site Light Poles | 2022-01-26 → 2022-02-04 (+9d) | 2022-02-11 → 2022-02-22 (+11d) | 39d → 37d |  |
| SIT2380 | Trench Drain at East Entrance | 2022-02-04 → 2022-02-14 (+10d) | 2022-02-07 → 2022-02-15 (+8d) | 23d → 21d |  |
| SIT2400 | Rebar Conc Paving - E Entrance | 2022-02-04 → 2022-02-14 (+10d) | 2022-02-07 → 2022-02-15 (+8d) | 23d → 21d |  |
| SIT2420 | Place Conc Paving - E Entrance | 2022-02-09 → 2022-02-16 (+7d) | 2022-02-09 → 2022-02-16 (+7d) | 23d → 21d |  |
| SIT2440 | Form Conc Paving - Site | 2022-02-10 → 2022-02-18 (+8d) | 2022-02-22 → 2022-03-02 (+8d) | 23d → 21d |  |
| SIT2460 | Site Security Cams/Pedistals | 2022-02-14 → 2022-02-24 (+10d) | 2022-03-10 → 2022-03-17 (+7d) | 39d → 37d |  |
| SIT2520 | Rebar Conc Paving - Site | 2022-02-24 → 2022-03-03 (+7d) | 2022-03-01 → 2022-03-08 (+7d) | 23d → 21d |  |
| SIT2540 | Place Conc Paving - Site | 2022-03-02 → 2022-03-10 (+8d) | 2022-03-03 → 2022-03-11 (+8d) | 23d → 21d |  |
| SIT2560 | Cure Conc Paving - Site | 2022-03-04 → 2022-03-12 (+8d) | 2022-03-10 → 2022-03-18 (+8d) | 35d → 32d |  |
| SIT2580 | AC Paving - Lower PL/Drives | 2022-03-11 → 2022-03-21 (+10d) | 2022-03-25 → 2022-04-04 (+10d) | 23d → 20d |  |
| SIT2620 | Flagpoles at Bldg 1 Entrance | 2022-03-28 → 2022-04-05 (+8d) | 2022-04-01 → 2022-04-11 (+10d) | 58d → 55d |  |
| SIT2640 | Install Crushed Granite | 2022-04-26 → 2022-05-04 (+8d) | 2022-05-09 → 2022-05-17 (+8d) | 23d → 20d |  |
| SIT2660 | Pivot Gates & Operators | 2022-04-26 → 2022-05-04 (+8d) | 2022-05-09 → 2022-05-17 (+8d) | 23d → 20d |  |
| SIT2680 | Install Guard Rail | 2022-04-26 → 2022-05-04 (+8d) | 2022-05-05 → 2022-05-13 (+8d) | 25d → 22d |  |
| SIT2700 | Barbed-Wire Apron on Fence | 2022-05-06 → 2022-05-16 (+10d) | 2022-05-20 → 2022-05-31 (+11d) | 25d → 22d |  |
| SIT2720 | Striping/Parking Bumpers/Signs | 2022-05-10 → 2022-05-19 (+9d) | 2022-05-24 → 2022-06-02 (+9d) | 23d → 20d |  |
| SIT2740 | Coord Veg Restoration by Gov | 2022-05-10 → 2022-05-19 (+9d) | 2022-06-23 → 2022-07-01 (+8d) | 28d → 25d |  |
| 3 | **Helipad** |  | 2022-04-18 → 2022-04-26 (+8d) |  |  |
| HELI100 | UG Lighting Conduit - Helipad |  | 2021-09-30 → 2021-10-07 (+7d) | 114d → 112d |  |
| HELI120 | Grounding at Helipad |  | 2021-10-07 → 2021-10-13 (+6d) | 114d → 112d |  |
| HELI140 | Set Base - Helipad | 2022-01-26 → 2022-02-04 (+9d) | 2022-02-02 → 2022-02-11 (+9d) | 55d → 52d |  |
| HELI160 | Form Conc Paving - Helipad | 2022-02-04 → 2022-02-14 (+10d) | 2022-02-11 → 2022-02-22 (+11d) | 55d → 52d |  |
| HELI180 | Receive Helipad Lights/Vis Nav | 2022-02-03 → 2022-02-14 (+11d) | 2022-02-04 → 2022-02-15 (+11d) | 70d → 66d |  |
| HELI200 | Rebar Conc Paving - Helipad | 2022-02-14 → 2022-02-24 (+10d) | 2022-02-22 → 2022-03-02 (+8d) | 55d → 52d |  |
| HELI220 | Light Cans in Conc - Helipad | 2022-02-24 → 2022-03-03 (+7d) | 2022-03-02 → 2022-03-10 (+8d) | 55d → 52d |  |
| HELI240 | Place Conc Paving - Helipad | 2022-03-03 → 2022-03-11 (+8d) | 2022-03-03 → 2022-03-11 (+8d) | 55d → 52d |  |
| HELI260 | Cure Conc Paving - Helipad | 2022-03-04 → 2022-03-12 (+8d) | 2022-03-10 → 2022-03-18 (+8d) | 83d → 80d |  |
| HELI280 | Light Cans in AC - Helipad | 2022-03-04 → 2022-03-14 (+10d) | 2022-03-11 → 2022-03-18 (+7d) | 57d → 55d |  |
| HELI300 | Strip Concrete Forms - Helipad | 2022-03-11 → 2022-03-21 (+10d) | 2022-03-15 → 2022-03-24 (+9d) | 55d → 52d |  |
| HELI320 | AC Paving - Helipad | 2022-03-28 → 2022-04-05 (+8d) | 2022-04-01 → 2022-04-11 (+10d) | 48d → 45d |  |
| HELI340 | Helipad Light Fixtures/Vis Nav | 2022-04-04 → 2022-04-12 (+8d) | 2022-04-08 → 2022-04-19 (+11d) | 48d → 45d |  |
| HELI360 | Striping & Signage - Helipad | 2022-04-11 → 2022-04-20 (+9d) | 2022-04-18 → 2022-04-26 (+8d) | 48d → 45d |  |
| 5 | **Campbell Ranch Road** | 2022-03-04 → 2022-03-14 (+10d) | 2022-04-11 → 2022-04-19 (+8d) |  |  |
| CRR1000 | Conc Crossing/Entr Campbell RR | 2022-03-04 → 2022-03-14 (+10d) | 2022-03-18 → 2022-03-28 (+10d) | 52d → 50d |  |
| CRR1050 | Agg Base Campbell Ranch Rd | 2022-03-21 → 2022-03-29 (+8d) | 2022-04-04 → 2022-04-11 (+7d) | 52d → 50d |  |
| CRR1100 | Rip Rap at Campbell Ranch Rd | 2022-04-05 → 2022-04-12 (+7d) | 2022-04-11 → 2022-04-19 (+8d) | 52d → 50d |  |
| 6 | **Closeout / Red Zone** | 2021-12-23 → 2021-12-28 (+5d) | 2022-11-01 → 2022-11-04 (+3d) |  |  |
| 7 | **Red Zone** | 2022-02-02 → 2022-02-04 (+2d) | 2022-03-13 → 2022-03-17 (+4d) |  |  |
| RZ1000 | Red Zone Meeting | 2022-02-02 → 2022-02-04 (+2d) | 2022-02-02 → 2022-02-04 (+2d) | 3d → 4d |  |
| RZ1010 | Gov Iss IP Add/Zn Dsc/Acct Inf | 2022-02-03 → 2022-02-05 (+2d) | 2022-03-04 → 2022-03-06 (+2d) | 65d → 66d |  |
| RZ1020 | Gov Install IT Equipment | 2022-02-12 → 2022-02-16 (+4d) | 2022-03-13 → 2022-03-17 (+4d) | 91d → 90d |  |
| RZ1040 | Insp/Testing UPS | 2022-02-14 → 2022-02-16 (+2d) | 2022-02-16 → 2022-02-18 (+2d) | 80d → 81d |  |
| RZ1030 | Insp/Testing Generator | 2022-02-14 → 2022-02-25 (+11d) | 2022-02-18 → 2022-03-03 (+13d) | 78d → 73d | RZ1200 → RZ1200, EL1460 |
| 4 | **Air Barrier Testing** | 2022-02-03 → 2022-02-07 (+4d) | 2022-03-17 → 2022-03-19 (+2d) |  |  |
| RZ1090 | Verify AB Test Equip Calibr | 2022-02-03 → 2022-02-07 (+4d) | 2022-02-03 → 2022-02-07 (+4d) | 63d → 65d |  |
| RZ1100 | Air Barrier Testing - B1 | 2022-02-04 → 2022-02-08 (+4d) | 2022-02-07 → 2022-02-09 (+2d) | 63d → 65d |  |
| RZ1105 | Air Barrier Testing - B5 | 2022-02-08 → 2022-02-10 (+2d) | 2022-02-08 → 2022-02-10 (+2d) | 63d → 65d |  |
| RZ1110 | SUBM - Air Barrier Test Report | 2022-02-09 → 2022-02-11 (+2d) | 2022-02-15 → 2022-02-17 (+2d) | 63d → 65d |  |
| RZ1120 | GOV APPR Air Barrier Test Rep | 2022-02-16 → 2022-02-18 (+2d) | 2022-03-17 → 2022-03-19 (+2d) | 90d → 93d |  |
| 3 | **TAB / Commissioning** | 2022-02-02 → 2022-02-04 (+2d) | 2022-08-19 → 2022-08-22 (+3d) |  |  |
| RZ1200 | Pre-Power Elec Test - Energize | 2022-02-02 → 2022-02-04 (+2d) | 2022-02-11 → 2022-02-15 (+4d) | 1d → 2d | EL1460, 1ELD140, 1ELB140, 1ELE160, 3FI280, 1ELE190, 260800-02, 1LVD200, 1LVB190, EL1360, 1ELE170, EL1500, 1ELE210, 1ELE230 FF → 1ELD140, 1ELB140, 1ELE160, 3FI280, 1ELE190, 260800-02, 1LVD200, 1LVB190, EL1360, 1ELE170, EL1500, 1ELE210, 1ELE230 FF |
| RZ1220 | Gov Provide LPG for Testing/Cx | 2022-02-03 → 2022-02-07 (+4d) | 2022-02-09 → 2022-02-11 (+2d) | 3d → 4d |  |
| RZ1240 | Start-up Mech Equip | 2022-02-14 → 2022-02-16 (+2d) | 2022-03-14 → 2022-03-16 (+2d) | 1d → 2d | RZ1200, PM1200, RZ1000, 1MCA140, 1MCA150, 1MCD130, 1MCD140, 1MCD150, 1MCA160, 1EX130, 1AFI200, RZ1220, 1AFI220, 3FI310, 1RIC300, 1RIE320, 3FI320, 1LVD150, 1LVB150, 1AFI210, 4ST300, 5ST380 FF → RZ1200, PM1200, RZ1000, 1MCA140, 1MCA150, 1MCD130, 1MCD140, 1MCD150, 1MCA160, 1EX130, 1AFI200, RZ1220, 1AFI220, 3FI310, 1RIC300, 1RIE320, 1LVD150, 1LVB150, 1AFI210, 4ST300 FF, 5ST380 FF, 3FI320 |
| RZ1260 | Flush/Fill/Treat Mech Piping | 2022-02-14 → 2022-02-16 (+2d) | 2022-02-18 → 2022-02-23 (+5d) | 16d → 17d |  |
| RZ1280 | Ctrls Point to Point Verify | 2022-02-14 → 2022-02-16 (+2d) | 2022-03-14 → 2022-03-16 (+2d) | 1d → 2d |  |
| RZ1300 | Perform TAB / Submit Reports | 2022-03-15 → 2022-03-17 (+2d) | 2022-04-11 → 2022-04-13 (+2d) | 1d → 2d |  |
| RZ1320 | SUBM Start-Up Testing Reports | 2022-03-15 → 2022-03-17 (+2d) | 2022-03-28 → 2022-03-30 (+2d) | 1d → 2d |  |
| RZ1330 | Prefunctional Check - Mech | 2022-03-15 → 2022-03-17 (+2d) | 2022-03-21 → 2022-03-23 (+2d) | 61d → 62d |  |
| RZ1335 | Prefunctional Check - Elec | 2022-03-15 → 2022-03-17 (+2d) | 2022-03-21 → 2022-03-23 (+2d) | 61d → 62d |  |
| RZ1340 | GOV APPR Start-Up Test Reports | 2022-03-29 → 2022-03-31 (+2d) | 2022-04-18 → 2022-04-20 (+2d) | 1d → 4d |  |
| RZ1380 | GOV APPR TAB Reports | 2022-04-12 → 2022-04-14 (+2d) | 2022-05-02 → 2022-05-04 (+2d) | 1d → 4d |  |
| RZ1400 | Submit PVT Procedures | 2022-04-19 → 2022-04-21 (+2d) | 2022-04-19 → 2022-04-21 (+2d) | 1d → 2d |  |
| RZ1420 | Submit Training Documentation | 2022-04-19 → 2022-04-21 (+2d) | 2022-05-16 → 2022-05-18 (+2d) | 41d → 42d |  |
| RZ1440 | GOV REV PVT Procedures | 2022-04-20 → 2022-04-22 (+2d) | 2022-05-03 → 2022-05-05 (+2d) | 1d → 4d |  |
| RZ1450 | TAB Verification | 2022-05-03 → 2022-05-05 (+2d) | 2022-05-03 → 2022-05-05 (+2d) | 1d → 2d |  |
| RZ1460 | Execute PVT | 2022-05-04 → 2022-05-06 (+2d) | 2022-05-17 → 2022-05-19 (+2d) | 1d → 2d |  |
| RZ1510 | GOV REV Training Documentation | 2022-05-17 → 2022-05-19 (+2d) | 2022-05-30 → 2022-06-01 (+2d) | 59d → 62d |  |
| RZ1480 | Submit PVT Report | 2022-05-18 → 2022-05-20 (+2d) | 2022-05-31 → 2022-06-02 (+2d) | 1d → 4d |  |

| ID | Task | Start | Finish | Complete | Total float |
| --- | --- | --- | --- | --- | --- |
| RZ1520 | GOV REV PVT Report | 2022-06-01 → 2022-06-03 (+2d) | 2022-06-14 → 2022-06-16 (+2d) |  | 1d → 4d |
| RZ1550 | Submit Cert of Readiness - Cx | 2022-06-15 → 2022-06-17 (+2d) | 2022-06-17 → 2022-06-21 (+4d) |  | 1d → 2d |
| RZ1560 | GOV APPR Cert of Readiness -Cx | 2022-06-18 → 2022-06-22 (+4d) | 2022-07-01 → 2022-07-05 (+4d) |  | 3d → 2d |
| RZ1580 | Functional Performance Testing | 2022-07-05 → 2022-07-06 (+1d) | 2022-07-18 → 2022-07-19 (+1d) |  | 0d → 2d |
| RZ1610 | Final Cx Systems Testing | 2022-07-19 → 2022-07-20 (+1d) | 2022-07-25 → 2022-07-26 (+1d) |  | 0d → 2d |
| RZ1620 | Perform Training | 2022-07-19 → 2022-07-20 (+1d) | 2022-07-25 → 2022-07-26 (+1d) |  | 8d → 10d |
| RZ1630 | Submit Final Cx Report | 2022-07-26 → 2022-07-27 (+1d) | 2022-07-28 → 2022-07-29 (+1d) |  | 0d → 2d |
| RZ1640 | GOV Rev Final Cx Report | 2022-07-29 → 2022-07-30 (+1d) | 2022-08-04 → 2022-08-05 (+1d) |  | 0d → 4d |
| RZ1650 | Cx Report Review Meeting | 2022-08-19 → 2022-08-22 (+3d) | 2022-08-19 → 2022-08-22 (+3d) |  | 51d → 53d |
| 2 | **Punch List & Closeout Documents** | 2022-03-21 → 2022-02-11 (-38d) | 2022-08-05 → 2022-08-08 (+3d) |  |  |
| RZ2220 | KTR Punchlist/Correct - B5 | 2022-03-21 → 2022-02-11 (-38d) | 2022-03-29 → 2022-02-22 (-35d) |  | 79d → 107d |
| RZ2280 | SUBM/APPR O&M Manuals | 2022-04-12 → 2022-04-14 (+2d) | 2022-06-10 → 2022-06-12 (+2d) |  | 48d → 51d |
| RZ2200 | KTR Punchlist/Correct - B3 | 2022-04-12 → 2022-04-20 (+8d) | 2022-04-25 → 2022-05-03 (+8d) |  | 55d → 52d |
| RZ2260 | KTR Punchlist/Correct - Site | 2022-05-25 → 2022-06-03 (+9d) | 2022-06-15 → 2022-06-23 (+8d) |  | 24d → 21d |
| RZ2240 | KTR Punchlist/Correct - B4,4A | 2022-05-25 → 2022-06-15 (+21d) | 2022-06-08 → 2022-06-28 (+20d) |  | 24d → 13d |
| RZ2300 | Demobilize Site | 2022-05-25 → 2022-06-15 (+21d) | 2022-06-15 → 2022-07-06 (+21d) |  | 24d → 13d |
| RZ2360 | Gov Pre-Final Inspection | 2022-07-19 → 2022-07-20 (+1d) | 2022-07-19 → 2022-07-20 (+1d) |  | 2d → 4d |
| RZ2380 | Gov Pre-Final PL Corrections | 2022-07-20 → 2022-07-21 (+1d) | 2022-08-02 → 2022-08-03 (+1d) |  | 2d → 4d |
| RZ2400 | Gov Final Inspection | 2022-08-05 → 2022-08-08 (+3d) | 2022-08-05 → 2022-08-08 (+3d) |  | 0d → 2d |
| 1 | **As-Built Drawings** | 2021-12-23 → 2021-12-28 (+5d) | 2022-11-01 → 2022-11-04 (+3d) |  |  |
| RZ9000 | SUBM 50% Prelim As-Built Dwgs | 2021-12-23 → 2021-12-28 (+5d) | 2022-01-21 → 2022-01-26 (+5d) |  |  |
| RZ9020 | GOV APPR 50% As-Built Dwgs | 2022-01-22 → 2022-01-27 (+5d) | 2022-02-20 → 2022-02-25 (+5d) |  |  |
| RZ9040 | SUBM 100% Prelim As-Built Dwgs | 2022-08-06 → 2022-08-09 (+3d) | 2022-09-04 → 2022-09-07 (+3d) |  | 0d → 2d |
| RZ9060 | GOV APPR 100% As-Built Dwgs | 2022-09-05 → 2022-09-08 (+3d) | 2022-10-04 → 2022-10-07 (+3d) |  | 0d → 2d |
| RZ9080 | SUBM/APPR Final As-Built Dwgs | 2022-10-05 → 2022-10-10 (+5d) | 2022-11-01 → 2022-11-04 (+3d) |  |  |
| 7 | **Modifications / Allowances** |  | 2021-07-29 → 2021-08-27 (+29d) |  |  |
| 1 | **Allowances** | 2021-07-01 → 2021-08-02 (+32d) | 2021-07-29 → 2021-08-27 (+29d) |  |  |
| ALLW008 | Elec & Comm Wire Allowance | 2021-07-01 → 2021-08-02 (+32d) | 2021-07-29 → 2021-08-27 (+29d) |  | 257d → 239d |
| 4 | **R00003 DWV Underground Pipe / Utility Reroute / Shotcrete** |  | 2021-07-07 → 2021-08-04 (+28d) |  |  |
| R00003 MOD | DWV Pipe/Util Reroute/Shotcrete |  | 2021-07-07 → 2021-08-04 (+28d) | 20% → 50% | 261d → 244.5d |
